# Lac La Biche County New Aquatics Facility - 2026.01.16- IPR

Schedule from Primavera P6, 2024-02-09 to 2026-08-13, data date 2026-01-16, A marks actual dates.

## Calendars

- GLOBAL_REPLACE_5d/w-H: Mon-Fri 08:00-12:00, 13:00-17:00; Sat-Sun off. Exceptions (off unless hours are given): 2024-02-19, 2024-03-29, 2024-05-20, 2024-07-01, 2024-08-05, 2024-09-02, 2024-10-14, 2024-12-25 to 2024-12-26, 2025-01-01, 2025-02-17, 2025-04-18, 2025-05-19, 2025-07-01, 2025-08-04, 2025-09-01, 2025-10-13, 2025-12-25 to 2025-12-26, 2026-01-01, 2026-02-16, 2026-04-03, 2026-05-18, 2026-07-01, 2026-08-03.

## Schedule

| ID | WBS | Activity | Type | Duration | Start | Finish | Predecessors | Complete | Planned start | Planned finish | Total float | Constraint | 1 - Milestones | Comment |
| --- | --- | --- | --- | --- | --- | --- | --- | --- | --- | --- | --- | --- | --- | --- |
|  | 10 | **PROJECT MILESTONES** |  |  | 2024-04-22 | 2026-08-13 |  |  |  |  |  |  |  |  |
|  | 2 | **Contractual Milestones** |  |  | 2026-03-25 | 2026-08-13 |  |  |  |  |  |  |  |  |
| MIL-CM-100 |  | Contractual Substantial Completion Date | milestone | 0d | 2026-03-25 | 2026-03-25 |  |  |  |  | 97d | finish on or after 2026-03-25 |  |  |
| MIL-CM-200 |  | Contractual Completion Date | milestone | 0d | 2026-05-05 | 2026-05-05 |  |  |  |  | 70d | finish on or after 2026-05-05 |  |  |
| MIL-C-510 |  | Substantial Completion | milestone | 0d | 2026-07-16 | 2026-07-16 | PCO-1000 FF |  |  |  | 19d |  | SP |  |
| MIL-C-520 |  | Total Completion | milestone | 0d | 2026-08-13 | 2026-08-13 | PCO-1040 FF, PCO-1010 FF, MIL-C-510 FF |  |  |  | 0d |  | TC |  |
|  | 3 | **Construction Milestones** |  |  | 2024-04-22 | 2026-06-18 |  |  |  |  |  |  |  |  |
|  | 1 | **Foundation** |  |  | 2024-04-22 | 2025-11-08 |  |  |  |  |  |  |  |  |
| MIL-C-460 |  | Construction Start | milestone | 0d | 2024-04-22 A | 2024-04-22 A | C-MOB-210 SS | 100% | 2024-11-07 | 2024-11-07 |  |  | MOB |  |
| MIL-C-500 |  | Piling Completion | milestone | 0d | 2024-11-01 A | 2024-11-01 A | C-FDN-1020 FF, C-FDN-A11-1010 FF, C-FDN-A18-1000 FF, C-FDN-A20-1040 FF | 100% | 2024-11-06 | 2024-11-06 |  |  |  |  |
| MIL-C-530 |  | Pool Basement Walls | milestone | 0d | 2024-11-06 A | 2024-11-06 A | C-FDN-A5-1050 FF | 100% | 2025-06-05 | 2025-06-05 |  |  |  |  |
| MIL-C-540 |  | Basement Concrete Slab | milestone | 0d | 2024-11-22 A | 2024-11-22 A | C-FDN-A6-1080 FF | 100% | 2024-11-15 | 2024-11-15 |  |  |  | 'Delay due to concrete supply availability. |
| MIL-C-560 |  | Lap Pool Raft Slab | milestone | 0d | 2025-04-22 A | 2025-04-22 A | C-FDN-A7-1100 FF, C-FDN-A7-1110 FF, C-FDN-A7-1130 FF | 100% | 2025-01-10 | 2025-01-10 |  |  | JSM |  |
| MIL-C-580 |  | Leisure Pool Footing | milestone | 0d | 2025-05-02 A | 2025-05-02 A | C-FDN-A12B-1040 FF, X-LP-1010 FF | 100% | 2025-01-10 | 2025-01-10 |  |  |  |  |
| MIL-C-590 |  | Leisure Pool Walls | milestone | 0d | 2025-05-14 A | 2025-05-14 A | C-FDN-A13(ABCD)-1070 FF, C-FDN-A13(ABCD)-1080 FF, C-FDN-A13(ABCD)-1090 FF, X-LP-1020 FF, C-FDN-A14-1050 FF | 100% | 2025-06-05 | 2025-06-05 |  |  |  |  |
| MIL-C-570 |  | Lap Pool Walls | milestone | 0d | 2025-05-30 A | 2025-05-30 A | C-FDN-A8-1070 FF, C-FDN-A8-1080 FF, C-FDN-A8-1140 FF | 100% | 2025-06-05 | 2025-06-05 |  |  |  |  |
| MIL-C-600 |  | Leisure Pool Raft Slab | milestone | 0d | 2025-06-17 A | 2025-06-17 A | C-FDN-A14-1090 FF | 100% | 2025-06-26 | 2025-06-26 |  |  | JSM |  |
| MIL-C-610 |  | Lazy River | milestone | 0d | 2025-07-10 A | 2025-07-10 A | C-FDN-A15-1030 FF | 100% | 2025-07-29 | 2025-07-29 |  |  |  |  |
| MIL-C-470 |  | Foundation and Pour Concrete Complete | milestone | 0d | 2025-11-08 A | 2025-11-08 A | C-FDN-A1-1080 FF, C-FDN-A2-1060 FF, C-FDN-A3-1060 FF, C-FDN-A4-1060 FF, C-FDN-A5-1050 FF, C-FDN-A6-1080 FF, C-FDN-A7A-1040 FF, C-FDN-A6(AB)-1040 FF, C-FDN-A7-1130 FF, C-FDN-A8-1110 FF, C-FDN-SN-LPT-1040 FF, C-FDN-SN-A16-1070 FF, C-FDN-A7-SN-1380 FF, C-FDN-A7-SN-1300 FF, C-FDN-A12A-1050 FF, C-FDN-A12B-1040 FF, C-FDN-A13A-1050 FF, C-FDN-A13(ABCD)-1090 FF, C-FDN-A14-1090 FF, C-FDN-A15-1030 FF, C-FDN-NN-1210 FF, C-FDN-NN-1310 FF, C-FDN-NN-1390 FF, C-FDN-NN-1470 FF, C-FDN-A9-1060 FF, C-FDN-A10A-1050 FF, C-FDN-A10B-1050 FF, C-FDN-A11-1050 FF | 100% | 2025-10-23 | 2025-10-23 |  |  |  |  |
|  | 2 | **Structure** |  |  | 2025-01-10 | 2025-10-18 |  |  |  |  |  |  |  |  |
| MIL-C-480 |  | Steel Structure Completion | milestone | 0d | 2025-01-10 A | 2025-01-10 A | C-SS-PH1-1070 FF, C-SS-PH2-1100 FF, C-SS-PH3-1110 FF | 100% |  |  |  |  | JSM |  |
| MIL-C-620 |  | SOG S1A Slab | milestone | 0d | 2025-05-02 A | 2025-05-02 A | C-SOG-1100 FF | 100% | 2025-01-10 | 2025-01-10 |  |  | JSM |  |
| MIL-C-630 |  | SOG- S1B | milestone | 0d | 2025-09-02 A | 2025-09-02 A | C-SOG-S1B-1050 FF, C-SOG-S1B-1040 FF | 100% | 2025-09-11 | 2025-09-11 |  |  | JSM |  |
| MIL-C-670 |  | SOG- S6/S2A | milestone | 0d | 2025-09-19 A | 2025-09-19 A | C-FDN-NN-S6/S2A-1080 FF, C-FDN-NN-S6/S2A-1060 FF | 100% | 2025-09-25 | 2025-09-25 |  |  | JSM |  |
| MIL-C-640 |  | SOG- S1C/D | milestone | 0d | 2025-10-09 A | 2025-10-09 A | C-SOG-S1C/D-1070 FF | 100% | 2025-10-23 | 2025-10-23 |  |  | JSM |  |
| MIL-C-650 |  | SOG S1E, S1F, S2B, & S7 | milestone | 0d | 2025-10-18 A | 2025-10-18 A | C-FDN-SN-S1E/S1F/S7/S2B-1100 FF | 100% | 2025-10-23 | 2025-10-23 |  |  | JSM |  |

| ID | WBS | Activity | Type | Duration | Start | Finish | Predecessors | Complete | Remaining | Planned start | Planned finish | Total float | Free float | 1 - Milestones | #User-Start-Date_01 | #User-Start-Date_04 | Comments | 1 - Summary |
| --- | --- | --- | --- | --- | --- | --- | --- | --- | --- | --- | --- | --- | --- | --- | --- | --- | --- | --- |
|  | 3 | **Envelope** |  |  | 2025-06-17 | 2026-01-23 |  |  |  |  |  |  |  |  |  |  |  |  |
| MIL-C-710 |  | Roof Water Tight | milestone | 0d | 2025-06-17 A | 2025-06-17 A | C-ENV-RF-E-1030 FF, C-ENV-RF-E&S-1000 FF, C-ENV-RF-E&S-1020 FF, C-ENV-SID-CL-N-1000 FF, C-ENV-SID-CL-E-1000 FF | 100% |  | 2025-08-28 | 2025-08-28 |  |  |  |  |  |  |  |
| MIL-C-490 |  | Roofing Completion | milestone | 0d | 2025-08-27 A | 2025-08-27 A | C-ENV-RF-N-1000 FF, C-ENV-RF-E-1000 FF, C-ENV-RF-E-1010 FF, C-ENV-RF-E-1030 FF, C-ENV-RF-E-1040 FF, C-ENV-RF-E&S-1000 FF, C-ENV-RF-E&S-1010 FF, C-ENV-RF-E-1020 FF, C-ENV-RF-E&S-1030 FF, C-ENV-RF-N-1060 FF | 100% |  | 2025-08-28 | 2025-08-28 |  |  | JSM |  |  |  |  |
| MIL-C-720 |  | North Side Envelope | milestone | 0d | 2025-09-26 A | 2025-09-26 A | C-ENV-SID-EW-N-1000 FF, C-ENV-SID-GL-N-1040 FF, C-ENV-SID-CL-N-1020 FF | 100% |  | 2025-09-25 | 2025-09-25 |  |  | JSM |  |  |  |  |
| MIL-C-730 |  | East Side Envelope | milestone | 0d | 2025-10-31 A | 2025-10-31 A | C-ENV-SID-EW-E-1010 FF, C-ENV-SID-EW-E-1000 FF, C-ENV-SID-GL-E-1020 FF, C-ENV-SID-CL-E-1020 FF, C-ENV-SID-CL-AC-1110 FF | 100% |  | 2025-10-23 | 2025-10-23 |  |  | JSM |  |  |  |  |
| MIL-C-440 |  | 100% Complete Fully Enclosing the Building | milestone | 0d | 2026-01-23 | 2026-01-23 | C-ENV-SID-CL-N-1000, C-ENV-RF-E-1030, C-ENV-SID-CL-E-1000, C-ENV-SID-GL-S-1010, C-ENV-RF-E&S-1000 FF, C-ENV-SID-CL-E-1020 FF, C-ENV-SID-CL-E-1030 FF, C-ENV-SID-CL-AC-1120 FF, C-ENV-SID-CL-S-1030 FF, C-ENV-SID-CL-S-1040 FF, C-ENV-SID-CL-S-1050 FF |  |  |  |  | 28d | 0d | JSM | 2024-10-16 | 2024-10-16 | ANY COMMENTS / REASON OF DELAY |  |
| MIL-C-740 |  | Remaining East & South Side Envelope | milestone | 0d | 2026-01-23 | 2026-01-23 | C-ENV-SID-GL-S-1020 FF, C-ENV-SID-EW-S-1000 FF, C-ENV-SID-CL-S-1020 FF, C-ENV-SID-CL-AC-1120 FF, C-ENV-SID-CL-S-1050 FF, C-ENV-SID-CL-S-1040 FF |  |  |  |  | 113d | 19d | JSM |  |  |  |  |
|  | 4 | **Interior Milestones** |  |  | 2026-04-20 | 2026-06-18 |  |  |  |  |  |  |  |  |  |  |  |  |
| MIL-C-750 |  | Zone-1 Interior Finishes (Mechanical, Electrical Rooms & Corridor) | milestone | 0d | 2026-04-20 | 2026-04-20 | T-INT-MF-Z1-MR-1060 FF, T-INT-MF-Z1-ER-1020 FF, T-INT-MF-Z1-ER-1030 FF, T-INT-MF-Z1-1060 FF, T-INT-MF-Z1-1070 FF, T-INT-MF-Z1-1090 FF, T-INT-MF-Z1-1080 FF, T-INT-MF-Z1-1270 FF |  |  |  |  | 80d |  | JSM |  |  |  |  |
| MIL-C-760 |  | Zone-2 Interior Finishes (Staff Areas) | milestone | 0d | 2026-05-01 | 2026-05-01 | T-INT-MF-Z2-1150 FF |  |  |  |  | 71d |  | JSM |  |  |  |  |
| MIL-C-780 |  | Zone-4 Interior Finishes (Pool Mechanical, Storage & Chemical Rooms) | milestone | 0d | 2026-05-21 | 2026-05-21 | T-INT-MF-Z4-1190 FF, T-INT-MF-Z4-1210 FF |  |  |  |  | 58d |  | JSM |  |  |  |  |
| MIL-C-770 |  | Zone-3 Interior Finishes (Change Rooms) | milestone | 0d | 2026-06-04 | 2026-06-04 | T-INT-MF-Z3-1220 FF |  |  |  |  | 48d |  | JSM |  |  |  |  |
| MIL-C-790 |  | Zone-5 Interior Finishes | milestone | 0d | 2026-06-09 | 2026-06-09 | T-INT-MF-Z5-1180 FF, T-INT-MF-Z5-1230 FF, T-INT-MF-Z5-1100 FF, T-INT-MF-Z5-1150 FF, T-INT-MF-Z5-2160 FF, T-INT-MF-Z5-2080 FF, T-INT-MF-Z5-2380 FF, T-INT-MF-Z5-2330 FF, T-INT-MF-Z5-1090 FF, T-INT-MF-Z5-2310 SF, T-INT-MF-Z5-2360 FF, IPP-QAQC-190 FF, T-INT-MF-Z5-2280 SF, T-INT-MF-Z5-2210 FF, T-INT-MF-Z5-1110 FF, C-FDN-NN-S6/S2A-1080 FF, T-INT-MF-Z5-2370 SF, P-PRO-152 FF |  |  |  |  | 45d |  | JSM |  |  |  |  |
| MIL-C-800 |  | Zone-6 Interior Finishes | milestone | 0d | 2026-06-18 | 2026-06-18 | T-INT-MF-Z6-1150 FF, T-INT-MF-Z6-1160 FF |  |  |  |  | 38d |  | JSM |  |  |  |  |
|  | 4 | **MEIT & Energization Milestones** |  |  | 2026-03-11 | 2026-04-08 |  |  |  |  |  |  |  |  |  |  |  |  |
| MIL-C-810 |  | Energization | milestone | 0d | 2026-03-11 | 2026-03-11 | T-INT-MF-Z1-ER-1150 FF |  |  |  |  | 42d | 33d |  |  |  |  |  |
| MIL-C-830 |  | Elevator Testing and Commissioning | milestone | 0d | 2026-04-08 | 2026-04-08 | T-MEIT-EL-1080 FF |  |  |  |  | 88d |  | ELV-P |  |  |  |  |
|  | 6 | **Durations - Calendar** |  |  | 2024-04-22 | 2026-08-13 |  |  |  |  |  |  |  |  |  |  |  |  |
|  | 6 | **General Duration** |  |  | 2024-04-22 | 2026-08-13 |  |  |  |  |  |  |  |  |  |  |  |  |
| DUR-1000 |  | Construction - Mobilization to Occupancy | level of effort | 5d | 2024-04-22 A | 2026-08-13 | C-MOB-210 SS, PCO-1040 FF |  | 144d | 2024-11-06 | 2024-11-12 | 0d |  |  |  |  |  | OV |
| DUR-1020 |  | Substructure | level of effort | 0d | 2024-05-22 A | 2025-11-10 A | C-FDN-1020 SS, C-SOG-S1C/D-1070 FF, C-SOG-S1B-1050 FF, C-SOG-1100 FF, C-FDN-A7-1100 FF, C-FDN-A15-1040 FF, C-FDN-NN-1480 FF | 100% |  | 2024-11-06 | 2024-11-06 |  |  |  |  |  |  | SUB |
| DUR-1030 |  | Super Structure | level of effort | 41d | 2024-11-12 A | 2025-02-28 A | C-SS-PH1-1000 SS, C-SS-PH3-1110 FF, C-FDN-PH3-1000 SS, C-FDN-PH3-1010 | 100% |  | 2024-11-12 | 2025-01-10 |  |  |  |  |  |  | ST |
| DUR-1040 |  | Envelope | level of effort | 138d | 2025-01-14 A | 2026-01-23 | C-ENV-RF-N-1000 SS, C-ENV-SID-CL-S-1020 FF, C-ENV-SID-CL-S-1040 FF |  | 5d | 2025-01-14 | 2025-07-30 | 28d | 0d |  |  |  |  | ENV |
| DUR-1050 |  | Fitout to Commissioning | level of effort | 339d | 2025-05-06 A | 2026-06-04 | T-INT-SF-2010 SS, T-INT-MF-Z5-1180 FF, T-INT-MF-Z5-1230 FF, T-INT-MF-Z5-1100 FF, T-INT-MF-Z5-1150 FF, T-INT-MF-Z4-1120 FF, T-INT-MF-Z5-2380 FF, T-INT-MF-Z5-2330 FF, T-INT-MF-Z5-2410 FF, T-INT-MF-Z5-1090 FF, T-INT-MF-Z5-1210 FF, T-INT-MF-Z5-2310 SF, T-INT-MF-Z5-2360 FF, IPP-QAQC-190 FF, T-INT-MF-Z5-2280 SF, C-FDN-NN-S6/S2A-1080 FF, T-INT-MF-Z5-2370 SF, T-INT-MF-Z3-1220 FF, P-PRO-223 FF, P-PRO-152 FF |  | 96d | 2025-06-05 | 2026-10-09 | 22d | 0d |  |  |  |  | FIT |
| DUR-1060 |  | Commissioning | level of effort | 86d | 2026-03-11 | 2026-07-13 | CX-2000 SS, CX-2047 FF |  |  |  |  | 0d |  |  |  |  |  | CX |
| DUR-1070 |  | Close Out | level of effort | 41d | 2026-06-16 | 2026-08-13 | PCO-1000 SS, PCO-1040 FF, PCO-2010 SS |  |  |  |  | 0d |  |  |  |  |  |  |

| ID | WBS | Activity | Type | Duration | Start | Finish | Predecessors | Complete | Remaining | Planned start | Planned finish | Total float | Free float | 1 - Summary |
| --- | --- | --- | --- | --- | --- | --- | --- | --- | --- | --- | --- | --- | --- | --- |
|  | 1 | **Sub Structure** |  |  | 2024-07-05 | 2025-11-10 |  |  |  |  |  |  |  |  |
| DUR-1001 |  | Basement Pool Mechanical | level of effort | 5d | 2024-07-05 A | 2025-06-17 A | C-FDN-2000 SS, C-FDN-A7A-1040 FF, C-FDN-A5-1080 FF, C-FDN-A5-1090 FF | 100% |  | 2024-11-15 | 2024-11-21 |  |  | SUB |
| DUR-1090 |  | Leisure Pool, Lazy River And Family Hot Tub | level of effort | 5d | 2024-08-13 A | 2025-11-10 A | C-FDN-A12B-1000 SS, C-FDN-A15-1040 FF, C-FDN-A15-1030 FF, C-FDN-A14-1090 FF, C-FDN-NN-1480 FF | 100% |  | 2024-11-15 | 2024-11-21 |  |  | SUB |
| DUR-1110 |  | SOG S1A | level of effort | 58d | 2025-02-10 A | 2025-05-02 A | C-SOG-1020 SS, C-SOG-1100 FF, C-SOG-1000 SS | 100% |  |  |  |  |  | SUB |
| DUR-1080 |  | Lap Pool | level of effort | 73d | 2025-02-18 A | 2025-05-30 A | C-FDN-A7-1000 SS, C-FDN-A7-1020 SS, C-FDN-A8-1070 FF, MIL-C-570 FF | 100% |  | 2025-02-18 | 2025-06-02 |  |  | SUB |
| DUR-1100 |  | Adult Hot Tub | level of effort | 40d | 2025-06-27 A | 2025-11-04 A | C-FDN-SN-A16-1000, C-FDN-A7-SN-1390 FF | 100% |  | 2025-07-11 | 2025-09-08 |  |  | SUB |
|  | 2 | **Steel Strucutre** |  |  | 2024-11-12 | 2025-01-21 |  |  |  |  |  |  |  |  |
| DUR-1140 |  | Ph-1 | level of effort | 5d | 2024-11-12 A | 2024-12-12 A | C-SS-PH1-1000 SS, C-SS-PH1-1070 FF | 100% |  | 2024-11-15 | 2024-11-21 |  |  | ST |
| DUR-1150 |  | Ph-2 | level of effort | 15d | 2024-11-26 A | 2024-12-21 A | C-SS-PH2-1100 FF, C-SS-PH2-1040 SS | 100% |  | 2024-11-26 | 2024-12-16 |  |  | ST |
| DUR-1160 |  | Ph-3 | level of effort | 23.12d | 2024-12-09 A | 2025-01-21 A | C-SS-PH3-1080 SS, C-SS-PH3-1110 FF | 100% |  | 2024-12-09 | 2025-01-14 |  |  | ST |
|  | 3 | **Building Envelope** |  |  | 2025-01-14 | 2026-01-23 |  |  |  |  |  |  |  |  |
| DUR-1170 |  | Roofing | level of effort | 87d | 2025-01-14 A | 2025-08-27 A | C-ENV-RF-N-1000 SS, C-ENV-RF-E&S-1010 FF, C-ENV-RF-E&S-1000 FF, C-ENV-RF-E&S-1030 FF, C-ENV-RF-N-1000, C-ENV-RF-N-1060 FF | 100% |  | 2025-01-14 | 2025-05-16 |  |  | ENV |
| DUR-1180 |  | North Side | level of effort | 128d | 2025-01-28 A | 2025-09-26 A | C-ENV-SID-EW-N-1000 SS, C-ENV-SID-CL-N-1020 FF, C-ENV-SID-GL-N-1040 FF | 100% |  | 2025-01-28 | 2025-07-30 |  |  | ENV |
| DUR-1190 |  | East Side | level of effort | 128d | 2025-01-28 A | 2025-09-05 A | C-ENV-SID-EW-E-1000 SS, C-ENV-SID-GL-E-1020 FF, C-ENV-SID-CL-E-1020 FF | 100% |  | 2025-01-28 | 2025-07-30 |  |  | ENV |
| DUR-1200 |  | South Side | level of effort | 128d | 2025-01-28 A | 2026-01-23 | C-ENV-SID-EW-S-1000 SS, C-ENV-SID-GL-S-1020 FF, C-ENV-SID-CL-S-1020 FF, C-ENV-SID-CL-S-1040 FF |  | 5d | 2025-01-28 | 2025-07-30 | 28d | 0d | ENV |
|  | 4 | **Interior** |  |  | 2025-01-23 | 2026-06-19 |  |  |  |  |  |  |  |  |
| DUR-1260 |  | Zone #5 - Natatorium, Steam And Sauna, Viewing | level of effort | 102d | 2025-01-23 A | 2026-06-09 | T-INT-MF-Z5-9000 FF, T-INT-MF-Z5-9010 FF |  | 99d | 2025-10-23 | 2026-03-19 | 45d | 0d | FIT |
| DUR-1280 |  | Second Floor | level of effort | 204d | 2025-01-28 A | 2026-03-19 | T-INT-SF-2000 SS, T-INT-SF-2040 FF, T-INT-SF-MR-2110 FF, T-INT-SF-9000 FF |  | 43d | 2025-01-28 | 2025-11-18 | 101d | 0d | FIT |
| DUR-1210 |  | Basement | level of effort | 90d | 2025-06-04 A | 2026-05-25 | T-INT-BA-2080 FF, P-PRO-223 FF, T-INT-MF-BA-9000 FF |  | 88d | 2025-07-08 | 2025-11-13 | 56d | 0d | FIT |
| DUR-1220 |  | Zone #1 - Mechanical Room, Electrical Room, Exit Corridor | level of effort | 77d | 2025-09-15 A | 2026-04-28 | T-INT-MF-Z1-9000 FF |  | 70d | 2025-09-26 | 2026-01-16 | 74d | 0d | FIT |
| DUR-1230 |  | Zone #2 - Staff Areas | level of effort | 94d | 2025-09-15 A | 2026-05-01 | T-INT-MF-Z2-9000 FF |  | 73d | 2025-09-26 | 2026-02-10 | 71d | 0d | FIT |
| DUR-1240 |  | Zone #3 - Change Rooms | level of effort | 96d | 2026-01-19 | 2026-06-04 | T-INT-MF-Z3-1260 FF |  |  |  |  | 48d | 0d | FIT |
| DUR-1250 |  | Zone #4 - Pool Mechanical, Storage, Chemical, Rooms | level of effort | 86d | 2026-01-19 | 2026-05-21 | T-INT-MF-Z4-9000 FF |  |  |  |  | 58d | 0d | FIT |
| DUR-1270 |  | Zone #6 - Lobby And Vestibule | level of effort | 107d | 2026-01-19 | 2026-06-19 | T-INT-MF-Z6-9000 FF |  |  |  |  | 37d | 0d | FIT |
| DUR-1290 |  | Elevator | level of effort | 32d | 2026-02-23 | 2026-04-08 | T-MEIT-EL-1080 FF, T-MEIT-EL-1050 SS |  |  |  |  | 66d | 0d | FIT |

| ID | WBS | Activity | Type | Duration | Start | Finish | Predecessors | Complete | Remaining | Planned start | Planned finish | Total float | Free float |
| --- | --- | --- | --- | --- | --- | --- | --- | --- | --- | --- | --- | --- | --- |
|  | 5 | **Site Work** |  |  | 2025-10-08 | 2026-05-05 |  |  |  |  |  |  |  |
| DUR-1300 |  | Site Concrete And Paving | level of effort | 34d | 2025-10-08 A | 2026-05-05 | C-SW-1060 SS, C-SW-1120 FF, C-SW-1130 FF, C-SW-1140 SS, C-SW-1160 FF, C-SW-1170 FF, C-SW-1190 FF, C-SW-1200 FF |  | 75d | 2025-10-10 | 2025-11-27 | 43d | 0d |
| DUR-1310 |  | Landscaping And Site Furniture | level of effort | 4d | 2025-11-03 A | 2025-11-07 A | C-SW-1070 SS, C-SW-1070 FF, C-SW-1180 SS, C-SW-1180 FF | 100% |  | 2025-11-03 | 2025-11-06 |  |  |
|  | 7 | **Commissioning** |  |  |  |  |  |  |  |  |  |  |  |
|  | pre | **PRE- CONSTRUCTION** |  |  | 2024-02-09 | 2026-04-17 |  |  |  |  |  |  |  |
|  | 1 | **Tendering** |  |  | 2024-02-09 | 2024-11-22 |  |  |  |  |  |  |  |
|  | 2 | **TP1B (FOUNDATIONS)** |  |  | 2024-02-09 | 2024-04-19 |  |  |  |  |  |  |  |
| P-TEA-4 |  | TP1B IFT Issuance |  | 1d | 2024-02-09 A | 2024-02-09 A |  | 100% |  |  |  |  |  |
| P-TEA-5 |  | TP1B IFC Documents |  | 18d | 2024-02-12 A | 2024-03-07 A | P-TEA-4 | 100% |  |  |  |  |  |
| P-TEA-6 |  | TP1B Tendering Process and Recommendation |  | 27d | 2024-02-12 A | 2024-03-20 A | P-TEA-4 | 100% |  |  |  |  |  |
| P-TEA-7 |  | TP1B Tender Document Review (TCPM/LLB) |  | 11d | 2024-02-12 A | 2024-02-27 A | P-TEA-4 | 100% |  |  |  |  |  |
| P-TEA-8 |  | TP1B Recommendation Lac La Biche Review and Approval |  | 9d | 2024-03-21 A | 2024-04-03 A | P-TEA-6, P-TEA-7 | 100% |  |  |  |  |  |
| P-TEA-9 |  | TP1B LOI Award to the Subcontractors |  | 12d | 2024-04-04 A | 2024-04-19 A | P-TEA-8 | 100% |  |  |  |  |  |
|  | 1 | **TP2 (ROOFING, CLADDING, GLAZING, STRUCTURAL STEEL, STEEL STUD/DRYWALL, MASONRY)** |  |  | 2024-04-23 | 2024-11-14 |  |  |  |  |  |  |  |
| P-TEA-11 |  | TP2 IFT Issuance (Incl. Steel IFC's) |  | 1d | 2024-04-23 A | 2024-04-23 A | P-TEA-9 | 100% |  |  |  |  |  |
| P-TEA-12 |  | TP2 IFC Documents |  | 20d | 2024-04-24 A | 2024-06-17 A | P-TEA-11 | 100% |  | 2024-04-24 | 2024-05-22 |  |  |
| P-TEA-13 |  | TP2 Tendering Process and Recommendation |  | 14d | 2024-05-06 A | 2024-06-19 A | P-TEA-11 FS+8d | 100% |  | 2024-05-06 | 2024-05-24 |  |  |
| P-TEA-14 |  | LLB Approval and Fixed Price Approval |  | 10d | 2024-06-19 A | 2024-11-14 A | P-TEA-13, P-TEA-20 FF+5d, P-TEA-31 SS, P-TEA-51 | 100% |  | 2024-06-17 | 2024-06-28 |  |  |
| P-TEA-15 |  | TP2 LOI Award to Subcontractors |  | 5d | 2024-08-07 A | 2024-08-14 A | P-TEA-13 | 100% |  | 2024-08-08 | 2024-08-14 |  |  |
|  | 3 | **TP3 (INTERIOR FIT UP, SITE WORKS, M/E IFC'S)** |  |  | 2024-06-03 | 2024-11-22 |  |  |  |  |  |  |  |
| P-TEA-17 |  | TP3 (Interior Fit-up and Site Works) IFT Issuance |  | 36d | 2024-06-03 A | 2024-07-26 A | P-TEA-12 | 100% |  | 2024-06-03 | 2024-07-23 |  |  |
| P-TEA-18 |  | TP3 IFC Documents Development |  | 20d | 2024-07-29 A | 2024-08-26 A | P-TEA-17 | 100% |  |  |  |  |  |
| P-TEA-19 |  | TP3 Tendering Process |  | 14d | 2024-07-29 A | 2024-08-21 A | P-TEA-17 | 100% |  | 2024-07-29 | 2024-08-16 |  |  |
| P-TEA-20 |  | Value Engineering Exercise |  | 5d | 2024-08-19 A | 2024-10-17 A | P-TEA-4 | 100% |  | 2024-08-22 | 2024-08-28 |  |  |
| P-TEA-21 |  | TP3 (Interior Fit-up and Site Work) LOI Award to Subcontractors |  | 10d | 2024-08-21 A | 2024-11-22 A | P-TEA-19, P-TEA-20 FF+5d, P-TEA-31 SS, P-TEA-51 | 100% |  | 2024-08-21 | 2024-09-04 |  |  |
| P-TEA-31 |  | Fixed Price Resubmission |  | 1d | 2024-10-21 A | 2024-10-21 A | P-TEA-20 | 100% |  |  |  |  |  |
| P-TEA-41 |  | Fixed Price Resubmission Review |  | 5d | 2024-10-21 A | 2024-10-29 A | P-TEA-31 | 100% |  | 2024-10-18 | 2024-10-24 |  |  |
| P-TEA-51 |  | Fixed Price Resubmission ED clarification stage |  | 5d | 2024-10-30 A | 2024-11-08 A | P-TEA-41 | 100% |  | 2024-10-18 | 2024-10-24 |  |  |

Notes:
- P-TEA-14: C - Delay Information: 25-7-24 / the owner still reiveing our proposal

| ID | WBS | Activity | Duration | Start | Finish | Predecessors | Complete | Planned start | Planned finish |
| --- | --- | --- | --- | --- | --- | --- | --- | --- | --- |
|  | 2 | **STRUCTURAL STEEL PROCUREMENT** |  |  |  |  |  |  |  |
|  | 3 | **MECHANICAL, ELECTRICAL, POOL EQUIPMENT PROCUREMENT** |  | 2024-06-19 | 2024-10-15 |  |  |  |  |
| P-PRO-44 |  | GMP Approval Based on TP3 Package | 8d | 2024-06-19 A | 2024-10-15 A | P-TEA-14 FF, P-TEA-31 SS, P-TEA-51 | 100% | 2024-07-25 | 2024-08-06 |
|  | 4 | **SHOP DRAWINGS AND MATERIAL PROCUREMENT** |  | 2024-04-18 | 2026-04-17 |  |  |  |  |
|  | 4 | **TP1B (Foundations)** |  | 2024-04-22 | 2025-06-23 |  |  |  |  |
|  | 1 | **Concrete Reinforcing** |  | 2024-04-22 | 2025-06-23 |  |  |  |  |
| P-SD-57 |  | Area 1A/2 Pile Caps SD | 1d | 2024-04-22 A | 2024-04-22 A | P-TEA-9 | 100% |  |  |
| P-SD-58 |  | Area 2/3/4/5 North Grade beams SD | 1d | 2024-04-22 A | 2024-04-22 A | P-TEA-9 | 100% |  |  |
| P-SD-100 |  | Area 7 Lap Pool and Basement Foundations AP | 15d | 2024-04-23 A | 2024-05-13 A | P-SD-58 | 100% |  |  |
| P-SD-59 |  | Area 7 Lap Pool and Basement Foundations SD | 6d | 2024-04-23 A | 2024-04-30 A | P-SD-58 | 100% |  |  |
| P-SD-99 |  | Area 1A/2 Pile Caps AP | 15d | 2024-04-23 A | 2024-05-13 A | P-SD-57 | 100% |  |  |
| P-SD-101 |  | Area 2/3/4/5 North Grade beams AP | 15d | 2024-05-01 A | 2024-05-06 A | P-SD-59 | 100% | 2024-05-01 | 2024-05-22 |
| P-SD-60 |  | Area 11/12/13 South Grade beams SD | 4d | 2024-05-01 A | 2024-05-06 A | P-SD-59 | 100% |  |  |
| P-SD-102 |  | Area 11/12/13 South Grade beams AP | 15d | 2024-05-07 A | 2024-05-21 A | P-SD-60 | 100% | 2024-05-07 | 2024-05-28 |
| P-SD-61 |  | Area 5/7 Lap Pool and Basement Walls SD | 5d | 2024-05-07 A | 2024-05-13 A | P-SD-60 | 100% |  |  |
| P-PRO-140 |  | Area 1A/2 Pile Caps | 5d | 2024-05-14 A | 2024-06-19 A | P-SD-99 | 100% | 2024-05-14 | 2024-05-21 |
| P-PRO-141 |  | Area 7 Lap Pool and Basement Foundations | 5d | 2024-05-14 A | 2024-06-19 A | P-SD-100 | 100% | 2024-05-14 | 2024-05-21 |
| P-SD-62 |  | Area 3/5 Leisure Pool, Surge Tank, Family Hot Tub Foundations and Walls SD | 5d | 2024-05-14 A | 2024-07-15 A | P-SD-61 | 100% | 2024-05-14 | 2024-05-21 |
| P-SD-103 |  | Area 5/7 Lap Pool and Basement Walls AP | 15d | 2024-05-29 A | 2024-06-11 A | P-SD-61 | 100% | 2024-05-14 | 2024-06-04 |
| P-PRO-142 |  | Area 2/3/4/5 North Grade beams | 13d | 2024-06-03 A | 2024-06-19 A | P-SD-101 | 100% |  |  |
| P-PRO-1444 |  | Area 5/7 Lap Pool and Basement Walls | 15d | 2024-06-11 A | 2024-07-03 A | P-SD-103 | 100% | 2024-05-30 | 2024-06-19 |
| P-PRO-143 |  | Area 11/12/13 South Grade beams | 5d | 2024-07-02 A | 2024-07-08 A | P-SD-102 | 100% |  |  |
| P-SD-63 |  | Adult Hot Tub and Outdoor Hot Tub SD | 5d | 2024-07-02 A | 2024-07-24 A | P-TEA-4 | 100% | 2024-07-11 | 2024-07-17 |
| P-SD-64 |  | Slabs SD | 15d | 2024-07-09 A | 2024-08-12 A | P-TEA-4 | 100% | 2024-07-16 | 2024-08-06 |
| P-SD-104 |  | Area 3/5 Leisure Pool, Surge Tank, Family Hot Tub Foundations and Walls AP | 15d | 2024-07-11 A | 2024-07-22 A | P-SD-62 | 100% | 2024-07-11 | 2024-07-31 |
| P-PRO-145 |  | Area 3/5 Leisure Pool, Surge Tank, Family Hot Tub Foundations and Walls | 5d | 2024-07-23 A | 2024-07-31 A | P-SD-104 | 100% | 2024-07-23 | 2024-07-29 |
| P-SD-105 |  | Adult Hot Tub and Outdoor Hot Tub AP | 10d | 2024-07-25 A | 2024-08-13 A | P-SD-63 | 100% | 2024-07-25 | 2024-08-08 |
| P-SD-106 |  | Slabs AP | 15d | 2024-08-10 A | 2024-08-10 A | P-SD-64 | 100% | 2024-08-21 | 2024-09-11 |
| P-PRO-147 |  | Slabs Delivery | 20d | 2024-11-07 A | 2025-05-23 A | P-SD-106 | 100% | 2024-11-07 | 2024-12-04 |
| P-PRO-146 |  | Adult Hot Tub and Outdoor Hot Tub Delivery | 5d | 2025-05-30 A | 2025-06-23 A | P-SD-105 | 100% | 2025-06-05 | 2025-06-11 |

| ID | WBS | Activity | Duration | Start | Finish | Predecessors | Complete | Planned start | Planned finish |
| --- | --- | --- | --- | --- | --- | --- | --- | --- | --- |
|  | 2 | **Piling** |  | 2024-04-22 | 2024-05-22 |  |  |  |  |
| P-SD-51 |  | Piling R0 | 2d | 2024-04-22 A | 2024-04-23 A | P-TEA-9, P-TEA-5 | 100% |  |  |
| P-SD-93 |  | Piling R0 - Revise and Resubmit | 13d | 2024-04-24 A | 2024-05-10 A | P-SD-51 | 100% |  |  |
| P-PRO-135 |  | Piling Delivery | 7d | 2024-05-13 A | 2024-05-22 A | P-SD-93, P-SD-94 | 100% |  |  |
| P-SD-52 |  | Piling R1 | 3d | 2024-05-13 A | 2024-05-15 A | P-SD-93 | 100% |  |  |
| P-SD-94 |  | Piling R1 | 1d | 2024-05-16 A | 2024-05-16 A | P-SD-52 | 100% |  |  |
|  | 3 | **Sheet Piling** |  | 2024-04-22 | 2024-05-27 |  |  |  |  |
| P-SD-53 |  | Sheet Piling | 5d | 2024-04-22 A | 2024-04-26 A | P-TEA-9 | 100% |  |  |
| P-SD-95 |  | Sheet Piling | 10d | 2024-04-29 A | 2024-05-10 A | P-SD-53 | 100% |  |  |
| P-PRO-136 |  | Sheet Piling Delivery | 10d | 2024-05-13 A | 2024-05-27 A | P-SD-95 | 100% |  |  |
|  | 4 | **Concrete Formwork** |  | 2024-04-22 | 2024-06-12 |  |  |  |  |
| P-SD-54 |  | Concrete Formwork | 15d | 2024-04-22 A | 2024-05-10 A | P-TEA-9 | 100% |  |  |
| P-SD-96 |  | Concrete Formwork-R0 | 10d | 2024-05-13 A | 2024-05-22 A | P-SD-54 | 100% | 2024-05-13 | 2024-05-27 |
| P-SD-186 |  | Concrete Formwork-R1 | 10d | 2024-05-30 A | 2024-06-12 A | P-SD-96 | 100% | 2024-05-16 | 2024-05-30 |
| P-PRO-137 |  | Concrete Formwork Delivery | 10d | 2024-05-30 A | 2024-06-12 A | P-SD-96, P-SD-186 | 100% |  |  |
|  | 5 | **Concrete Mix Design** |  | 2024-04-22 | 2024-09-03 |  |  |  |  |
| P-SD-55 |  | Concrete Mix Design SD | 5d | 2024-04-22 A | 2024-04-26 A | P-TEA-9 | 100% |  |  |
| P-SD-97 |  | Concrete Mix Design AP | 10d | 2024-04-29 A | 2024-05-10 A | P-SD-55 | 100% |  |  |
| P-PRO-138 |  | Concrete Mix Design Delivery | 1d | 2024-09-03 A | 2024-09-03 A | P-SD-97 | 100% |  |  |
|  | 6 | **Weeping Tile** |  | 2024-04-22 | 2024-07-10 |  |  |  |  |
| P-SD-65 |  | Weeping Tile | 15d | 2024-04-22 A | 2024-05-10 A | P-TEA-9 | 100% |  |  |
| P-SD-107 |  | Weeping Tile | 10d | 2024-05-13 A | 2024-05-24 A | P-SD-65 | 100% | 2024-05-13 | 2024-05-27 |
| P-PRO-148 |  | Weeping Tile Delivery | 10d | 2024-06-17 A | 2024-07-10 A | P-SD-107 | 100% | 2024-06-20 | 2024-07-04 |
|  | 7 | **Waterproofing** |  | 2024-04-22 | 2024-09-03 |  |  |  |  |
| P-SD-66 |  | Waterproofing | 15d | 2024-04-22 A | 2024-05-10 A | P-TEA-9 | 100% |  |  |
| P-SD-108 |  | Waterproofing | 10d | 2024-05-29 A | 2024-07-25 A | P-SD-66 | 100% | 2024-05-13 | 2024-05-27 |
| P-PRO-149 |  | Waterproofing Delivery | 11d | 2024-07-26 A | 2024-09-03 A | P-SD-108 | 100% | 2024-07-26 | 2024-08-12 |

| ID | WBS | Activity | Type | Duration | Start | Finish | Predecessors | Complete | Planned start | Planned finish | Comment |
| --- | --- | --- | --- | --- | --- | --- | --- | --- | --- | --- | --- |
|  | 8 | **Underground Mechanical and Weeping Tile Sump** |  |  | 2024-05-13 | 2024-11-05 |  |  |  |  |  |
| P-SD-67 |  | Underground Mechanical and Weeping Tile Sump R0 |  | 15d | 2024-05-13 A | 2024-06-24 A | P-TEA-9 FS+15d | 100% | 2024-05-13 | 2024-06-03 |  |
| P-SD-109 |  | Underground Mechanical and Weeping Tile Sump R0 |  | 15d | 2024-06-24 A | 2024-06-25 A | P-SD-67 | 100% | 2024-06-20 | 2024-07-11 |  |
| P-SD-327 |  | Underground Mechanical and Weeping Tile Sump R1 |  | 5d | 2024-06-25 A | 2024-09-13 A | P-SD-109 | 100% | 2024-06-13 | 2024-06-19 |  |
| P-SD-119 |  | Underground Mechanical and Weeping Tile Sump R1 |  | 1d | 2024-09-12 A | 2024-09-12 A | P-SD-327 | 100% | 2024-09-11 | 2024-09-11 |  |
| P-PRO-150 |  | Underground Mechanical and Weeping Tile Sump Delivery |  | 15d | 2024-09-16 A | 2024-11-05 A | P-SD-109, P-SD-119 | 100% | 2024-09-12 | 2024-10-02 |  |
|  | 9 | **Weeping Tile - Beding Gravel and Filter Fabric Samples** |  |  | 2024-05-16 | 2024-07-10 |  |  |  |  |  |
| P-SD-77 |  | Weeping Tile - Bedding Gravel and filter fabric samples |  | 5d | 2024-05-16 A | 2024-06-07 A | P-TEA-9 | 100% | 2024-05-16 | 2024-05-23 |  |
| P-SD-287 |  | Weeping Tile - Bedding Gravel and filter fabric samples |  | 5d | 2024-06-07 A | 2024-06-17 A | P-SD-77 | 100% | 2024-06-03 | 2024-06-07 |  |
| P-PRO-144 |  | Weeping Tile - Bedding Gravel and filter fabric samples Delivery |  | 10d | 2024-06-26 A | 2024-07-10 A | P-SD-77, P-SD-287 | 100% | 2024-06-13 | 2024-06-26 |  |
|  | 6 | **TP2 (Core and Shell)** |  |  | 2024-04-18 | 2026-02-20 |  |  |  |  |  |
|  | 1 | **Structural Steel** |  |  | 2024-04-24 | 2024-11-12 |  |  |  |  |  |
| P-PRO-23 |  | TP2 IFT Document Issuance |  | 0d | 2024-04-24 A | 2024-04-24 A | P-TEA-11 | 100% |  |  |  |
| P-PRO-24 |  | Steel Inventory List |  | 6d | 2024-04-24 A | 2024-05-01 A | P-PRO-23 | 100% |  |  |  |
| P-PRO-26 |  | Shop Drawing Development and Issuance |  | 40d | 2024-04-24 A | 2024-08-08 A | P-PRO-23 | 100% | 2024-04-24 | 2024-06-19 |  |
| P-PRO-25 |  | Bulk Order and Procurement |  | 60d | 2024-05-02 A | 2024-07-26 A | P-PRO-24 | 100% |  |  |  |
| P-PRO-27 |  | Shop Drawing Review and Approval |  | 13d | 2024-08-08 A | 2024-08-21 A | P-PRO-26 | 100% | 2024-07-29 | 2024-08-15 |  |
| P-PRO-28 |  | Steel Fabrication |  | 20d | 2024-08-22 A | 2024-11-12 A | P-PRO-27, P-PRO-25 | 100% | 2024-08-26 | 2024-09-23 |  |
| P-PRO-29 |  | Coating |  | 10d | 2024-09-30 A | 2024-11-12 A | P-PRO-28 SS+5d | 100% | 2024-10-01 | 2024-10-15 |  |
| P-PRO-1454 |  | Steel Delivery - Phase-2 | milestone | 0d | 2024-11-12 A | 2024-11-12 A | P-PRO-25 FF | 100% | 2024-11-14 | 2024-11-14 |  |
| P-PRO-1464 |  | Steel Delivery - Phase-3 | milestone | 0d | 2024-11-12 A | 2024-11-12 A | P-PRO-29 FF | 100% | 2024-12-04 | 2024-12-04 |  |
| P-PRO-30 |  | Steel Delivery - Phase-1 | milestone | 0d | 2024-11-12 A | 2024-11-12 A | P-PRO-25 FF | 100% |  |  |  |
|  | 11 | **Cladding** |  |  | 2024-08-16 | 2025-07-16 |  |  |  |  |  |
| P-SD-71 |  | Cladding SD |  | 15d | 2024-08-16 A | 2024-10-24 A | P-TEA-15 FS+1d | 100% | 2024-08-16 | 2024-09-06 |  |
| P-SD-113 |  | Cladding Review R0 |  | 15d | 2024-10-25 A | 2024-11-08 A | P-SD-71 | 100% | 2024-10-25 | 2024-11-14 |  |
| P-SD-133 |  | Cladding SD R1 |  | 5d | 2024-11-09 A | 2025-01-17 A | P-SD-113 | 100% | 2024-11-06 | 2024-11-12 | Waiting for Canopy Shopdrawings |
| P-SD-143 |  | Cladding AP R1 |  | 5d | 2025-01-17 A | 2025-01-28 A | P-SD-133 | 100% | 2025-01-20 | 2025-01-24 |  |
| P-PRO-154 |  | Cladding Delivery |  | 116d | 2025-01-29 A | 2025-07-16 A | P-SD-113, P-SD-143 | 100% | 2025-01-29 | 2025-07-15 |  |

| ID | WBS | Activity | Duration | Start | Finish | Predecessors | Complete | Planned start | Planned finish | Comment |
| --- | --- | --- | --- | --- | --- | --- | --- | --- | --- | --- |
|  | 2 | **IMP** |  | 2024-08-16 | 2025-08-04 |  |  |  |  |  |
| P-SD-72 |  | IMP SD | 10d | 2024-08-16 A | 2024-10-10 A | P-TEA-15 FS+1d | 100% | 2024-08-16 | 2024-08-29 |  |
| P-SD-114 |  | IMP AP | 15d | 2024-10-10 A | 2024-10-24 A | P-SD-72 | 100% | 2024-10-16 | 2024-11-05 |  |
| P-SD-134 |  | Sample Submission | 5d | 2024-10-23 A | 2024-10-29 A |  | 100% | 2024-11-06 | 2024-11-12 |  |
| P-SD-144 |  | Sample Review | 5d | 2024-10-29 A | 2024-11-06 A | P-SD-134 | 100% | 2024-11-06 | 2024-11-12 |  |
| P-SD-154 |  | Sample Submission R-1 | 5d | 2024-11-07 A | 2024-12-13 A | P-SD-144 | 100% | 2024-11-06 | 2024-11-12 | Waiting for Canopy Shopdrawings |
| P-SD-164 |  | Sample Review and Approval | 1d | 2024-12-13 A | 2024-12-13 A | P-SD-154 | 100% |  |  |  |
| P-PRO-155 |  | IMP Delivery | 105d | 2024-12-16 A | 2025-08-04 A | P-SD-114, P-SD-164 | 100% | 2024-12-16 | 2025-05-16 |  |
|  | 5 | **Curatin Wall & Glazing** |  | 2024-08-16 | 2025-05-05 |  |  |  |  |  |
| P-SD-73 |  | Curtain wall & Glazing SD R-0 | 15d | 2024-08-16 A | 2024-11-06 A | P-TEA-15 FS+1d | 100% | 2024-08-16 | 2024-09-06 |  |
| P-SD-153 |  | Curtain wall & Glazing AP R-0 | 5d | 2024-11-06 A | 2024-11-14 A | P-SD-73 | 100% | 2024-11-06 | 2024-11-12 |  |
| P-SD-163 |  | Curtain wall & Glazing SD R-1 | 5d | 2024-11-15 A | 2024-11-15 A | P-SD-153 | 100% | 2024-11-06 | 2024-11-12 |  |
| P-SD-115 |  | Glazing AP R-1 | 15d | 2024-11-15 A | 2024-11-15 A | P-SD-73, P-SD-163 | 100% | 2024-11-25 | 2024-12-13 |  |
| P-SD-1674 |  | Curtain wall & Glazing SD R-2 | 5d | 2024-11-15 A | 2024-12-23 A | P-SD-115 | 100% | 2024-12-04 | 2024-12-10 |  |
| P-SD-1684 |  | Glazing AP R-2 | 5d | 2024-12-23 A | 2025-01-10 A | P-SD-1674, P-SD-1674 FF | 100% | 2024-12-11 | 2024-12-17 |  |
| P-PRO-176 |  | Aluminum Bulk Order | 20d | 2025-01-13 A | 2025-02-07 A | P-SD-115, P-SD-1684 | 100% |  |  | confirmation to gurntee window rough opeinings |
| P-PRO-186 |  | Fabrication Glazing - North Elevation | 15d | 2025-02-10 A | 2025-03-03 A | P-PRO-176 | 100% |  |  |  |
| P-PRO-196 |  | Aluminum Frame Fabrication | 15d | 2025-02-10 A | 2025-03-03 A | P-PRO-176, P-PRO-176 FF | 100% |  |  |  |
| P-PRO-1474 |  | Fabrication Glazing - East Elevation | 15d | 2025-02-25 A | 2025-03-17 A |  | 100% |  |  |  |
| P-PRO-1484 |  | Glazing Delivery - East Elevation | 25d | 2025-02-25 A | 2025-05-05 A | P-PRO-1474 | 100% | 2025-02-25 | 2025-03-31 |  |
| P-PRO-156 |  | Glazing Delivery - North Elevation | 25d | 2025-03-04 A | 2025-05-05 A | P-SD-115, P-PRO-186, P-SD-1684 | 100% | 2025-03-04 | 2025-04-07 |  |
| P-PRO-1494 |  | Fabrication Glazing - South Elevation | 15d | 2025-03-10 A | 2025-03-28 A |  | 100% |  |  |  |
| P-PRO-1504 |  | Glazing Delivery - South Elevation | 25d | 2025-03-31 A | 2025-05-05 A | P-PRO-1494 | 100% |  |  |  |
|  | 8 | **Anchor Bolts** |  | 2024-04-18 | 2024-06-14 |  |  |  |  |  |
| P-PRO-32 |  | Authorization to proceed | 1d | 2024-04-18 A | 2024-04-18 A | P-TEA-9 | 100% |  |  |  |
| P-PRO-33 |  | IFA Shopdrawings | 20d | 2024-04-19 A | 2024-05-16 A | P-PRO-32 | 100% |  |  |  |
| P-PRO-34 |  | ED/DLG Shopdrawings Review | 10d | 2024-05-16 A | 2024-05-30 A | P-PRO-33 | 100% |  |  |  |
| P-PRO-35 |  | IFS | 3d | 2024-05-30 A | 2024-06-03 A | P-PRO-34 | 100% |  |  |  |
| P-PRO-36 |  | Fabrication | 10d | 2024-06-04 A | 2024-06-14 A | P-PRO-35 | 100% | 2024-06-04 | 2024-06-17 |  |
| P-PRO-37 |  | Anchor Bolts Onsite | 3d | 2024-06-14 A | 2024-06-14 A | P-PRO-36 | 100% | 2024-06-17 | 2024-06-19 |  |

| ID | WBS | Activity | Duration | Start | Finish | Predecessors | Complete | Remaining | Planned start | Planned finish | Total float | Free float | Expected finish | Comments |
| --- | --- | --- | --- | --- | --- | --- | --- | --- | --- | --- | --- | --- | --- | --- |
|  | 12 | **Exterior Steel Stud and Drywall** |  | 2024-08-16 | 2025-01-13 |  |  |  |  |  |  |  |  |  |
| P-SD-74 |  | Exterior Steel Stud and Drywall SD | 10d | 2024-08-16 A | 2024-10-01 A | P-TEA-15 FS+1d | 100% |  | 2024-08-16 | 2024-08-29 |  |  |  |  |
| P-SD-116 |  | Exterior Steel Stud and Drywall AP | 15d | 2024-10-04 A | 2024-10-25 A | P-SD-74 | 100% |  |  |  |  |  |  |  |
| P-PRO-157 |  | Exterior Steel Stud and Drywall Delivery | 5d | 2024-12-04 A | 2025-01-13 A | P-SD-116 | 100% |  | 2024-12-04 | 2024-12-10 |  |  |  | delivery as needed for install |
|  | 3 | **Masonry** |  | 2024-08-16 | 2025-05-05 |  |  |  |  |  |  |  |  |  |
| P-SD-75 |  | Masonry SD | 10d | 2024-08-16 A | 2025-03-10 A | P-TEA-15 FS+1d, P-TEA-21 SS | 100% |  | 2024-08-16 | 2024-08-29 |  |  |  |  |
| P-SD-117 |  | Masonry AP | 15d | 2025-03-11 A | 2025-04-15 A | P-SD-75 | 100% |  | 2025-03-24 | 2025-04-11 |  |  |  |  |
| P-PRO-158 |  | Masonry Delivery | 15d | 2025-04-16 A | 2025-05-05 A | P-SD-117 | 100% |  | 2025-04-22 | 2025-05-12 |  |  |  |  |
|  | 6 | **Elevator** |  | 2024-08-16 | 2026-02-20 |  |  |  |  |  |  |  |  |  |
| P-SD-76 |  | Elevator R-0 SD | 20d | 2024-08-16 A | 2024-09-03 A | P-TEA-15 FS+1d | 100% |  | 2024-08-16 | 2024-09-13 |  |  |  |  |
| P-SD-118 |  | Elevator - R0 AP | 15d | 2024-09-04 A | 2024-09-18 A | P-SD-76 | 100% |  | 2024-09-16 | 2024-10-04 |  |  |  |  |
| P-SD-136 |  | Elevator SD - R1 | 5d | 2024-09-19 A | 2024-10-04 A | P-SD-118 | 100% |  | 2024-09-19 | 2024-09-25 |  |  |  | Elevator might be removed from scope TBD |
| P-SD-146 |  | Elevator AP - R1 | 10d | 2024-10-04 A | 2024-10-18 A | P-SD-136 | 100% |  | 2024-11-01 | 2024-11-14 |  |  |  |  |
| P-SD-1654 |  | Elevator SD - R2 | 13d | 2024-11-13 A | 2024-11-22 A | P-SD-146 | 100% |  | 2024-11-13 | 2024-11-29 |  |  |  | Elevator might be removed from scope TBD |
| P-SD-1664 |  | Elevator AP - R2 | 10d | 2024-11-25 A | 2024-12-02 A | P-SD-1654, P-SD-1654 FF | 100% |  | 2024-12-02 | 2024-12-13 |  |  |  |  |
| P-PRO-159 |  | Elevator Delivery | 90d | 2025-09-12 A | 2026-02-20 | P-SD-118, P-SD-146, P-SD-1664, X-PRO-1000 |  | 24d | 2025-09-12 | 2026-01-21 | 66d | 0d | 2026-02-20 |  |
|  | 9 | **Glazing** |  |  |  |  |  |  |  |  |  |  |  |  |
|  | 10 | **Fireproofing** |  | 2024-09-19 | 2025-09-08 |  |  |  |  |  |  |  |  |  |
| P-SD-135 |  | Fireproofing SD | 5d | 2024-09-19 A | 2024-09-20 A | P-TEA-4 | 100% |  | 2024-09-19 | 2024-09-25 |  |  |  |  |
| P-SD-337 |  | Fireproofing AP R-0 | 15d | 2024-09-21 A | 2024-10-11 A | P-SD-135 | 100% |  | 2024-10-04 | 2024-10-25 |  |  |  |  |
| P-SD-517 |  | Fireproofing SD R-1 | 5d | 2024-10-03 A | 2024-10-21 A | P-SD-337 | 100% |  | 2024-10-04 | 2024-10-10 |  |  |  | Substitution for R0 Material |
| P-SD-527 |  | Fireproofing AP R-1 | 5d | 2024-10-22 A | 2024-10-28 A | P-SD-517 | 100% |  |  |  |  |  |  |  |
| P-PRO-100 |  | Fireproofing Delivery | 40d | 2024-10-29 A | 2025-09-08 A | P-SD-337, P-SD-527 | 100% |  | 2024-10-29 | 2024-12-23 |  |  |  |  |
|  | 13 | **OWSJ** |  | 2024-04-24 | 2024-11-12 |  |  |  |  |  |  |  |  |  |
| P-PRO-38 |  | TP2 IFC Document Issuance | 0d | 2024-04-24 A | 2024-04-24 A | P-TEA-11 | 100% |  |  |  |  |  |  |  |
| P-PRO-40 |  | OWSJ Shop Drawing Issuance R0 | 25d | 2024-04-24 A | 2024-07-10 A | P-PRO-38 | 100% |  | 2024-04-24 | 2024-05-29 |  |  |  |  |
| P-PRO-41 |  | Shop Drawing review and Approval - OWSJ R0 | 10d | 2024-07-11 A | 2024-07-17 A | P-PRO-40, P-PRO-40 FF | 100% |  | 2024-07-09 | 2024-07-22 |  |  |  |  |
| P-PRO-91 |  | OWSJ Shop Drawing Issuance R1 | 5d | 2024-07-18 A | 2024-08-16 A | P-PRO-41 | 100% |  | 2024-07-25 | 2024-07-31 |  |  |  |  |
| P-PRO-50 |  | Shop Drawing review and Approval -OWSJ R1 | 5d | 2024-08-16 A | 2024-08-16 A | P-PRO-40, P-PRO-91 | 100% |  | 2024-08-19 | 2024-08-23 |  |  |  |  |
| P-PRO-1514 |  | OWSJ Fabrication and Delivery PH-2 | 24d | 2024-08-17 A | 2024-11-12 A | P-PRO-42 FF | 100% |  | 2024-08-26 | 2024-09-27 |  |  |  |  |
| P-PRO-1524 |  | OWSJ Fabrication and Delivery PH-3 | 24d | 2024-08-17 A | 2024-11-12 A | P-PRO-1514 FF | 100% |  | 2024-08-26 | 2024-09-27 |  |  |  |  |
| P-PRO-42 |  | OWSJ Fabrication and Delivery PH-1 | 24d | 2024-08-17 A | 2024-11-12 A | P-PRO-41, P-PRO-50 | 100% |  | 2024-08-26 | 2024-09-27 |  |  |  |  |

Notes:
- P-SD-75: C - Delay Information: the contract not yet fainalized (04TH OCT 2024 UPDATE)

| ID | WBS | Activity | Duration | Start | Finish | Predecessors | Complete | Remaining | Planned start | Planned finish | Total float | Free float | Expected finish | Comment |
| --- | --- | --- | --- | --- | --- | --- | --- | --- | --- | --- | --- | --- | --- | --- |
|  | 7 | **Painting** |  | 2024-12-16 | 2025-02-19 |  |  |  |  |  |  |  |  |  |
| P-SD-86 |  | Painting SD | 10d | 2024-12-16 A | 2025-01-09 A | P-TEA-21 | 100% |  | 2024-12-16 | 2024-12-31 |  |  |  |  |
| P-SD-128 |  | Painting AP | 15d | 2025-01-13 A | 2025-01-21 A | P-SD-86 | 100% |  | 2025-01-13 | 2025-01-31 |  |  |  |  |
| P-PRO-169 |  | Painting Delivery | 20d | 2025-01-22 A | 2025-02-19 A | P-SD-128 | 100% |  |  |  |  |  |  |  |
|  | 4 | **Roofing** |  | 2024-08-14 | 2025-02-03 |  |  |  |  |  |  |  |  |  |
| P-SD-70 |  | Roofing SD | 10d | 2024-08-14 A | 2024-10-25 A | P-TEA-15 FS+1d | 100% |  | 2024-08-16 | 2024-08-29 |  |  |  |  |
| P-SD-112 |  | Roofing AP R-0 | 15d | 2024-10-28 A | 2024-11-14 A | P-SD-70 | 100% |  | 2024-10-28 | 2024-11-15 |  |  |  |  |
| P-SD-142 |  | Roofing SD R-1 | 5d | 2024-11-14 A | 2024-11-20 A | P-SD-112 | 100% |  | 2024-11-06 | 2024-11-12 |  |  |  |  |
| P-SD-152 |  | Roofing AP R-1 | 5d | 2024-11-21 A | 2024-12-02 A | P-SD-112, P-SD-142 | 100% |  | 2024-11-21 | 2024-11-27 |  |  |  |  |
| P-PRO-153 |  | Roofing Delivery | 60d | 2024-12-03 A | 2025-02-03 A | P-SD-112, P-SD-142, P-SD-152 | 100% |  | 2024-11-28 | 2025-02-25 |  |  |  |  |
|  | 5 | **TP3 (Interior, Site Works, Mechanical and Electrical)** |  | 2024-07-16 | 2026-04-17 |  |  |  |  |  |  |  |  |  |
|  | 9 | **Waterslide** |  | 2024-08-16 | 2026-01-21 |  |  |  |  |  |  |  |  |  |
| P-SD-69 |  | Waterslide Preliminary Design SB | 10d | 2024-08-16 A | 2024-10-23 A | P-TEA-15 FS+1d | 100% |  | 2024-08-16 | 2024-08-29 |  |  |  |  |
| P-SD-111 |  | Waterslide Preliminary Design AP | 10d | 2024-10-24 A | 2024-11-06 A | P-SD-69 | 100% |  |  |  |  |  |  |  |
| P-SD-139 |  | Waterslide IFA SD | 20d | 2025-02-14 A | 2025-03-11 A | P-SD-111 | 100% |  | 2025-02-14 | 2025-03-14 |  |  |  | Contract Pedning / owner payment |
| P-SD-141 |  | Waterslide AP | 15d | 2025-03-12 A | 2025-04-24 A | P-SD-139 | 100% |  | 2025-03-17 | 2025-04-04 |  |  |  |  |
| P-SD-151 |  | Waterslide IFC SDs | 20d | 2025-04-25 A | 2025-05-23 A | P-SD-141 | 100% |  | 2025-04-28 | 2025-05-26 |  |  |  |  |
| P-SD-1714 |  | Waterslide IFC AP | 15d | 2025-05-26 A | 2025-06-19 A | P-SD-151 | 100% |  | 2025-05-26 | 2025-06-13 |  |  |  |  |
| P-PRO-152 |  | Waterslide Delivery | 120d | 2025-09-12 A | 2026-01-21 | P-SD-111, P-SD-141, P-SD-1714 |  | 3d | 2025-09-12 | 2026-03-05 | 104d | 0d | 2026-01-21 |  |
|  | 13 | **Door Frames** |  | 2024-08-20 | 2025-05-14 |  |  |  |  |  |  |  |  |  |
| P-SD-83 |  | Door, Frames and Hardware SD | 20d | 2024-08-20 A | 2024-09-10 A | P-TEA-21 SS | 100% |  | 2024-09-23 | 2024-10-21 |  |  |  |  |
| P-SD-125 |  | Door, Frames and Hardware AP | 15d | 2024-09-11 A | 2024-12-09 A | P-SD-83 | 100% |  | 2024-10-15 | 2024-11-04 |  |  |  | ?? |
| P-SD-145 |  | Door Frames SD R-1 | 5d | 2024-12-10 A | 2025-01-31 A | P-SD-125 | 100% |  | 2024-12-04 | 2024-12-10 |  |  |  |  |
| P-SD-155 |  | Door Frames AP R-1 | 5d | 2025-02-03 A | 2025-03-20 A | P-SD-145 | 100% |  | 2025-02-03 | 2025-02-07 |  |  |  |  |
| P-PRO-166 |  | Door Frames Delivery | 60d | 2025-03-20 A | 2025-05-14 A | P-SD-125, P-SD-155 SS | 100% |  | 2024-12-04 | 2025-03-03 |  |  |  |  |

| ID | WBS | Activity | Duration | Start | Finish | Predecessors | Complete | Planned start | Planned finish | Comment | #User-Text_01 |
| --- | --- | --- | --- | --- | --- | --- | --- | --- | --- | --- | --- |
|  | 14 | **Pool** |  | 2024-07-16 | 2025-12-10 |  |  |  |  |  |  |
| P-SD-800 |  | Pool Piping & Main Drain SD | 5d | 2024-07-16 A | 2024-07-16 A |  | 100% | 2024-10-04 | 2024-10-10 |  |  |
| P-SD-810 |  | Pool Piping & Main Drain AP | 5d | 2024-07-16 A | 2024-07-30 A | P-SD-800 | 100% | 2024-10-04 | 2024-10-10 |  |  |
| P-PRO-820 |  | Pool Piping & Main Drain Delivery | 5d | 2024-07-30 A | 2025-02-03 A | P-SD-810 | 100% | 2024-10-04 | 2024-10-10 |  |  |
| P-PRO-393 |  | Motorized Valves | 60d | 2025-01-14 A | 2025-03-11 A |  | 100% | 2025-01-10 | 2025-04-04 | basement |  |
| P-PRO-363 |  | Filters | 60d | 2025-03-03 A | 2025-04-28 A |  | 100% | 2025-01-10 | 2025-04-04 | basement |  |
| P-PRO-303 |  | Storage | 60d | 2025-03-11 A | 2025-04-07 A |  | 100% | 2025-01-10 | 2025-04-04 | Main floor |  |
| P-PRO-353 |  | Flow Meters - Main Floor | 60d | 2025-03-14 A | 2025-09-05 A |  | 100% | 2025-01-10 | 2025-04-04 | Main floor |  |
| P-PRO-323 |  | VFD's | 60d | 2025-03-28 A | 2025-08-29 A |  | 100% | 2025-01-10 | 2025-04-04 | basement |  |
| P-PRO-293 |  | pH Feeders | 60d | 2025-04-11 A | 2025-09-04 A |  | 100% | 2025-01-10 | 2025-04-04 | Main floor |  |
| P-PRO-333 |  | Pumps and Boosters | 60d | 2025-04-11 A | 2025-09-03 A |  | 100% | 2025-01-10 | 2025-04-04 | Basement and Main |  |
| P-PRO-413 |  | Chemical Controllers - Main Floor SD | 5d | 2025-04-18 A | 2025-05-15 A |  | 100% | 2025-01-10 | 2025-01-16 |  |  |
| P-PRO-343 |  | Strainers | 60d | 2025-04-25 A | 2025-09-06 A |  | 100% | 2025-01-10 | 2025-04-04 | basement |  |
| P-SD-132 |  | Pool Fixtures AP | 15d | 2025-04-25 A | 2025-05-20 A | P-SD-90 | 100% | 2025-06-26 | 2025-07-17 |  |  |
| P-SD-90 |  | Pool Fixtures SD | 10d | 2025-04-25 A | 2025-04-25 A | P-TEA-21 | 100% | 2025-02-03 | 2025-02-14 |  |  |
| P-SD-373 |  | Autofill AP | 5d | 2025-05-05 A | 2025-05-05 A |  | 100% | 2025-06-26 | 2025-07-03 |  |  |
| P-PRO-313 |  | Autofill | 40d | 2025-05-06 A | 2025-12-10 A | P-SD-373 | 100% | 2025-01-10 | 2025-03-07 | basement |  |
| P-PRO-423 |  | Chemical Controllers - Main Floor AP | 0d | 2025-05-16 A | 2025-06-04 A | P-PRO-413 | 100% | 2025-05-26 | 2025-05-26 |  |  |
| P-PRO-403 |  | Chemical Controllers - Main Floor | 30d | 2025-06-04 A | 2025-08-29 A | P-PRO-413, P-PRO-423 | 100% | 2025-06-26 | 2025-08-08 | basement |  |
| P-PRO-383 |  | Ultra Violet Disinfection | 42d | 2025-07-09 A | 2025-10-27 A |  | 100% | 2025-08-15 | 2025-10-15 | basement | 14-16 week from july-09 |
| P-PRO-173 |  | Pool Fixtures Delivery | 40d | 2025-09-12 A | 2025-11-07 A | P-SD-132 | 100% |  |  |  |  |
|  | 5 | **Misc Metals** |  | 2024-11-11 | 2025-02-17 |  |  |  |  |  |  |
| P-SD-81 |  | RTU Frames, Roof Ladder (Misc Metals) SD | 15d | 2024-11-11 A | 2025-01-10 A | P-TEA-21 | 100% | 2024-11-21 | 2024-12-11 | 'Outstanding is roof RTU's, waterslide tower. |  |
| P-SD-123 |  | RTU Frames, Roof Ladder (Misc Metals) AP | 15d | 2025-01-13 A | 2025-02-17 A | P-SD-81 | 100% | 2025-01-13 | 2025-01-31 |  |  |
| P-SD-173 |  | RTU Frames, Roof Ladder (Misc Metals) SD R1 | 24d | 2025-01-13 A | 2025-02-13 A |  | 100% |  |  |  |  |

| ID | WBS | Activity | Duration | Start | Finish | Predecessors | Complete | Remaining | Planned start | Planned finish | Total float | Free float | Expected finish | #User-Text_01 |
| --- | --- | --- | --- | --- | --- | --- | --- | --- | --- | --- | --- | --- | --- | --- |
|  | 10 | **Millwork** |  | 2025-01-30 | 2026-03-16 |  |  |  |  |  |  |  |  |  |
| P-SD-82 |  | Millwork SD | 30d | 2025-01-30 A | 2025-03-13 A | P-TEA-21 | 100% |  |  |  |  |  |  |  |
| P-SD-124 |  | Millwork AP | 15d | 2025-03-21 A | 2025-04-04 A | P-SD-82 | 100% |  | 2025-03-14 | 2025-04-03 |  |  |  |  |
| P-PRO-165 |  | Millwork Delivery | 60d | 2025-04-04 A | 2026-03-16 | P-SD-124 |  | 40d | 2025-04-04 | 2025-06-30 | 18d | 0d | 2026-03-16 |  |
|  | 8 | **Interior Steel Stud and Drywall** |  | 2024-09-13 | 2025-03-07 |  |  |  |  |  |  |  |  |  |
| P-SD-84 |  | Interior Steel Stud and Drywall SD | 10d | 2024-09-13 A | 2024-09-26 A | P-TEA-21 SS | 100% |  | 2024-11-21 | 2024-12-04 |  |  |  |  |
| P-SD-126 |  | Interior Steel Stud and Drywall AP | 15d | 2024-09-27 A | 2024-10-11 A | P-SD-84 | 100% |  | 2024-12-05 | 2024-12-27 |  |  |  |  |
| P-PRO-167 |  | Interior Steel Stud and Drywall Delivery | 20d | 2024-10-11 A | 2025-03-07 A | P-SD-126 | 100% |  | 2025-01-07 | 2025-02-03 |  |  |  |  |
|  | 6 | **Flooring** |  | 2024-11-21 | 2025-09-30 |  |  |  |  |  |  |  |  |  |
| P-SD-85 |  | Flooring SD | 10d | 2024-11-21 A | 2024-11-22 A | P-TEA-21 | 100% |  | 2024-11-15 | 2024-11-28 |  |  |  |  |
| P-SD-127 |  | Flooring AP | 15d | 2024-11-25 A | 2024-12-18 A | P-SD-85 | 100% |  | 2024-11-29 | 2024-12-19 |  |  |  |  |
| P-PRO-168 |  | Resilient Flooring Delivery | 60d | 2024-12-19 A | 2025-09-30 A | P-SD-127 | 100% |  | 2024-12-17 | 2025-03-14 |  |  |  |  |
|  | 7 | **Furnishings** |  | 2025-01-28 | 2026-01-30 |  |  |  |  |  |  |  |  |  |
| P-SD-88 |  | Bleacher Seating SD | 10d | 2025-01-28 A | 2025-02-03 A | P-TEA-21 | 100% |  | 2025-01-20 | 2025-01-31 |  |  |  |  |
| P-SD-130 |  | Bleacher Seating AP | 15d | 2025-02-07 A | 2025-02-14 A | P-SD-88 | 100% |  | 2025-02-03 | 2025-02-24 |  |  |  |  |
| P-PRO-171 |  | Bleacher Seating Delivery | 41d | 2025-02-17 A | 2026-01-30 | P-SD-130 |  | 10d | 2025-02-25 | 2025-04-23 | 113d | 0d | 2026-01-30 |  |
|  | 12 | **Landscape and Site Improvements** |  | 2025-02-18 | 2025-10-27 |  |  |  |  |  |  |  |  |  |
| P-SD-89 |  | Landscape and Site Improvements SD | 10d | 2025-02-18 A | 2025-06-26 A | P-TEA-21 | 100% |  | 2025-02-18 | 2025-03-03 |  |  |  |  |
| P-SD-131 |  | Landscape and Site Improvements AP | 15d | 2025-07-07 A | 2025-08-15 A | P-SD-89 | 100% |  | 2025-07-09 | 2025-07-29 |  |  |  |  |
| P-PRO-172 |  | Landscape and Site Improvements Delivery | 20d | 2025-08-18 A | 2025-10-27 A | P-SD-131 | 100% |  | 2025-08-29 | 2025-09-26 |  |  |  |  |
|  | 1 | **Mechanical** |  | 2024-11-22 | 2026-02-20 |  |  |  |  |  |  |  |  |  |
|  | 19 | **Floor Drain** |  | 2024-12-03 | 2025-08-14 |  |  |  |  |  |  |  |  |  |
| P-SD-1694 |  | Floor Drain SD | 15d | 2024-12-03 A | 2025-01-17 A |  | 100% |  | 2024-12-04 | 2024-12-24 |  |  |  |  |
| P-SD-1704 |  | Floor Drain AP | 15d | 2025-02-06 A | 2025-03-06 A | P-SD-1694 | 100% |  | 2025-01-20 | 2025-02-07 |  |  |  |  |
| P-PRO-1534 |  | Floor Drain Delivery | 160d | 2025-03-07 A | 2025-08-14 A | P-SD-1704 | 100% |  | 2025-02-10 | 2025-09-29 |  |  |  | TBC |

Notes:
- P-SD-88: Comment: ?? also need to details if we need to add it to the construction
- P-PRO-1534: Comment: Current lead time is being confirmed/Modern Niagara

| ID | WBS | Activity | Duration | Start | Finish | Predecessors | Complete | Planned start | Planned finish | Comment |
| --- | --- | --- | --- | --- | --- | --- | --- | --- | --- | --- |
|  | 10 | **Pumps** |  | 2024-11-22 | 2025-11-28 |  |  |  |  |  |
| P-SD-170 |  | Pumps SD | 10d | 2024-11-22 A | 2025-02-05 A | P-PRO-44, P-TEA-21 | 100% | 2024-12-04 | 2024-12-17 |  |
| P-SD-387 |  | Pumps AP | 15d | 2025-02-06 A | 2025-03-07 A | P-SD-170 | 100% | 2025-02-06 | 2025-02-27 |  |
| P-SD-300 |  | Pumps SD R1 | 5d | 2025-03-10 A | 2025-04-29 A | P-SD-387 | 100% | 2025-01-10 | 2025-01-16 |  |
| P-SD-537 |  | Pumps AP R1 | 5d | 2025-04-30 A | 2025-05-13 A | P-SD-300 | 100% | 2025-01-10 | 2025-01-16 |  |
| P-PRO-557 |  | Pumps Delivery | 60d | 2025-06-26 A | 2025-11-28 A | P-SD-387, P-SD-537 | 100% | 2025-07-09 | 2025-10-02 | Current lead time is being confirmed/Modern Niagara |
|  | 3 | **Heat Exchanger** |  | 2024-11-22 | 2026-01-15 |  |  |  |  |  |
| P-SD-150 |  | Heat Exchanger SD | 10d | 2024-11-22 A | 2025-02-06 A | P-PRO-44, P-TEA-21 | 100% | 2024-12-04 | 2024-12-17 |  |
| P-SD-367 |  | Heat Exchanger AP | 15d | 2025-02-07 A | 2025-03-07 A | P-SD-150 | 100% | 2025-02-14 | 2025-03-07 |  |
| P-SD-1864 |  | Heat Exchanger SD R1 | 10d | 2025-03-10 A | 2025-04-29 A | P-SD-367 | 100% | 2024-12-04 | 2024-12-17 |  |
| P-SD-1874 |  | Heat Exchanger AP R1 | 15d | 2025-04-30 A | 2025-05-07 A | P-SD-1864 | 100% | 2025-02-14 | 2025-03-07 |  |
| P-PRO-537 |  | Heat Exchanger Delivery | 110d | 2025-05-20 A | 2026-01-15 A | P-SD-1874 | 100% | 2025-06-19 | 2025-11-25 | Current lead time is being confirmed/Modern Niagara |
|  | 5 | **FCU** |  | 2024-11-22 | 2025-05-26 |  |  |  |  |  |
| P-SD-160 |  | FCU SD | 10d | 2024-11-22 A | 2024-12-03 A | P-PRO-44, P-TEA-21 | 100% | 2024-12-04 | 2024-12-17 |  |
| P-SD-377 |  | FCU AP | 15d | 2024-12-04 A | 2025-01-29 A | P-SD-160 | 100% | 2024-12-18 | 2025-01-10 |  |
| P-PRO-547 |  | FCU Delivery | 40d | 2025-01-30 A | 2025-05-26 A | P-SD-377 | 100% | 2025-01-30 | 2025-03-27 | Current lead time is being confirmed/Modern Niagara |
|  | 9 | **HRV's** |  | 2024-12-03 | 2025-10-15 |  |  |  |  |  |
| P-SD-110 |  | HRV'S SD | 15d | 2024-12-03 A | 2025-01-07 A | P-PRO-44, P-TEA-21, X-HRV-1010 | 100% | 2024-12-04 | 2024-12-24 |  |
| P-SD-347 |  | HRV'S AP | 15d | 2025-01-15 A | 2025-03-21 A | P-SD-110 | 100% | 2025-01-02 | 2025-01-22 |  |
| P-PRO-517 |  | HRV'S Delivery | 120d | 2025-02-24 A | 2025-10-15 A | P-SD-347 | 100% | 2025-02-10 | 2025-07-31 | Current lead time is being confirmed/Modern Niagara |
|  | 1 | **AHU** |  | 2024-11-23 | 2025-11-06 |  |  |  |  |  |
| P-SD-140 |  | AHU SD | 15d | 2024-11-23 A | 2025-01-07 A | P-PRO-44, P-TEA-21 | 100% | 2024-12-04 | 2024-12-24 |  |
| P-SD-357 |  | AHU AP | 15d | 2025-01-08 A | 2025-02-06 A | P-SD-140 | 100% | 2024-12-11 | 2025-01-03 |  |
| P-PRO-527 |  | AHU Delivery | 110d | 2025-02-07 A | 2025-11-06 A | P-SD-357 | 100% | 2025-02-07 | 2025-07-16 | Current lead time is being confirmed/Modern Niagara |

| ID | WBS | Activity | Duration | Start | Finish | Predecessors | Complete | Remaining | Planned start | Planned finish | Total float | Free float | Expected finish | Comment |
| --- | --- | --- | --- | --- | --- | --- | --- | --- | --- | --- | --- | --- | --- | --- |
|  | 11 | **Water Heater** |  | 2024-11-22 | 2025-03-21 |  |  |  |  |  |  |  |  |  |
| P-SD-200 |  | Water Heater SD | 25d | 2024-11-22 A | 2025-02-04 A | P-PRO-44, P-TEA-21 | 100% |  | 2024-12-04 | 2025-01-10 |  |  |  |  |
| P-SD-417 |  | Water Heater AP | 15d | 2025-02-05 A | 2025-03-07 A | P-SD-200 | 100% |  | 2025-02-14 | 2025-03-07 |  |  |  |  |
| P-PRO-587 |  | Water Heater Delivery | 80d | 2025-03-10 A | 2025-03-21 A | P-SD-417 | 100% |  | 2025-03-10 | 2025-07-02 |  |  |  | Current lead time is being confirmed/Modern Niagara |
|  | 6 | **Unit Heater** |  | 2024-11-22 | 2025-10-15 |  |  |  |  |  |  |  |  |  |
| P-SD-190 |  | Unit Heater SD | 10d | 2024-11-22 A | 2024-12-03 A | P-PRO-44, P-TEA-21 | 100% |  | 2024-12-04 | 2024-12-17 |  |  |  |  |
| P-SD-407 |  | Unit Heater AP | 15d | 2025-02-03 A | 2025-02-24 A | P-SD-190 | 100% |  | 2024-12-11 | 2025-01-03 |  |  |  |  |
| P-PRO-577 |  | Unit Heater Delivery | 100d | 2025-02-25 A | 2025-10-15 A | P-SD-407 | 100% |  | 2025-02-25 | 2025-07-17 |  |  |  | Current lead time is being confirmed/Modern Niagara |
|  | 8 | **Boilers** |  | 2024-11-22 | 2025-09-08 |  |  |  |  |  |  |  |  |  |
| P-SD-180 |  | Boilers SD | 15d | 2024-11-22 A | 2025-02-03 A | P-PRO-44, P-TEA-21 | 100% |  | 2024-12-04 | 2024-12-24 |  |  |  |  |
| P-SD-397 |  | Boilers AP | 15d | 2025-02-04 A | 2025-03-06 A | P-SD-180 | 100% |  | 2025-02-04 | 2025-02-25 |  |  |  |  |
| P-SD-1724 |  | Boilers SD R1 | 15d | 2025-03-07 A | 2025-04-08 A |  | 100% |  | 2024-12-04 | 2024-12-24 |  |  |  |  |
| P-SD-1734 |  | Boilers AP R1 | 15d | 2025-04-09 A | 2025-04-30 A | P-SD-1724 | 100% |  | 2025-02-04 | 2025-02-25 |  |  |  |  |
| P-SD-1744 |  | Boilers SD R2 | 15d | 2025-05-01 A | 2025-05-16 A | P-SD-1734 | 100% |  | 2024-12-04 | 2024-12-24 |  |  |  |  |
| P-SD-1754 |  | Boilers AP R2 | 15d | 2025-05-16 A | 2025-07-10 A | P-SD-1744 | 100% |  | 2025-05-26 | 2025-06-13 |  |  |  |  |
| P-PRO-567 |  | Boilers Delivery | 50d | 2025-07-11 A | 2025-09-08 A | P-SD-397, P-SD-1754 | 100% |  | 2025-09-09 | 2025-11-18 |  |  |  | Current lead time is being confirmed/Modern Niagara |
|  | 12 | **Exhaust Fans** |  | 2024-11-23 | 2026-01-30 |  |  |  |  |  |  |  |  |  |
| P-SD-220 |  | Exhaust Fans SD | 25d | 2024-11-23 A | 2025-02-03 A | P-PRO-44, P-TEA-21 | 100% |  | 2024-12-04 | 2025-01-10 |  |  |  |  |
| P-SD-437 |  | Exhaust Fans AP | 15d | 2025-02-04 A | 2025-03-07 A | P-SD-220 | 100% |  | 2025-02-04 | 2025-02-25 |  |  |  |  |
| P-SD-1764 |  | Exhaust Fans SD R1 | 25d | 2025-03-10 A | 2025-03-28 A | P-SD-437 | 100% |  | 2025-03-10 | 2025-04-11 |  |  |  |  |
| P-SD-1774 |  | Exhaust Fans AP R1 | 15d | 2025-03-31 A | 2025-04-17 A | P-SD-1764 | 100% |  | 2025-02-04 | 2025-02-25 |  |  |  |  |
| P-PRO-607 |  | Exhaust Fans Delivery | 100d | 2025-04-18 A | 2026-01-30 | P-SD-437, P-SD-1774 |  | 10d | 2025-01-10 | 2025-06-03 | 64d | 0d | 2026-01-30 | Current lead time is being confirmed/Modern Niagara |
|  | 7 | **Air Conditioning** |  | 2024-11-22 | 2025-10-15 |  |  |  |  |  |  |  |  |  |
| P-SD-210 |  | Air Conditioning SD | 25d | 2024-11-22 A | 2025-02-13 A | P-PRO-44, P-TEA-21 | 100% |  | 2024-12-04 | 2025-01-10 |  |  |  |  |
| P-SD-427 |  | Air Conditioning AP | 15d | 2025-02-14 A | 2025-03-12 A | P-SD-210 | 100% |  | 2025-02-14 | 2025-03-07 |  |  |  |  |
| P-PRO-597 |  | Air Conditioning Delivery | 60d | 2025-03-13 A | 2025-10-15 A | P-SD-427 | 100% |  | 2025-03-10 | 2025-06-03 |  |  |  | Current lead time is being confirmed/Modern Niagara |

| ID | WBS | Activity | Duration | Start | Finish | Predecessors | Complete | Remaining | Planned start | Planned finish | Total float | Free float | Expected finish | #User-Text_01 | Comment |
| --- | --- | --- | --- | --- | --- | --- | --- | --- | --- | --- | --- | --- | --- | --- | --- |
|  | 2 | **Radiator** |  | 2024-11-23 | 2026-01-19 |  |  |  |  |  |  |  |  |  |  |
| P-SD-230 |  | Radiator SD | 30d | 2024-11-23 A | 2024-12-03 A | P-PRO-44, P-TEA-21 | 100% |  | 2024-12-04 | 2025-01-17 |  |  |  |  |  |
| P-SD-447 |  | Radiator AP | 34d | 2024-12-03 A | 2025-01-29 A | P-SD-230 | 100% |  | 2024-12-03 | 2025-01-22 |  |  |  |  |  |
| P-PRO-617 |  | Radiator Delivery | 100d | 2025-01-30 A | 2026-01-19 | P-SD-447 |  | 1d | 2025-01-30 | 2025-06-23 | 19d | 0d | 2026-01-19 | TBC | Current lead time is being confirmed/Modern Niagara |
|  | 4 | **Fixtures** |  | 2024-11-23 | 2026-01-30 |  |  |  |  |  |  |  |  |  |  |
| P-SD-240 |  | Fixtures SD | 30d | 2024-11-23 A | 2025-02-05 A | P-PRO-44, P-TEA-21 | 100% |  | 2024-12-04 | 2025-01-17 |  |  |  |  |  |
| P-SD-457 |  | Fixtures AP | 15d | 2025-02-06 A | 2025-03-20 A | P-SD-240 | 100% |  | 2025-02-06 | 2025-02-27 |  |  |  |  |  |
| P-SD-1784 |  | Fixtures SD R1 | 30d | 2025-03-21 A | 2025-05-15 A | P-SD-457 | 100% |  | 2024-12-04 | 2025-01-17 |  |  |  |  |  |
| P-SD-1794 |  | Fixtures AP R1 | 15d | 2025-05-15 A | 2025-05-26 A | P-SD-1784 | 100% |  | 2025-05-26 | 2025-06-13 |  |  |  |  |  |
| P-PRO-627 |  | Fixtures Delivery | 50d | 2025-05-27 A | 2026-01-30 | P-SD-1794 |  | 10d | 2025-06-26 | 2025-09-08 | 69d | 0d | 2026-01-30 |  | Current lead time is being confirmed/Modern Niagara |
|  | 16 | **Slab Heating** |  | 2024-12-04 | 2025-09-09 |  |  |  |  |  |  |  |  |  |  |
| P-SD-250 |  | Slab Heating SD | 30d | 2024-12-04 A | 2025-05-08 A | P-PRO-44, P-TEA-21 | 100% |  | 2024-12-04 | 2025-01-17 |  |  |  |  |  |
| P-SD-467 |  | Slab Heating AP | 15d | 2025-05-09 A | 2025-07-04 A | P-SD-250 | 100% |  | 2025-05-26 | 2025-06-13 |  |  |  |  |  |
| P-PRO-637 |  | Slab Heating Delivery | 20d | 2025-07-07 A | 2025-09-09 A | P-SD-467 FF | 100% |  | 2025-07-09 | 2025-08-06 |  |  |  |  | Current lead time is being confirmed/Modern Niagara |
|  | 15 | **Terminal Boxes** |  | 2024-11-23 | 2025-09-19 |  |  |  |  |  |  |  |  |  |  |
| P-SD-260 |  | Terminal Boxes SD | 30d | 2024-11-23 A | 2025-05-15 A | P-PRO-44, P-TEA-21 | 100% |  | 2024-12-04 | 2025-01-17 |  |  |  |  |  |
| P-SD-477 |  | Terminal Boxes AP | 15d | 2025-05-15 A | 2025-05-30 A | P-SD-260 | 100% |  | 2025-05-26 | 2025-06-13 |  |  |  |  |  |
| P-PRO-647 |  | Terminal Boxes Delivery | 40d | 2025-06-26 A | 2025-09-19 A | P-SD-477 | 100% |  | 2025-07-09 | 2025-09-04 |  |  |  |  | Current lead time is being confirmed/Modern Niagara |
|  | 14 | **Grills / Diffusers** |  | 2024-11-23 | 2026-01-15 |  |  |  |  |  |  |  |  |  |  |
| P-SD-270 |  | Grills / Diffusers SD | 30d | 2024-11-23 A | 2025-05-12 A | P-PRO-44, P-TEA-21 | 100% |  | 2024-12-04 | 2025-01-17 |  |  |  |  |  |
| P-SD-487 |  | Grills / Diffusers AP- R0 | 15d | 2025-05-12 A | 2025-05-28 A | P-SD-270 | 100% |  | 2025-05-26 | 2025-06-13 |  |  |  |  |  |
| P-SD-547 |  | Grills / Diffusers SD- R1 | 5d | 2025-05-29 A | 2025-09-18 A | P-SD-487 | 100% |  | 2025-06-26 | 2025-07-03 |  |  |  | TBC |  |
| P-SD-1904 |  | Grills / Diffusers AP- R1 | 10d | 2025-09-19 A | 2025-09-24 A | P-SD-547 | 100% |  | 2025-09-19 | 2025-10-02 |  |  |  |  |  |
| P-PRO-657 |  | Grills / Diffusers Delivery | 80d | 2025-09-25 A | 2026-01-15 A | P-SD-487, P-SD-1904 | 100% |  | 2025-10-03 | 2026-01-28 |  |  |  |  | Current lead time is being confirmed/Modern Niagara |

| ID | WBS | Activity | Duration | Start | Finish | Predecessors | Complete | Remaining | Planned start | Planned finish | Total float | Free float | Expected finish |
| --- | --- | --- | --- | --- | --- | --- | --- | --- | --- | --- | --- | --- | --- |
|  | 13 | **VFD's** |  | 2024-11-23 | 2025-03-07 |  |  |  |  |  |  |  |  |
| P-SD-280 |  | VFD's SD | 25d | 2024-11-23 A | 2025-02-06 A | P-PRO-44, P-TEA-21 | 100% |  | 2024-12-04 | 2025-01-10 |  |  |  |
| P-SD-497 |  | VFD's AP | 15d | 2025-02-07 A | 2025-03-07 A | P-SD-280 | 100% |  | 2025-03-03 | 2025-03-21 |  |  |  |
|  | 18 | **Sprinklers** |  | 2024-11-23 | 2025-09-01 |  |  |  |  |  |  |  |  |
| P-SD-290 |  | Sprinkles SD | 25d | 2024-11-23 A | 2025-03-21 A | P-PRO-44, P-TEA-21 | 100% |  | 2024-12-04 | 2025-01-10 |  |  |  |
| P-SD-507 |  | Sprinkles AP | 15d | 2025-03-21 A | 2025-04-17 A | P-SD-290 | 100% |  | 2025-01-10 | 2025-01-30 |  |  |  |
| P-PRO-677 |  | Sprinkles Delivery | 40d | 2025-04-21 A | 2025-09-01 A | P-SD-507 | 100% |  | 2025-04-21 | 2025-06-16 |  |  |  |
|  | 17 | **Controls** |  | 2024-11-23 | 2026-02-20 |  |  |  |  |  |  |  |  |
| P-SD-01 |  | Controls SD | 25d | 2024-11-23 A | 2025-07-28 A | P-PRO-44, P-TEA-21 | 100% |  | 2024-12-04 | 2025-01-10 |  |  |  |
| P-SD-687 |  | Controls AP (Valves) | 15d | 2025-07-29 A | 2025-09-23 A | P-SD-01 | 100% |  | 2025-08-29 | 2025-09-19 |  |  |  |
| P-SD-1914 |  | Controls AP (BMS) Submitted on 23-Sep | 15d | 2025-09-23 A | 2025-12-10 A | P-SD-687 | 100% |  | 2025-08-29 | 2025-09-19 |  |  |  |
| P-PRO-697 |  | Controls Delivery | 50d | 2025-09-24 A | 2026-02-20 | P-SD-687, P-SD-1914 |  | 24d | 2025-09-25 | 2025-12-04 | 54d | 0d | 2026-02-20 |
|  | 2 | **Electrical** |  | 2024-11-23 | 2026-02-10 |  |  |  |  |  |  |  |  |
|  | 1 | **Light Fixtuers** |  | 2024-11-23 | 2025-09-12 |  |  |  |  |  |  |  |  |
| P-SD-291 |  | Light Fixtures SD | 20d | 2024-11-23 A | 2025-03-20 A | P-PRO-44, P-TEA-21 | 100% |  | 2024-12-04 | 2025-01-03 |  |  |  |
| P-SD-707 |  | Light Fixtures AP | 15d | 2025-03-21 A | 2025-04-10 A | P-SD-291 | 100% |  | 2025-02-10 | 2025-03-03 |  |  |  |
| P-PRO-747 |  | Light Fixtures Delivery | 100d | 2025-04-11 A | 2025-09-12 A | P-SD-707 | 100% |  | 2025-03-04 | 2025-07-24 |  |  |  |
|  | 2 | **Distibution** |  | 2024-11-23 | 2025-10-10 |  |  |  |  |  |  |  |  |
| P-SD-301 |  | Distribution SD | 20d | 2024-11-23 A | 2025-02-19 A | P-PRO-44, P-TEA-21 | 100% |  | 2024-12-04 | 2025-01-03 |  |  |  |
| P-SD-717 |  | Distribution AP | 15d | 2025-02-20 A | 2025-02-27 A | P-SD-301 | 100% |  | 2025-02-10 | 2025-03-03 |  |  |  |
| P-PRO-757 |  | Distribution Delivery | 60d | 2025-02-28 A | 2025-10-10 A | P-SD-717 | 100% |  | 2025-06-03 | 2025-08-27 |  |  |  |
|  | 3 | **Lighting Controls** |  | 2024-12-04 | 2026-02-10 |  |  |  |  |  |  |  |  |
| P-SD-311 |  | Lighting Controls SD | 40d | 2024-12-04 A | 2025-02-25 A | P-PRO-44, P-TEA-21 | 100% |  | 2024-12-04 | 2025-01-31 |  |  |  |
| P-SD-727 |  | Lighting Controls AP | 15d | 2025-02-25 A | 2025-04-09 A | P-SD-311 | 100% |  | 2025-05-26 | 2025-06-13 |  |  |  |
| P-PRO-767 |  | Lighting Controls Delivery | 100d | 2025-04-10 A | 2026-02-10 | P-SD-727 |  | 17d | 2025-08-29 | 2026-01-22 | 67d | 0d | 2026-02-10 |

Notes:
- P-SD-01: Comment: IFC drawings and specifications are required prior to controls shop drawings being generated.

| ID | WBS | Activity | Duration | Start | Finish | Predecessors | Complete | Remaining | Planned start | Planned finish | Total float | Free float | Expected finish | #User-Text_01 |
| --- | --- | --- | --- | --- | --- | --- | --- | --- | --- | --- | --- | --- | --- | --- |
|  | 4 | **Fire Alarm** |  | 2024-11-23 | 2026-01-15 |  |  |  |  |  |  |  |  |  |
| P-SD-321 |  | Fire Alarm SD (R0) | 40d | 2024-11-23 A | 2025-05-12 A | P-PRO-44, P-TEA-21 | 100% |  | 2024-12-04 | 2025-01-31 |  |  |  |  |
| P-SD-737 |  | Fire Alarm AP (R0) | 15d | 2025-05-12 A | 2025-05-15 A | P-SD-321 | 100% |  | 2025-05-26 | 2025-06-13 |  |  |  |  |
| P-SD-757 |  | Fire Alarm SD (R1) | 5d | 2025-05-16 A | 2025-06-20 A | P-SD-321 | 100% |  | 2025-05-26 | 2025-05-30 |  |  |  |  |
| P-SD-1884 |  | Fire Alarm AP (R1) | 15d | 2025-06-20 A | 2025-06-24 A | P-SD-737, P-SD-757 | 100% |  | 2025-07-09 | 2025-07-29 |  |  |  |  |
| P-PRO-777 |  | Fire Alarm Delivery | 40d | 2025-06-25 A | 2026-01-15 A | P-SD-737, P-SD-757, P-SD-1884, P-SD-321 | 100% |  | 2025-08-29 | 2025-10-27 |  |  |  |  |
|  | 5 | **Transformer** |  | 2024-11-23 | 2025-09-12 |  |  |  |  |  |  |  |  |  |
| P-SD-331 |  | Transformer SD | 20d | 2024-11-23 A | 2025-02-19 A | P-PRO-44, P-TEA-21 | 100% |  | 2024-12-04 | 2025-01-03 |  |  |  |  |
| P-SD-747 |  | Transformer AP | 15d | 2025-02-20 A | 2025-02-27 A | P-SD-331 | 100% |  | 2025-02-10 | 2025-03-03 |  |  |  |  |
| P-PRO-787 |  | Transformer Delivery | 60d | 2025-02-28 A | 2025-09-12 A | P-SD-747 | 100% |  | 2025-03-04 | 2025-05-28 |  |  |  | TBC |
|  | 3 | **Finishes** |  | 2024-11-20 | 2026-04-17 |  |  |  |  |  |  |  |  |  |
|  | 6 | **Interior Glazing** |  | 2025-02-13 | 2025-12-08 |  |  |  |  |  |  |  |  |  |
| P-SD-1454 |  | Interior Glazing SD | 25d | 2025-02-13 A | 2025-03-07 A | P-PRO-44, P-TEA-21 | 100% |  | 2025-02-13 | 2025-03-20 |  |  |  |  |
| P-SD-1554 |  | Interior Glazing AP | 15d | 2025-03-10 A | 2025-03-24 A | P-SD-1454 | 100% |  | 2025-03-21 | 2025-04-10 |  |  |  |  |
| P-SD-1824 |  | Interior Glazing SD R1 | 25d | 2025-03-25 A | 2025-07-21 A | P-SD-1554 | 100% |  | 2025-02-13 | 2025-03-20 |  |  |  |  |
| P-SD-1834 |  | Interior Glazing AP R1 | 15d | 2025-07-22 A | 2025-07-30 A | P-SD-1824 | 100% |  | 2025-07-29 | 2025-08-19 |  |  |  |  |
| P-PRO-183 |  | Interior Glazing Delivery | 30d | 2025-08-01 A | 2025-12-08 A | P-TEA-21, P-SD-1554, P-SD-1834 | 100% |  | 2025-08-15 | 2025-09-26 |  |  |  |  |
|  | 1 | **Arch Louvers** |  | 2024-11-23 | 2026-03-17 |  |  |  |  |  |  |  |  |  |
| P-SD-1464 |  | Arch Louvers SD | 15d | 2024-11-23 A | 2025-01-13 A | P-PRO-44, P-TEA-21 | 100% |  | 2024-12-04 | 2024-12-24 |  |  |  |  |
| P-SD-1564 |  | Arch Louvers AP | 15d | 2025-01-14 A | 2025-01-17 A | P-SD-1464 | 100% |  | 2025-01-20 | 2025-02-07 |  |  |  |  |
| P-PRO-193 |  | Arch Louvers Delivery | 40d | 2025-01-20 A | 2026-03-17 | P-TEA-21, P-SD-1564 | 100% | 41d | 2025-01-20 | 2025-03-17 | 22d | 0d | 2026-03-18 |  |
|  | Lockers | **Epoxy Flooring** |  | 2024-11-20 | 2024-12-19 |  |  |  |  |  |  |  |  |  |
| P-SD-1474 |  | Epoxy Flooring SD | 11d | 2024-11-20 A | 2024-12-03 A | P-PRO-44, P-TEA-21 | 100% |  | 2025-04-11 | 2025-04-28 |  |  |  |  |
| P-SD-1574 |  | Epoxy Flooring AP | 15d | 2024-12-04 A | 2024-12-04 A | P-SD-1474 | 100% |  | 2025-04-29 | 2025-05-20 |  |  |  |  |
| P-PRO-203 |  | Epoxy Flooring Delivery | 10d | 2024-12-05 A | 2024-12-19 A | P-TEA-21, P-SD-1574 | 100% |  | 2025-05-21 | 2025-06-03 |  |  |  |  |

| ID | WBS | Activity | Duration | Start | Finish | Predecessors | Complete | Remaining | Planned start | Planned finish | Total float | Free float | Expected finish |
| --- | --- | --- | --- | --- | --- | --- | --- | --- | --- | --- | --- | --- | --- |
|  | 2 | **Accoustic Spray Insulation** |  | 2024-12-04 | 2025-11-03 |  |  |  |  |  |  |  |  |
| P-SD-1484 |  | Acoustic Spray Insulation SD | 15d | 2024-12-04 A | 2025-06-24 A | P-PRO-44, P-TEA-21 | 100% |  | 2025-03-28 | 2025-04-17 |  |  |  |
| P-SD-1584 |  | Acoustic Spray Insulation AP | 15d | 2025-06-24 A | 2025-07-03 A | P-SD-1484 | 100% |  | 2025-06-26 | 2025-07-17 |  |  |  |
| P-PRO-213 |  | Acoustic Spray Insulation Delivery | 20d | 2025-08-15 A | 2025-11-03 A | P-TEA-21, P-SD-1584 | 100% |  | 2025-08-29 | 2025-09-26 |  |  |  |
|  | 8 | **Signage** |  | 2024-12-04 | 2026-04-17 |  |  |  |  |  |  |  |  |
| P-SD-1494 |  | Signage SD | 15d | 2024-12-04 A | 2025-05-08 A | P-PRO-44, P-TEA-21 | 100% |  | 2025-03-28 | 2025-04-17 |  |  |  |
| P-SD-1594 |  | Signage AP- R0 | 15d | 2025-05-09 A | 2025-05-13 A | P-SD-1494 | 100% |  | 2025-05-26 | 2025-06-13 |  |  |  |
| P-SD-1894 |  | Signage- Resubmit- R1 | 5d | 2025-05-14 A | 2025-08-06 A | P-SD-1594 | 100% |  | 2025-05-26 | 2025-05-30 |  |  |  |
| P-PRO-283 |  | Signage AP- R1 | 10d | 2025-08-07 A | 2025-08-13 A | P-SD-1894 | 100% |  | 2025-08-15 | 2025-08-28 |  |  |  |
| P-PRO-373 |  | Signage- Resubmit- R2 | 5d | 2025-08-14 A | 2025-08-20 A | P-PRO-283 | 100% |  | 2025-08-15 | 2025-08-21 |  |  |  |
| P-PRO-433 |  | Signage AP- R2 | 5d | 2025-08-21 A | 2025-08-27 A | P-PRO-373 | 100% |  | 2025-08-29 | 2025-09-05 |  |  |  |
| P-PRO-223 |  | Signage Delivery | 40d | 2025-08-28 A | 2026-04-17 | P-TEA-21, P-SD-1594, P-PRO-283, P-PRO-433 |  | 63d | 2025-08-29 | 2025-10-27 | 40d | 0d | 2026-04-17 |
|  | 3 | **Toliet Partitions** |  | 2024-11-23 | 2025-05-09 |  |  |  |  |  |  |  |  |
| P-SD-1504 |  | Toilet Partitions SD | 15d | 2024-11-23 A | 2024-12-11 A | P-PRO-44, P-TEA-21 | 100% |  | 2024-12-04 | 2024-12-24 |  |  |  |
| P-SD-1604 |  | Toilet Partitions AP | 15d | 2025-01-20 A | 2025-02-05 A | P-SD-1504 | 100% |  | 2025-01-20 | 2025-02-07 |  |  |  |
| P-PRO-233 |  | Toilet Partitions Delivery | 40d | 2025-02-06 A | 2025-05-09 A | P-TEA-21, P-SD-1604 | 100% |  | 2025-02-10 | 2025-04-07 |  |  |  |
|  | 9 | **Wahsroom Accessories** |  | 2024-11-23 | 2026-03-31 |  |  |  |  |  |  |  |  |
| P-SD-1514 |  | Washroom Accessories SD | 15d | 2024-11-23 A | 2025-02-20 A | P-PRO-44, P-TEA-21 | 100% |  | 2024-12-04 | 2024-12-24 |  |  |  |
| P-SD-1614 |  | Washroom Accessories AP | 15d | 2025-02-21 A | 2025-03-04 A | P-SD-1514 | 100% |  | 2025-03-14 | 2025-04-03 |  |  |  |
| P-PRO-243 |  | Washroom Accessories Delivery | 40d | 2025-03-05 A | 2026-03-31 | P-TEA-21, P-SD-1614 |  | 51d | 2025-04-04 | 2025-06-02 | 62d | 0d | 2026-03-31 |
|  | 10 | **Steam/ Sauna** |  | 2024-12-04 | 2026-02-17 |  |  |  |  |  |  |  |  |
| P-SD-1534 |  | Steam/Sauna SD | 15d | 2024-12-04 A | 2025-06-13 A | P-PRO-44, P-TEA-21 | 100% |  | 2025-02-13 | 2025-03-06 |  |  |  |
| P-SD-1634 |  | Steam/Sauna AP | 15d | 2025-06-16 A | 2025-11-26 A | P-SD-1534 | 100% |  | 2025-06-26 | 2025-07-17 |  |  |  |
| P-PRO-263 |  | Sauna Cedar & Heater Delivery | 43d | 2025-12-10 A | 2026-02-17 | P-TEA-21, P-SD-1634 |  | 21d | 2025-12-10 | 2026-02-11 | 76d | 0d | 2026-02-17 |

| ID | WBS | Activity | Duration | Start | Finish | Predecessors | Complete | Remaining | Planned start | Planned finish | Total float | Free float | Expected finish | #User-Text_01 |
| --- | --- | --- | --- | --- | --- | --- | --- | --- | --- | --- | --- | --- | --- | --- |
|  | 4 | **Lockers** |  | 2024-11-23 | 2026-03-16 |  |  |  |  |  |  |  |  |  |
| P-SD-1524 |  | Lockers SD | 15d | 2024-11-23 A | 2025-02-25 A | P-PRO-44, P-TEA-21 | 100% |  | 2024-12-04 | 2024-12-24 |  |  |  |  |
| P-SD-1624 |  | Lockers AP | 15d | 2025-02-26 A | 2025-03-06 A | P-SD-1524 | 100% |  | 2025-03-14 | 2025-04-03 |  |  |  |  |
| P-SD-1844 |  | Lockers SD R1 | 15d | 2025-03-07 A | 2025-04-09 A |  | 100% |  | 2024-12-04 | 2024-12-24 |  |  |  |  |
| P-SD-1854 |  | Lockers AP R1 | 15d | 2025-04-09 A | 2025-04-22 A | P-SD-1844 | 100% |  | 2025-03-14 | 2025-04-03 |  |  |  |  |
| P-PRO-253 |  | Lockers Delivery | 50d | 2025-04-23 A | 2026-03-16 | P-TEA-21, P-SD-1624, P-SD-1854 |  | 40d | 2025-04-04 | 2025-06-16 | 28d | 0d | 2026-03-16 |  |
|  | 5 | **Paving** |  | 2025-02-13 | 2025-05-02 |  |  |  |  |  |  |  |  |  |
| P-SD-1544 |  | Paving SD | 15d | 2025-02-13 A | 2025-04-24 A | P-PRO-44, P-TEA-21 | 100% |  | 2025-02-13 | 2025-03-06 |  |  |  |  |
| P-SD-1644 |  | Paving AP | 15d | 2025-04-25 A | 2025-04-30 A | P-SD-1544 | 100% |  | 2025-03-07 | 2025-03-27 |  |  |  |  |
| P-PRO-273 |  | Paving Delivery | 15d | 2025-05-01 A | 2025-05-02 A | P-TEA-21, P-SD-1644 | 100% |  | 2025-03-28 | 2025-04-17 |  |  |  |  |
|  | 11 | **INTEGRATED PHASED PLANNING - IPP** |  | 2024-04-26 | 2026-03-09 |  |  |  |  |  |  |  |  |  |
|  | 5 | **SAFETY HOLD POINTS** |  | 2024-04-26 | 2026-02-04 |  |  |  |  |  |  |  |  |  |
| IPP-SAFE-175 |  | Safety Hold Point: Foundation Kick Off Meeting | 1d | 2024-04-26 A | 2024-04-26 A | P-TEA-9 FS+4d | 100% |  |  |  |  |  |  |  |
| IPP-SAFE-176 |  | Safety Hold Point: Fall Protection and Steel Erection Safety Plan | 0d | 2024-11-14 A | 2024-11-14 A | C-SS-PH1-1050 SS | 100% |  | 2024-11-26 | 2024-11-26 |  |  |  |  |
| IPP-SAFE-180 |  | Safety Hold Point: Core and Shell Kick Off Meeting | 1d | 2024-11-21 A | 2024-11-21 A | P-TEA-14, C-SS-PH1-1000 SS-6d | 100% |  |  |  |  |  |  |  |
| IPP-SAFE-178 |  | Safety Hold Point: Fall Protection and Envelope Safety Review | 10d | 2025-01-16 A | 2025-01-29 A | C-ENV-SID-EW-N-1000 SF | 100% |  |  |  |  |  |  |  |
| IPP-SAFE-177 |  | Safety Hold Point: Fall Protection and Roofing Safety Review | 10d | 2025-02-24 A | 2025-03-28 A | C-ENV-RF-E-1040 SF, C-ENV-RF-E&S-1010, C-ENV-RF-E&S-1030 | 100% |  | 2025-05-20 | 2025-06-02 |  |  |  |  |
| IPP-SAFE-179 |  | Safety Hold Point: Fall Protection and Curtain Wall Safety Review | 10d | 2025-05-05 A | 2025-05-14 A |  | 100% |  | 2025-05-05 | 2025-05-16 |  |  |  |  |
| IPP-SAFE-181 |  | Safety Hold Point: Mechanical Equipment Placement Safety Review | 10d | 2025-05-23 A | 2025-05-23 A |  | 100% |  | 2025-06-27 | 2025-07-11 |  |  |  |  |
| IPP-SAFE-183 |  | Safety Hold Point: Interior Kick Off Meeting | 1d | 2025-09-12 A | 2025-09-12 A |  | 100% |  | 2025-09-26 | 2025-09-26 |  |  |  |  |
| IPP-SAFE-182 |  | Safety Hold Point: Electrical Equipment Placement Safety Review | 1d | 2025-11-17 A | 2025-11-17 A | T-INT-MF-Z1-ER-1050 FF-11d | 100% |  | 2025-12-16 | 2025-12-16 |  |  |  |  |
| IPP-SAFE-194 |  | Scaffold Dance Floor Inspection/Working At Heights | 1d | 2025-12-17 A | 2025-12-17 A | T-INT-MF-Z5-1300, T-INT-MF-Z5-2670 FF | 100% |  |  |  |  |  |  |  |
| IPP-SAFE-184 |  | Safety Hold Point: Main Electrical Room Energization Safety Review | 10d | 2026-01-22 | 2026-02-04 | T-INT-MF-Z1-ER-1160 |  |  |  |  | 61d | 19d |  |  |
|  | 6 | **QAQC HOLD POINTS** |  | 2024-07-09 | 2026-03-09 |  |  |  |  |  |  |  |  |  |
| IPP-QAQC-188 |  | QAQC Hold Point: Anchor Bolt & Embed Review | 1d | 2024-07-09 A | 2024-07-09 A | C-FDN-A2-1050 | 100% |  |  |  |  |  |  |  |
| IPP-QAQC-187 |  | QAQC Hold Point: Elevators Shafts Pits and Rebar Review | 1d | 2024-09-24 A | 2024-09-24 A | C-FDN-A13A-1050 | 100% |  | 2025-02-11 | 2025-02-11 |  |  |  |  |
| IPP-QAQC-198 |  | QAQC Hold Point: Steel and Deck Inspections | 1d | 2024-12-06 A | 2024-12-09 A | C-SS-PH2-1040 | 100% |  |  |  |  |  |  |  |
| IPP-QAQC-200 |  | QAQC Hold Point: Structural Slab Rebar Stand Forms Inspection | 1d | 2024-12-13 A | 2024-12-13 A | C-FDN-A7A-1000, C-FDN-A7A-1040 | 100% |  |  |  |  |  |  |  |
| IPP-QAQC-195 |  | QAQC Hold Point: Shallow U/G Mechanical Inspection | 1d | 2025-01-17 A | 2025-01-17 A | C-FDN-A5-1030 | 100% |  |  |  |  |  |  |  |
| IPP-QAQC-197 |  | QAQC Hold Point: Slab Frost Check | 1d | 2025-03-03 A | 2025-03-03 A | C-FDN-PH3-1000 | 100% |  | 2025-01-10 | 2025-01-10 |  |  |  |  |
| IPP-QAQC-196 |  | QAQC Hold Point: U/G Pool Piping Inspection | 1d | 2025-03-11 A | 2025-03-11 A | C-FDN-A7-1040, C-FDN-A7-1010, C-FDN-A7-1030 | 100% |  | 2025-01-10 | 2025-01-10 |  |  |  |  |
| IPP-QAQC-202 |  | QAQC Hold Point: Pre-board Review and Inspection - Main Floor | 1d | 2025-11-04 A | 2025-11-04 A | T-INT-MF-Z1-1010 FS+1d | 100% |  |  |  |  |  |  |  |
| IPP-QAQC-209 |  | Zone #1 Pre-board Inspection | 1d | 2025-11-07 A | 2025-11-07 A |  | 100% |  | 2025-12-16 | 2025-12-16 |  |  |  | After Z1 M&E RI |
| IPP-QAQC-309 |  | Concrete Finishing walkthrough | 5d | 2025-11-26 A | 2025-12-11 A |  | 100% |  | 2025-12-05 | 2025-12-11 |  |  |  |  |
| IPP-QAQC-299 |  | Heat and Monitor checks | 5d | 2025-11-27 A | 2025-12-02 A | T-INT-MF-Z5-2760 | 100% |  | 2025-12-16 | 2025-12-22 |  |  |  |  |
| IPP-QAQC-239 |  | Zone #3 Wall Pre-board Inspection | 1d | 2025-12-02 A | 2025-12-02 A | T-INT-MF-Z3-1040 | 100% |  | 2025-12-16 | 2025-12-16 |  |  |  |  |
| IPP-QAQC-219 |  | Zone #2 Pre-board Inspection | 1d | 2025-12-03 A | 2025-12-03 A | T-INT-MF-Z2-1040, T-INT-MF-Z2-1020 | 100% |  | 2025-12-16 | 2025-12-16 |  |  |  |  |
| IPP-QAQC-190 |  | QAQC Hold Point: Pool Tank Water Test- All Pools | 35d | 2026-01-19 | 2026-03-09 | T-INT-MF-Z5-1040 SS, C-FDN-A8-1070, C-FDN-A15-1030, C-SOG-S1C/D-1060, T-INT-MF-Z5-2360 SS, T-INT-MF-Z5-2740 SS, T-INT-MF-Z5-2850 SS |  |  |  |  | 11d | 6d |  |  |
| IPP-QAQC-201 |  | QAQC Hold Point: Pre-board Review and Inspection - Second Floor | 1d | 2026-01-19 | 2026-01-19 | T-INT-SF-2060, T-INT-SF-2070 |  |  |  |  | 138d | 4d |  |  |
| IPP-QAQC-259 |  | Zone #5 North Pre-board Inspection | 1d | 2026-01-19 | 2026-01-19 | T-INT-MF-Z5-1320 FF |  |  |  |  | 12d | 4d |  | Recheck after Construction |
| IPP-QAQC-269 |  | Zone #5 South Pre-board Inspection | 1d | 2026-02-02 | 2026-02-02 | T-INT-MF-Z5-2720 SS+5d |  |  |  |  | 24d | 0d |  |  |
| IPP-QAQC-319 |  | Final Block Wall Inspections | 1d | 2026-02-02 | 2026-02-02 | T-INT-MF-Z4-1000, T-INT-MF-Z5-2010 FF |  |  |  |  | 133d |  |  |  |
| IPP-QAQC-199 |  | QAQC Hold Point: Elevators Site Readiness | 1d | 2026-02-09 | 2026-02-09 | T-MEIT-EL-1040 |  |  |  |  | 74d | 8d |  |  |
| IPP-QAQC-249 |  | Zone #4 Pre-board Inspection | 1d | 2026-02-17 | 2026-02-17 | T-INT-MF-Z4-1040, T-INT-MF-Z4-1020 |  |  |  |  | 8d | 0d |  |  |
| IPP-QAQC-229 |  | Zone #3 Ceiling Pre-board Inspection | 1d | 2026-02-25 | 2026-02-25 | T-INT-MF-Z3-1060, T-INT-MF-Z3-1070, T-INT-MF-Z3-1090 FF |  |  |  |  | 6d | 0d |  |  |
| IPP-QAQC-279 |  | Zone #6 Pre-board Inspection | 1d | 2026-03-03 | 2026-03-03 | T-INT-MF-Z6-1030, T-INT-MF-Z6-1010 |  |  |  |  | 16d | 0d |  |  |

| ID | WBS | Activity | Duration | Start | Finish | Predecessors | Complete | Planned start | Planned finish |
| --- | --- | --- | --- | --- | --- | --- | --- | --- | --- |
|  | 5 | **DELAY EVENTS** |  | 2024-10-24 | 2026-01-26 |  |  |  |  |
|  | 1 | **Backfill Rock Procurement** |  | 2024-10-28 | 2024-10-31 |  |  |  |  |
| X-FDN-1000 |  | Delay Event- Backfill Rock Procurement | 5d | 2024-10-28 A | 2024-10-31 A |  | 100% | 2024-10-18 | 2024-10-24 |
|  | 14 | **Leisure Pool** |  | 2025-04-17 | 2025-05-14 |  |  |  |  |
| X-LP-1000 |  | Delay Event - Inlet Pool Piping | 5d | 2025-04-17 A | 2025-04-25 A | C-FDN-A14-1020 | 100% | 2025-01-10 | 2025-01-16 |
| X-LP-1010 |  | Delay Event - Zero Entry footing | 5d | 2025-04-29 A | 2025-05-02 A | X-LP-1000 | 100% | 2025-01-10 | 2025-01-16 |
| X-LP-1020 |  | Delay Event - Zero Entry Walls | 7d | 2025-05-05 A | 2025-05-14 A | X-LP-1010, MIL-C-580 | 100% | 2025-05-05 | 2025-05-13 |
|  | 2 | **Piling Second Call & Drilling Rig Repair** |  | 2024-10-24 | 2024-11-01 |  |  |  |  |
| X-PIL-1000 |  | Delay Event- Piling Second Call & Drilling Rig Repair | 5d | 2024-10-24 A | 2024-11-01 A |  | 100% | 2024-10-18 | 2024-10-24 |
|  | 3 | **Building Cladding Removal for Steel Strucutre Installation** |  | 2024-11-20 | 2024-11-21 |  |  |  |  |
| X-CR-1000 |  | Delay Event- Cladding Removal | 3d | 2024-11-20 A | 2024-11-21 A |  | 100% | 2024-12-04 | 2024-12-06 |
|  | 4 | **HRV RFI 56#** |  | 2024-11-22 | 2024-12-02 |  |  |  |  |
| X-HRV-1000 |  | Delay Event- HRV RFI Submission | 5d | 2024-11-22 A | 2024-11-22 A |  | 100% | 2024-12-04 | 2024-12-10 |
| X-HRV-1010 |  | Delay Event- HRV RFI Response | 5d | 2024-11-23 A | 2024-12-02 A | X-HRV-1000 | 100% | 2024-12-04 | 2024-12-10 |
|  | 5 | **Water Stop Repairs (Lap Pool Raft Slab)** |  | 2025-04-23 | 2025-05-05 |  |  |  |  |
| X-WS-1000 |  | Delay Event - Water Stop Repairs | 5d | 2025-04-23 A | 2025-05-05 A | C-FDN-A7-1110 | 100% | 2025-01-10 | 2025-01-16 |
|  | 6 | **Piping Fastening Error** |  | 2025-06-04 | 2025-06-20 |  |  |  |  |
| X-PIP-1000 |  | Delay Event- Piping Fastening Error | 2d | 2025-06-04 A | 2025-06-20 A | C-FDN-NN-1070 FF+1d | 100% | 2025-06-06 | 2025-06-09 |
|  | 9 | **Water Proofing On Basement Walls** |  | 2025-06-09 | 2025-06-17 |  |  |  |  |
| X-WP-1000 |  | Delay Event- Waterproofing on Basement Walls ( Trade Dependency) | 1d | 2025-06-09 A | 2025-06-17 A |  | 100% | 2025-06-26 | 2025-06-26 |
|  | 7 | **Coring Hole in South Basement Walls** |  | 2025-06-05 | 2025-06-19 |  |  |  |  |
| X-BW-1000 |  | Delay Event- Backfilling & Waterproofing for Access | 2d | 2025-06-05 A | 2025-06-19 A |  | 100% | 2025-06-26 | 2025-06-27 |
|  | 8 | **Reinforcing Steel Completion** |  | 2025-06-23 | 2025-06-23 |  |  |  |  |
| X-RS-1000 |  | Delay Event- Reinforcing steel completion | 1d | 2025-06-23 A | 2025-06-23 A |  | 100% | 2025-07-09 | 2025-07-09 |

| ID | WBS | Activity | Duration | Start | Finish | Predecessors | Complete | Planned start | Planned finish |
| --- | --- | --- | --- | --- | --- | --- | --- | --- | --- |
|  | 10 | **Green Manpower Availability (Area 10B South Grade Beam)** |  | 2025-06-20 | 2025-08-28 |  |  |  |  |
| X-A10-1010 |  | Delay Event- Green Manpower Availability (Formwork) | 2d | 2025-06-20 A | 2025-06-21 A |  | 100% | 2025-06-26 | 2025-06-27 |
| X-A10-1020 |  | Delay Event: Green Manpower Availability (Pour) | 5d | 2025-06-27 A | 2025-07-02 A |  | 100% | 2025-07-09 | 2025-07-15 |
| X-A10-1030 |  | Delay Event: Green Error with Riser Elevation | 11d | 2025-08-14 A | 2025-08-28 A |  | 100% |  |  |
|  | 11 | **Igloo Manpower Availability** |  | 2025-06-19 | 2025-06-23 |  |  |  |  |
| X-ENV-1160 |  | Delay Event- Igloo Manpower Availability | 1d | 2025-06-19 A | 2025-06-23 A |  | 100% | 2025-06-26 | 2025-06-26 |
|  | 12 | **Adult Hot Tub UG Piping (Inlet Pool Piping)** |  | 2025-06-23 | 2025-07-02 |  |  |  |  |
| X-P.PIP-1000 |  | Delay Event- Missing Core in South Basement Wall | 4d | 2025-06-23 A | 2025-07-02 A |  | 100% | 2025-06-26 | 2025-07-02 |
|  | 18 | **Area-16 Adult Hot Tub Slab** |  | 2025-07-05 | 2025-07-09 |  |  |  |  |
| X-A16-1000 |  | Delay Event: Green Missed Forming Drain Bases | 5d | 2025-07-05 A | 2025-07-09 A | C-FDN-SN-A16-1010 | 100% | 2025-07-09 | 2025-07-15 |
|  | 17 | **OutDoor Waterpool Piping** |  | 2025-07-06 | 2025-07-08 |  |  |  |  |
| X-P.PIP-1010 |  | Delay Event: ED not acquiring 1st Call | 5d | 2025-07-06 A | 2025-07-08 A | C-FDN-SN-UG-1080 | 100% | 2025-07-09 | 2025-07-15 |
|  | 13 | **Elevator Contract Award** |  | 2024-12-03 | 2025-09-02 |  |  |  |  |
| X-PRO-1000 |  | Delay Event- Executing Schindlers Contract (Elevator) | 5d | 2024-12-03 A | 2025-09-02 A | P-SD-1664 | 100% | 2025-06-26 | 2025-07-03 |
|  | 15 | **Area-15 Lazy River- WaterSlide C2 Thickening** |  | 2025-07-04 | 2025-07-09 |  |  |  |  |
| X-A15-1000 |  | Delay Event: Misalignment between Green and LMS activities | 5d | 2025-07-04 A | 2025-07-06 A | C-FDN-A15-1060, C-FDN-A15-1070 | 100% | 2025-07-09 | 2025-07-15 |
| X-A15-1010 |  | Delay Event: Green Prolonged Closing Duration | 5d | 2025-07-06 A | 2025-07-09 A | X-A15-1000 | 100% | 2025-07-09 | 2025-07-15 |
|  | 16 | **Family Whirlpool Main Drain** |  | 2025-07-02 | 2025-07-28 |  |  |  |  |
| X-FW-1000 |  | Delay Event: Push on Fillcrete Encasement due to Manpower | 5d | 2025-07-02 A | 2025-07-03 A | C-FDN-NN-1260 | 100% | 2025-07-09 | 2025-07-15 |
| X-FW-1010 |  | LMS detailing error, formwork issues (Family Whirlpool raft Slab) | 5d | 2025-07-14 A | 2025-07-18 A |  | 100% | 2025-07-29 | 2025-08-05 |
| X-FW-1020 |  | Revised Dowel Details | 5d | 2025-07-24 A | 2025-07-28 A |  | 100% | 2025-07-29 | 2025-08-05 |
|  | 19 | **Architectural Concrete Bases** |  | 2025-06-19 | 2025-06-30 |  |  |  |  |
| C-FDN-ACB-1180 |  | Delay Event- RFI Response to Snow Melt Core. | 5d | 2025-06-19 A | 2025-06-30 A | C-FDN-ACB-1020 | 100% | 2025-06-26 | 2025-07-03 |
|  | 20 | **South SIde Cladding** |  | 2025-12-12 | 2026-01-12 |  |  |  |  |
| C-ENV-S-CL-1000 |  | Delay Event- South Side Steel Angle Procurement | 1d | 2025-12-12 A | 2026-01-12 A |  | 100% | 2025-12-16 | 2025-12-16 |

| ID | WBS | Activity | Duration | Start | Finish | Predecessors | Complete | Remaining | Planned start | Planned finish | Total float | Free float | Constraint | Expected finish |
| --- | --- | --- | --- | --- | --- | --- | --- | --- | --- | --- | --- | --- | --- | --- |
|  | 21 | **Lap Pool** |  | 2025-11-25 | 2025-12-02 |  |  |  |  |  |  |  |  |  |
| C-ENV-LP-1000 |  | Delay Event- Patching & Grinding | 1d | 2025-11-25 A | 2025-12-02 A |  | 100% |  | 2025-12-09 | 2025-12-09 |  |  |  |  |
|  | 22 | **Zone 05- North Natatorium HVAC Wall** |  | 2025-11-24 | 2026-01-23 |  |  |  |  |  |  |  |  |  |
| C-Z5-NN-HVAC-1000 |  | Delay Event- Manpower Availability by MNA for HVAC Wall | 5d | 2025-11-24 A | 2025-12-08 A |  | 100% |  | 2025-12-05 | 2025-12-11 |  |  |  |  |
| C-Z5-NN-ELEC-1010 |  | North Natatorium Missed TV Screen Backing & Electrical Rough In | 5d | 2026-01-14 A | 2026-01-23 |  |  | 5d | 2026-01-19 | 2026-01-23 | 8d | 0d |  | 2026-01-23 |
|  | 23 | **Zone -04- Frame Delivery** |  | 2026-01-26 | 2026-01-26 |  |  |  |  |  |  |  |  |  |
| C-Z5-NN-FRA-1020 |  | Remaining 5 opening Frame Delivery | 1d | 2026-01-26 | 2026-01-26 |  |  |  |  |  | 12d | 4d | start on or after 2026-01-23 |  |
|  | 7 | **CLIENT EVENTS** |  | 2024-06-11 | 2024-09-03 |  |  |  |  |  |  |  |  |  |
| WX-1000 |  | High School Exams | 2d | 2024-06-11 A | 2024-06-12 A | P-TEA-4 | 100% |  | 2024-06-12 | 2024-06-13 |  |  |  |  |
| WX-1010 |  | High School Exams | 4d | 2024-06-17 A | 2024-06-20 A | P-TEA-4 | 100% |  |  |  |  |  |  |  |
| WX-1020 |  | High School | 3d | 2024-06-24 A | 2024-06-26 A | P-TEA-4 | 100% |  |  |  |  |  |  |  |
| WX-1030 |  | Last Day of School 2024 | 1d | 2024-06-27 A | 2024-06-27 A | P-TEA-4 | 100% |  |  |  |  |  |  |  |
| WX-1040 |  | Summer Days | 1d | 2024-08-02 A | 2024-08-02 A | P-TEA-4 | 100% |  |  |  |  |  |  |  |
| WX-1050 |  | First Day of School 2024/2025 | 1d | 2024-09-03 A | 2024-09-03 A | P-TEA-4 | 100% |  |  |  |  |  |  |  |
|  | 2 | **Work Constraints** |  | 2025-11-08 | 2026-05-01 |  |  |  |  |  |  |  |  |  |
| WX-2000 |  | Winter 2025 - 2026 | 5d | 2025-11-08 A | 2026-05-01 |  |  | 73d | 2025-11-11 | 2025-11-17 | 43d | 0d |  | 2026-05-01 |
|  | 8 | **CONSTRUCTION** |  | 2024-04-22 | 2026-06-19 |  |  |  |  |  |  |  |  |  |
| C-MOB-210 |  | Mobilization and Site Preparation | 5d | 2024-04-22 A | 2024-04-26 A | P-TEA-9 | 100% |  |  |  |  |  |  |  |
|  | 1 | **SUBSTRUCTURE (FOUNDATIONS)** |  | 2024-04-29 | 2026-04-11 |  |  |  |  |  |  |  |  |  |
| C-FDN-1000 |  | Strip to Underside of Subgrade, to Pile Cutoff Elevation - Entire Footprint | 5d | 2024-04-29 A | 2024-05-03 A | C-MOB-210, IPP-SAFE-175 | 100% |  |  |  |  |  |  |  |
| C-FDN-1010 |  | Temporary Power and Gas Connections | 5d | 2024-05-06 A | 2024-05-10 A | C-FDN-1000 | 100% |  |  |  |  |  |  |  |
| C-FDN-1020 |  | Piling | 10d | 2024-05-22 A | 2024-06-06 A | P-PRO-135 FS-1d, C-FDN-1010 | 100% |  | 2024-05-16 | 2024-05-30 |  |  |  |  |
| C-FDN-1030 |  | Sheet Piling | 3d | 2024-06-07 A | 2024-06-25 A | P-PRO-136, C-FDN-1020, C-FDN-1040 FF | 100% |  | 2024-06-05 | 2024-06-07 |  |  |  |  |
| C-FDN-1040 |  | Event: weather, delays, Underground Bolders, Exam Schedule | 2d | 2024-06-13 A | 2024-06-25 A | P-TEA-4 | 100% |  | 2024-06-13 | 2024-06-14 |  |  |  |  |

| ID | WBS | Activity | Duration | Start | Finish | Predecessors | Complete | Planned start | Planned finish |
| --- | --- | --- | --- | --- | --- | --- | --- | --- | --- |
|  | 1 | **AREA 1A, 2, 3, 4,5, 9, 11, 12 - PILE CAPS AND GRADEBEAMS** |  | 2024-06-05 | 2024-08-07 |  |  |  |  |
|  | 1 | **Area-1 Pile Extension & Pile Caps** |  | 2024-06-05 | 2024-08-07 |  |  |  |  |
| C-FDN-A1-1000 |  | Area 1A/2/1B Detailed Excavation | 4d | 2024-06-05 A | 2024-06-11 A | C-FDN-1020 | 100% | 2024-06-05 | 2024-06-10 |
| C-FDN-A1-1010 |  | Pile Extensions | 5d | 2024-06-19 A | 2024-06-24 A | P-TEA-4 | 100% | 2024-06-13 | 2024-06-19 |
| C-FDN-A1-1020 |  | Backfilling of Pile Extensions | 5d | 2024-07-02 A | 2024-07-08 A | C-FDN-A1-1010 | 100% |  |  |
| C-FDN-A1-1030 |  | Backfill GL PC-PA / P7-P5 | 4d | 2024-07-02 A | 2024-07-05 A | C-FDN-A1-1020 SS | 100% |  |  |
| C-FDN-A1-1040 |  | Stand Forms | 3d | 2024-07-10 A | 2024-07-19 A | C-FDN-A1-1000, C-FDN-A1-1010, C-FDN-A1-1020 SS+3d, C-FDN-A1-1030 | 100% | 2024-07-08 | 2024-07-10 |
| C-FDN-A1-1050 |  | Rebar | 1d | 2024-07-10 A | 2024-07-17 A | C-FDN-A1-1040 FF, P-PRO-140, C-FDN-A1-1030 | 100% | 2024-07-15 | 2024-07-15 |
| C-FDN-A1-1060 |  | Welding of Steel Plate to Rebar | 5d | 2024-07-19 A | 2024-07-31 A | C-FDN-A1-1050 | 100% | 2024-07-25 | 2024-07-31 |
| C-FDN-A1-1070 |  | Inspection | 1d | 2024-08-01 A | 2024-08-01 A | C-FDN-A1-1050, C-FDN-A1-1060 | 100% |  |  |
| C-FDN-A1-1080 |  | Pour | 1d | 2024-08-02 A | 2024-08-02 A | C-FDN-A1-1070 FF | 100% |  |  |
| C-FDN-A1-1090 |  | Strip | 1d | 2024-08-07 A | 2024-08-07 A | C-FDN-A1-1080 FS+2d | 100% | 2024-08-08 | 2024-08-08 |
|  | 2 | **Area-2 North Gradebeam , GL PD- PG / P1-P4** |  | 2024-06-21 | 2024-07-18 |  |  |  |  |
| C-FDN-A2-1000 |  | Outside Forms | 7d | 2024-06-21 A | 2024-06-25 A | C-FDN-A2-1020 SS+1d | 100% | 2024-07-19 | 2024-07-29 |
| C-FDN-A2-1010 |  | Area 3/4 Excavation -Grade beams | 4d | 2024-06-24 A | 2024-06-26 A | C-FDN-A1-1000 FS+1d, C-FDN-1030 | 100% | 2024-06-13 | 2024-06-18 |
| C-FDN-A2-1020 |  | Sleeper, Sand, Voidform | 3d | 2024-06-27 A | 2024-07-18 A | C-FDN-A6(AB)-1000 | 100% | 2024-07-18 | 2024-07-22 |
| C-FDN-A2-1030 |  | Rebar | 2d | 2024-07-03 A | 2024-07-04 A | P-TEA-4 | 100% |  |  |
| C-FDN-A2-1040 |  | Inspection | 1d | 2024-07-05 A | 2024-07-05 A | C-FDN-A2-1030 | 100% |  |  |
| C-FDN-A2-1050 |  | Inside Forms and Embeds | 1d | 2024-07-08 A | 2024-07-08 A | C-FDN-A2-1040, P-PRO-37 | 100% |  |  |
| C-FDN-A2-1060 |  | Concrete Pour | 1d | 2024-07-08 A | 2024-07-08 A | C-FDN-A2-1050 FF | 100% |  |  |
| C-FDN-A2-1070 |  | Strip | 2d | 2024-07-11 A | 2024-07-11 A | C-FDN-A2-1060 FS+2d | 100% | 2024-07-11 | 2024-07-12 |
|  | 3 | **Area-3 East Grade Beam, GL PG/ P6- P9** |  | 2024-07-03 | 2024-07-31 |  |  |  |  |
| C-FDN-A3-1000 |  | Sleeper, Sand, Voidform | 3d | 2024-07-03 A | 2024-07-05 A | C-FDN-A2-1020, C-FDN-A3-1010 | 100% | 2024-10-02 | 2024-10-04 |
| C-FDN-A3-1010 |  | Area 13 Excavation | 3d | 2024-07-04 A | 2024-07-05 A | C-FDN-2000 | 100% | 2024-07-08 | 2024-07-10 |
| C-FDN-A3-1020 |  | Outside Forms | 8d | 2024-07-05 A | 2024-07-06 A | C-FDN-A3-1000, C-FDN-A2-1000 | 100% | 2024-10-07 | 2024-10-17 |
| C-FDN-A3-1030 |  | Rebar | 3d | 2024-07-07 A | 2024-07-10 A | C-FDN-A3-1020, C-FDN-A2-1040, P-PRO-143 | 100% | 2024-10-18 | 2024-10-22 |
| C-FDN-A3-1040 |  | Inspection | 1d | 2024-07-10 A | 2024-07-10 A | C-FDN-A3-1030 | 100% | 2024-10-23 | 2024-10-23 |
| C-FDN-A3-1050 |  | Inside Forms and Embeds | 8d | 2024-07-11 A | 2024-07-18 A | C-FDN-A3-1040, C-FDN-A2-1050 | 100% | 2024-07-11 | 2024-07-22 |
| C-FDN-A3-1060 |  | Concrete Pour | 1d | 2024-07-19 A | 2024-07-19 A | C-FDN-A3-1050, C-FDN-A2-1060 | 100% | 2024-10-31 | 2024-10-31 |
| C-FDN-A3-1070 |  | Strip | 2d | 2024-07-30 A | 2024-07-31 A | C-FDN-A3-1060 FS+2d | 100% | 2024-11-05 | 2024-11-06 |

Notes:
- C-FDN-A1-1010: Delays: awaiting ofr concrete from 20th of june till 24th during to unavailability / and no booking from concrete suppliers

| ID | WBS | Activity | Duration | Start | Finish | Predecessors | Complete | Planned start | Planned finish | Comments |
| --- | --- | --- | --- | --- | --- | --- | --- | --- | --- | --- |
|  | 2 | **BASEMENT POOL MECHANICAL** |  | 2024-07-05 | 2025-07-16 |  |  |  |  |  |
| C-FDN-2000 |  | Bulk Excavation - Down to 94750 & include surge tank | 3d | 2024-07-05 A | 2024-07-19 A | C-FDN-1020, C-FDN-1030 | 100% | 2024-07-03 | 2024-07-05 |  |
|  | 1 | **Area-4 Basement Footings** |  | 2024-07-25 | 2024-08-02 |  |  |  |  |  |
| C-FDN-A4-1000 |  | Inside Forms, Embeds | 1d | 2024-07-25 A | 2024-07-25 A | C-FDN-A4-1050 FF | 100% |  |  |  |
| C-FDN-A4-1010 |  | Detail Excavation: Pilasters | 2d | 2024-07-26 A | 2024-07-29 A | C-FDN-2000 FS+1d | 100% |  |  |  |
| C-FDN-A4-1020 |  | Mud Slab Placement | 1d | 2024-07-29 A | 2024-07-30 A | P-TEA-4 | 100% | 2024-07-25 | 2024-07-25 |  |
| C-FDN-A4-1030 |  | Forms | 1d | 2024-07-30 A | 2024-07-31 A | C-FDN-A4-1010, C-FDN-A4-1020 | 100% | 2024-07-25 | 2024-07-25 |  |
| C-FDN-A4-1040 |  | Rebar | 1d | 2024-07-30 A | 2024-07-31 A | C-FDN-A4-1030 SS, P-PRO-141 | 100% | 2024-07-25 | 2024-07-25 |  |
| C-FDN-A4-1050 |  | Inspection | 1d | 2024-08-01 A | 2024-08-01 A | C-FDN-A4-1040 FF | 100% | 2024-07-25 | 2024-07-25 |  |
| C-FDN-A4-1060 |  | Pour - 4 Sides | 1d | 2024-08-02 A | 2024-08-02 A | C-FDN-A4-1000 | 100% | 2024-07-26 | 2024-07-26 |  |
|  | 2 | **Area-5 Basement Walls** |  | 2024-08-05 | 2025-06-17 |  |  |  |  |  |
| C-FDN-A5-1000 |  | Inside Forms | 4d | 2024-08-05 A | 2024-08-22 A | C-FDN-A4-1060, P-PRO-137, C-FDN-A6(AB)-1040 | 100% | 2024-07-25 | 2024-07-30 |  |
| C-FDN-A5-1010 |  | Rebar | 7d | 2024-08-05 A | 2024-09-17 A | C-FDN-A5-1000 SS, P-PRO-1444, C-FDN-A4-1050, P-PRO-137, C-FDN-A5-1020 FF | 100% | 2024-08-19 | 2024-08-27 |  |
| C-FDN-A5-1020 |  | Pool Mechanical Sleeving | 3d | 2024-08-21 A | 2024-08-23 A | C-FDN-A11-1020, C-FDN-A5-1000 | 100% | 2024-08-28 | 2024-08-30 |  |
| C-FDN-A5-1030 |  | Inspection | 1d | 2024-09-06 A | 2024-09-17 A | C-FDN-A5-1010 FF, P-PRO-137 | 100% | 2024-09-17 | 2024-09-17 |  |
| C-FDN-A5-1040 |  | Out Side Forms, Embeds and Bulkheads | 10d | 2024-09-07 A | 2024-11-05 A | P-PRO-137, C-FDN-A5-1020 | 100% | 2024-09-09 | 2024-09-20 |  |
| C-FDN-A5-1050 |  | Concrete Pour | 15d | 2024-09-20 A | 2024-11-06 A | P-PRO-138, C-FDN-A5-1040 SS+4d, C-FDN-A5-1040 FF | 100% | 2024-09-20 | 2024-10-10 |  |
| C-FDN-A5-1060 |  | Surge Tank Walls | 10d | 2024-09-30 A | 2024-10-21 A | C-FDN-A4-1060 | 100% | 2024-09-30 | 2024-10-11 |  |
| C-FDN-A5-1070 |  | Waterproofing up to 4ft | 11d | 2024-10-16 A | 2024-10-22 A | P-PRO-149 FF, C-FDN-A5-1050 SS+10d, C-FDN-A5-1060 SS, C-FDN-A5-1060 FF | 100% | 2024-10-18 | 2024-11-01 |  |
| C-FDN-A5-1080 |  | Weeping Tile Around the footing | 2d | 2024-10-23 A | 2024-10-24 A | C-FDN-A5-1070, P-PRO-148 | 100% |  |  |  |
| C-FDN-A5-1090 |  | Waterproofing to the top of basement walls | 5d | 2025-06-05 A | 2025-06-17 A | MIL-C-530, C-FDN-A7A-1040, C-SS-PH3-1110, C-FDN-PH3-1000, C-FDN-PH3-1010, C-FDN-A7-1130, X-WP-1000 | 100% | 2025-06-19 | 2025-06-25 |  |
|  | 4 | **Area-6 Basement125 Thick Slab on Grade** |  | 2024-11-05 | 2025-07-16 |  |  |  |  |  |
| C-FDN-A6-1000 |  | Trenchs (Modren Niagara) | 2d | 2024-11-05 A | 2024-11-06 A | C-FDN-A4-1010, C-FDN-A5-1050 SS+20d, C-FDN-A5-1060 | 100% |  |  | Start once pits are delivered on October 28. |
| C-FDN-A6-1010 |  | Install the Sump-Pit and Piping | 0d | 2024-11-05 A | 2024-11-06 A | P-PRO-150, C-FDN-A4-1010, C-FDN-A6-1020 SS, C-FDN-2000 | 100% | 2024-11-11 | 2024-11-11 |  |
| C-FDN-A6-1020 |  | Interior Weeping Tile Installation and Backfill | 1d | 2024-11-08 A | 2024-11-13 A | P-PRO-144, C-FDN-A4-1010, C-FDN-A6-1000 | 100% | 2024-11-08 | 2024-11-08 |  |
| C-FDN-A6-1030 |  | Backfilling Trenches | 2d | 2024-11-09 A | 2024-11-13 A | C-FDN-A4-1010 FF, C-FDN-A6-1020 FF, C-FDN-A6-1010 FF, C-FDN-A6-1000 FF | 100% | 2024-11-11 | 2024-11-12 |  |
| C-FDN-A6-1040 |  | Installation of Rock and Prep for SOG | 1d | 2024-11-14 A | 2024-11-15 A | C-FDN-A6-1030 | 100% | 2024-11-06 | 2024-11-06 |  |
| C-FDN-A6-1050 |  | Polly | 1d | 2024-11-18 A | 2024-11-19 A | C-FDN-A6-1010, C-FDN-A6-1020, C-FDN-A6-1040 FF | 100% | 2024-11-18 | 2024-11-18 |  |
| C-FDN-A6-1060 |  | Rebar | 2d | 2024-11-20 A | 2024-11-21 A | C-FDN-A6-1050, C-FDN-A4-1060 | 100% | 2024-11-19 | 2024-11-20 |  |
| C-FDN-A6-1070 |  | Inspection | 1d | 2024-11-21 A | 2024-11-21 A | C-FDN-A6-1060 FF | 100% | 2024-11-20 | 2024-11-20 |  |
| C-FDN-A6-1080 |  | Pour the Slab | 1d | 2024-11-22 A | 2024-11-22 A | C-FDN-A6-1060, C-FDN-A6-1020, C-FDN-A6-1010, C-FDN-A6-1050, C-FDN-A5-1050, C-FDN-A6-1070 | 100% | 2024-11-21 | 2024-11-21 |  |
| C-FDN-A6-1090 |  | Added Task- Sump Pit Thawing & Retest | 5d | 2025-02-24 A | 2025-07-16 A | C-FDN-A6-1010 | 100% | 2025-06-26 | 2025-07-03 |  |

Notes:
- C-FDN-A5-1010: Delays: delayed due to the sleeves delivery 22-08-24 update
- C-FDN-A6-1000: General: update 27th June / the sump pit delivery take more than expected and take 4-5 weeks will be / delivered by 19th of Aug 2024

| ID | WBS | Activity | Duration | Start | Finish | Predecessors | Complete | Planned start | Planned finish | Comment | Area- ID | Comments |
| --- | --- | --- | --- | --- | --- | --- | --- | --- | --- | --- | --- | --- |
|  | 5 | **Area-7 A S5 - 300/375 Thick Concrete Structural Slab (high priority)** |  | 2024-11-25 | 2024-12-16 |  |  |  |  |  |  |  |
| C-FDN-A7A-1000 |  | Formwork System Installation | 6d | 2024-11-25 A | 2024-12-04 A | C-FDN-A6-1080 | 100% | 2024-11-22 | 2024-11-29 | 'Delay due to Doka material being delayed to site. | S-BSM |  |
| C-FDN-A7A-1010 |  | M&E Sleeves | 1d | 2024-12-04 A | 2024-12-05 A | C-FDN-A7A-1000 FF | 100% | 2024-12-04 | 2024-12-04 |  | S-BSM |  |
| C-FDN-A7A-1020 |  | Rebar | 4d | 2024-12-05 A | 2024-12-10 A | C-FDN-A7A-1010 SS+1d | 100% |  |  |  | S-BSM |  |
| C-FDN-A7A-1030 |  | Inspection | 1d | 2024-12-10 A | 2024-12-10 A | C-FDN-A7A-1020 FF | 100% |  |  |  | S-BSM |  |
| C-FDN-A7A-1040 |  | Pouring | 1d | 2024-12-16 A | 2024-12-16 A | C-FDN-A7A-1020, C-FDN-A7A-1030 FS+1d | 100% | 2024-12-12 | 2024-12-12 |  | S-BSM |  |
|  | 10 | **Area-6 A&B Lap Pool Step Footings** |  | 2024-07-11 | 2024-08-16 |  |  |  |  |  |  |  |
| C-FDN-A6(AB)-1000 |  | Area-6 A&B Excavation -Gradebeams | 5d | 2024-07-11 A | 2024-07-17 A | C-FDN-A2-1010, C-FDN-A3-1010 | 100% |  |  |  |  |  |
| C-FDN-A6(AB)-1010 |  | Forms | 2d | 2024-08-12 A | 2024-08-13 A | P-TEA-4 | 100% |  |  |  |  |  |
| C-FDN-A6(AB)-1020 |  | Rebar | 2d | 2024-08-13 A | 2024-08-14 A | C-FDN-A6(AB)-1010 FF+1d | 100% |  |  |  |  |  |
| C-FDN-A6(AB)-1030 |  | Inspection | 1d | 2024-08-15 A | 2024-08-15 A | C-FDN-A6(AB)-1020 | 100% |  |  |  |  |  |
| C-FDN-A6(AB)-1040 |  | Pour Concrete | 1d | 2024-08-16 A | 2024-08-16 A | C-FDN-A6(AB)-1030 | 100% |  |  |  |  |  |
|  | 3 | **SOUTH NATATORIUM GL P5.5-P10** |  | 2025-02-18 | 2026-04-11 |  |  |  |  |  |  |  |
|  | 1 | **Area 7 B Lap Pool Raft Slab** |  | 2025-02-18 | 2025-05-06 |  |  |  |  |  |  |  |
| C-FDN-A7-1000 |  | Trenching weeping tile | 3d | 2025-02-18 A | 2025-02-26 A | C-FDN-A4-1010, C-FDN-2000, C-FDN-A5-1050, C-FDN-A6-1000, C-SS-PH3-1110, C-FDN-A5-1060, C-FDN-PH3-1000 SS, C-FDN-PH3-1010, C-FDN-2000 FF, C-FDN-A12A-1010 | 100% | 2025-02-21 | 2025-02-25 |  |  |  |
| C-FDN-A7-1010 |  | Area 7A/B Main drain base complete | 1d | 2025-02-27 A | 2025-02-27 A | P-PRO-820 | 100% | 2025-02-28 | 2025-02-28 | it was 15 put as per Modern Niagra increased to 20 |  | duration TBC with modren Niagra |
| C-FDN-A7-1020 |  | Trenching mechanical | 3d | 2025-02-28 A | 2025-03-04 A | C-FDN-2000, C-FDN-A5-1050, C-FDN-A6-1000, C-SS-PH3-1110, C-FDN-PH3-1000 SS, C-FDN-PH3-1010, C-FDN-A12A-1010 FS-1d | 100% | 2025-02-20 | 2025-02-24 |  |  |  |
| C-FDN-A7-1030 |  | Main Drain and Piping Install (Red Lines) | 3d | 2025-03-03 A | 2025-03-05 A | P-PRO-820, C-FDN-A7-1010 | 100% |  |  | it was 15 put as per Modern Niagra increased to 20 |  | duration TBC with modren Niagra |
| C-FDN-A7-1040 |  | Inlet Pool Piping(Blue Lines) | 7d | 2025-03-04 A | 2025-03-10 A | P-PRO-820, C-FDN-A7-1030 | 100% | 2025-03-06 | 2025-03-14 | it was 15 put as per Modern Niagra increased to 20 |  | duration TBC with modren Niagra |
| C-FDN-A7-1050 |  | Backfill and fillcrete | 1d | 2025-03-27 A | 2025-03-27 A | C-FDN-A7-1040, C-FDN-A7-1010, C-FDN-A7-1030 | 100% | 2025-03-13 | 2025-03-13 |  |  |  |
| C-FDN-A7-1060 |  | 300mm subgrade rock | 2d | 2025-03-28 A | 2025-04-04 A | C-FDN-A7-1050 | 100% | 2025-03-14 | 2025-03-17 |  |  |  |
| C-FDN-A7-1070 |  | Form Slab Edge | 2d | 2025-04-02 A | 2025-04-04 A | C-FDN-A7-1060 | 100% | 2025-03-18 | 2025-03-19 |  |  |  |
| C-FDN-A7-1080 |  | Rebar | 5d | 2025-04-07 A | 2025-04-11 A | P-PRO-141, C-FDN-A7-1060, C-FDN-A7-1070 | 100% | 2025-03-20 | 2025-03-26 |  |  |  |
| C-FDN-A7-1090 |  | Form Bulk Heads, Water Stop | 2d | 2025-04-11 A | 2025-04-14 A | C-FDN-A7-1080 | 100% | 2025-03-27 | 2025-03-28 |  |  |  |
| C-FDN-A7-1100 |  | Pour 1 - Area 7 Top Section | 1d | 2025-04-16 A | 2025-04-16 A | P-PRO-138, C-FDN-A7-1080, C-FDN-A7-1090 | 100% | 2025-03-31 | 2025-03-31 |  |  |  |
| C-FDN-A7-1110 |  | Pour 2 - Area 7 Bottom Section | 1d | 2025-04-22 A | 2025-04-22 A | C-FDN-A7-1100 FS+1d | 100% | 2025-04-02 | 2025-04-02 |  |  |  |
| C-FDN-A7-1130 |  | Pour 3 - Area 7 Middle Section | 1d | 2025-05-06 A | 2025-05-06 A | X-WS-1000 | 100% | 2025-05-26 | 2025-05-26 |  |  |  |

Notes:
- C-FDN-A7A-1020: General Notes: a

| ID | WBS | Activity | Type | Duration | Start | Finish | Predecessors | Complete | Planned start | Planned finish |
| --- | --- | --- | --- | --- | --- | --- | --- | --- | --- | --- |
|  | 1 | **Deep End Slab** |  |  |  |  |  |  |  |  |
|  | 2 | **Shallow End Slab** |  |  |  |  |  |  |  |  |
|  | 3 | **Area-8A/8B Lap Pool Walls** |  |  | 2025-04-21 | 2025-05-30 |  |  |  |  |
| C-FDN-A8-1000 |  | Outside Forms |  | 3d | 2025-04-21 A | 2025-05-06 A | C-FDN-A7-1100 | 100% | 2025-01-10 | 2025-01-14 |
| C-FDN-A8-1010 |  | Rebar |  | 5d | 2025-04-24 A | 2025-05-09 A | C-FDN-A8-1000 SS+3d, P-PRO-1444 | 100% | 2025-05-07 | 2025-05-13 |
| C-FDN-A8-1020 |  | Inside Forms, Embeds and Bulkheads |  | 7d | 2025-05-01 A | 2025-05-09 A | C-FDN-A8-1010 SS+7d | 100% |  |  |
| C-FDN-A8-1030 |  | Pour 1 |  | 1d | 2025-05-08 A | 2025-05-08 A | C-FDN-A8-1020 SS+3d | 100% | 2025-05-26 | 2025-05-26 |
| C-FDN-A8-1040 |  | Pour 1 Cure |  | 3d | 2025-05-08 A | 2025-05-12 A | C-FDN-A8-1030 FS-1d | 100% | 2025-05-26 | 2025-05-28 |
| C-FDN-A8-1050 |  | Concrete Pours | level of effort | 7d | 2025-05-12 A | 2025-05-16 A | C-FDN-A8-1020, C-FDN-A8-1080 FF | 100% | 2025-05-26 | 2025-06-03 |
| C-FDN-A8-1060 |  | Strip and Close |  | 1d | 2025-05-13 A | 2025-05-13 A | C-FDN-A8-1030 FS-1d, C-FDN-A8-1040 | 100% | 2025-05-29 | 2025-05-29 |
| C-FDN-A8-1070 |  | Pour 2 -8B |  | 1d | 2025-05-14 A | 2025-05-14 A | C-FDN-A8-1020, C-FDN-A8-1060, MIL-C-560 FF-3d | 100% | 2025-05-30 | 2025-05-30 |
| C-FDN-A8-1080 |  | Pour 2 Cure |  | 3d | 2025-05-14 A | 2025-05-16 A | C-FDN-A8-1030 FS-1d, C-FDN-A8-1070 FS-1d | 100% | 2025-05-30 | 2025-06-03 |
| C-FDN-A8-1150 |  | Pour 3- Rebar |  | 5d | 2025-05-19 A | 2025-05-26 A | C-FDN-A8-1080 | 100% | 2025-06-02 | 2025-06-06 |
| C-FDN-A8-1110 |  | Pour 3- Pour |  | 5d | 2025-05-27 A | 2025-05-27 A | C-FDN-A8-1150 | 100% | 2025-05-26 | 2025-05-30 |
| C-FDN-A8-1140 |  | Pour 3- Cure |  | 5d | 2025-05-28 A | 2025-05-30 A | C-FDN-A8-1110 | 100% | 2025-06-09 | 2025-06-13 |
|  | 1 | **Deep End** |  |  |  |  |  |  |  |  |
|  | 2 | **Shallow End** |  |  |  |  |  |  |  |  |
|  | 2 | **UNDERGROUND PIPING & EARTHWORKS** |  |  | 2025-06-02 | 2025-07-24 |  |  |  |  |
| C-FDN-A7-SN-1020 |  | Weeping Tile Around Lap Pool |  | 3d | 2025-06-02 A | 2025-06-03 A | C-FDN-A8-1140 FS+1d | 100% | 2025-06-05 | 2025-06-09 |
| C-FDN-SN-UG-1000 |  | Backfill Around Lap Pool - U/S Sanitary on East and South Sides |  | 3d | 2025-06-04 A | 2025-06-17 A | C-FDN-A7-SN-1020 | 100% | 2025-06-05 | 2025-06-09 |
| C-FDN-SN-UG-1010 |  | Core Hole in South Basement Wall |  | 1d | 2025-06-04 A | 2025-06-19 A | C-FDN-SN-UG-1000 SS | 100% | 2025-06-05 | 2025-06-05 |
| C-FDN-SN-UG-1040 |  | Sheet Pile Removal |  | 3d | 2025-06-09 A | 2025-06-11 A | C-FDN-SN-UG-1000 | 100% | 2025-06-19 | 2025-06-23 |
| C-FDN-SN-UG-1020 |  | Lane Rope Storage Pit Placement |  | 2d | 2025-06-18 A | 2025-06-27 A | C-FDN-SN-UG-1000, C-FDN-SN-UG-1010 SS | 100% | 2025-06-19 | 2025-06-20 |
| C-FDN-SN-UG-1070 |  | Lap Pool Gutter Piping |  | 4d | 2025-06-18 A | 2025-06-23 A | C-FDN-SN-UG-1060, C-FDN-SN-UG-1040 | 100% | 2025-06-19 | 2025-06-24 |
| C-FDN-SN-UG-1060 |  | Backfill to U/S of Gutter on East and U/S Adult WP Main Drain/Gutter on South |  | 2d | 2025-06-19 A | 2025-06-20 A | C-FDN-SN-UG-1030 SS, C-FDN-SN-UG-1010 | 100% |  |  |
| C-FDN-SN-UG-1030 |  | Sanitary Line from Basement - South and East Lines |  | 2d | 2025-06-21 A | 2025-07-10 A | X-BW-1000 | 100% | 2025-06-19 | 2025-06-20 |
| C-FDN-SN-UG-1080 |  | Adult WP Piping From Basement |  | 4d | 2025-06-23 A | 2025-07-07 A | C-FDN-SN-UG-1070 SS, C-FDN-SN-UG-1060 SS, X-P.PIP-1000 FS+2d, C-FDN-SN-UG-1020 | 100% | 2025-06-19 | 2025-06-24 |
| C-FDN-SN-UG-1140 |  | Fillcrete - Encase Lap Pool Gutter & Lane Rope Storage Pit Base |  | 1d | 2025-06-25 A | 2025-06-25 A | C-FDN-SN-UG-1070 | 100% |  |  |
| C-FDN-SN-UG-1100 |  | Backfill to U/S of Outdoor WP Piping |  | 2d | 2025-07-04 A | 2025-07-04 A | C-FDN-SN-UG-1020 | 100% | 2025-07-16 | 2025-07-17 |
| C-FDN-SN-UG-1090 |  | Fillcrete - Adult WP Piping |  | 1d | 2025-07-10 A | 2025-07-10 A | C-FDN-SN-UG-1080, C-FDN-SN-UG-1070 | 100% | 2025-07-29 | 2025-07-29 |

| ID | WBS | Activity | Duration | Start | Finish | Predecessors | Complete | Planned start | Planned finish |
| --- | --- | --- | --- | --- | --- | --- | --- | --- | --- |
|  | 1 | **Outdoor WP Piping** |  | 2025-07-08 | 2025-07-24 |  |  |  |  |
| C-FDN-SN-UG-1110 |  | Outdoor WP Piping | 4d | 2025-07-08 A | 2025-07-09 A | C-FDN-SN-UG-1100, C-FDN-SN-UG-1150 FF-3d | 100% | 2025-07-17 | 2025-07-22 |
| C-FDN-SN-UG-1120 |  | Fillcrete - Encase Outdoor WP Piping | 1d | 2025-07-10 A | 2025-07-10 A | C-FDN-SN-UG-1110, C-FDN-SN-UG-1160 | 100% | 2025-08-06 | 2025-08-06 |
| C-FDN-SN-UG-1150 |  | Prep for Outdoor WP Piping | 0d | 2025-07-14 A | 2025-07-14 A | X-P.PIP-1010 | 100% | 2025-07-29 | 2025-07-29 |
| C-FDN-SN-UG-1160 |  | Insulation for Outdoor WP Piping | 5d | 2025-07-24 A | 2025-07-24 A | C-FDN-SN-UG-1110 | 100% | 2025-07-29 | 2025-08-05 |
|  | 7 | **Lap Pool Trench (Top of Pool Walls)** |  | 2025-10-16 | 2025-11-24 |  |  |  |  |
| C-FDN-SN-LPT-1000 |  | Forming | 5d | 2025-10-16 A | 2025-10-23 A | C-FDN-A8-1140, C-SOG-S1C/D-1060, C-SOG-S1C/D-1070, C-FDN-SN-S1E/S1F/S7/S2B-1100, C-FDN-NN-1660 | 100% | 2025-10-16 | 2025-10-22 |
| C-FDN-SN-LPT-1030 |  | Close | 3d | 2025-10-21 A | 2025-10-23 A | C-FDN-SN-LPT-1000 | 100% | 2025-10-16 | 2025-10-20 |
| C-FDN-SN-LPT-1040 |  | Pour | 1d | 2025-10-24 A | 2025-10-24 A | C-FDN-SN-LPT-1030 | 100% |  |  |
| C-FDN-SN-LPT-1050 |  | Patching & Grinding | 5d | 2025-10-31 A | 2025-11-24 A | C-FDN-SN-LPT-1040 FF+3d | 100% | 2025-10-31 | 2025-11-06 |
|  | 5 | **Area-16 - Adult Hot Tub Slab** |  | 2025-06-26 | 2025-07-24 |  |  |  |  |
| C-FDN-SN-A16-1000 |  | Main Drain Sump Setting | 2d | 2025-06-26 A | 2025-06-27 A | C-FDN-SN-UG-1060 | 100% | 2025-07-09 | 2025-07-10 |
| C-FDN-SN-A16-1020 |  | Main Drain Piping | 2d | 2025-07-02 A | 2025-07-03 A | C-FDN-SN-A16-1000 | 100% | 2025-07-14 | 2025-07-15 |
| C-FDN-SN-A16-1010 |  | Main Drain Sump Base Rebar | 1d | 2025-07-04 A | 2025-07-04 A | C-FDN-SN-A16-1000, C-FDN-SN-A16-1090 | 100% | 2025-07-09 | 2025-07-09 |
| C-FDN-SN-A16-1090 |  | Fillcrete - Encase | 5d | 2025-07-04 A | 2025-07-04 A | C-FDN-SN-A16-1020 | 100% | 2025-07-09 | 2025-07-15 |
| C-FDN-SN-A16-1030 |  | Fillcrete - Encase Main Drain Piping | 1d | 2025-07-10 A | 2025-07-10 A | C-FDN-SN-A16-1020, X-A16-1000 FS+1d | 100% | 2025-07-29 | 2025-07-29 |
| C-FDN-SN-A16-1040 |  | Raft Slab - Forming | 2d | 2025-07-15 A | 2025-07-16 A | C-FDN-SN-A16-1030 | 100% | 2025-07-30 | 2025-07-31 |
| C-FDN-SN-A16-1080 |  | Delay Event- Rebar Detailing & elevation conflict (LMS) | 5d | 2025-07-16 A | 2025-07-18 A |  | 100% | 2025-07-29 | 2025-08-05 |
| C-FDN-SN-A16-1050 |  | Raft Slab - Rebar | 2d | 2025-07-18 A | 2025-07-22 A | C-FDN-SN-A16-1040, P-PRO-146, C-FDN-SN-A16-1080 | 100% | 2025-08-01 | 2025-08-05 |
| C-FDN-SN-A16-1060 |  | Raft Slab - Rebar Inspection | 1d | 2025-07-23 A | 2025-07-23 A | C-FDN-SN-A16-1050 | 100% | 2025-07-29 | 2025-07-29 |
| C-FDN-SN-A16-1070 |  | Raft Slab - Pour | 1d | 2025-07-24 A | 2025-07-24 A | C-FDN-SN-A16-1060 | 100% | 2025-07-30 | 2025-07-30 |
|  | 13 | **Area-17 - Adult Hot Tub Walls & Bench** |  | 2025-07-16 | 2025-09-11 |  |  |  |  |
| C-FDN-A7-SN-1330 |  | Wall & Bench- Raft Slab | 5d | 2025-07-24 A | 2025-07-24 A |  | 100% | 2025-07-29 | 2025-08-05 |
| C-FDN-A7-SN-1400 |  | Backfill Around Adult WP and Complete to U/S of SOG Prep | 2d | 2025-09-09 A | 2025-09-11 A | C-FDN-A7-SN-1310 FF, C-FDN-A7-SN-1300 | 100% | 2025-09-16 | 2025-09-17 |

| ID | WBS | Activity | Duration | Start | Finish | Predecessors | Complete | Planned start | Planned finish |
| --- | --- | --- | --- | --- | --- | --- | --- | --- | --- |
|  | 1 | **Benches** |  | 2025-07-16 | 2025-09-05 |  |  |  |  |
| C-FDN-A7-SN-1230 |  | Wall & Bench (Includes Trench) - Outside Forming | 2d | 2025-07-16 A | 2025-07-17 A | C-FDN-SN-A16-1070 | 100% | 2025-07-29 | 2025-07-30 |
| C-FDN-A7-SN-1240 |  | Wall & Bench (Includes Trench) - Rebar (Inside Half) | 2d | 2025-07-18 A | 2025-07-22 A | C-FDN-A7-SN-1230 | 100% | 2025-07-31 | 2025-08-01 |
| C-FDN-A7-SN-1250 |  | Bench (Includes Trench) - Pipe Penetrations | 7d | 2025-07-28 A | 2025-08-07 A | C-FDN-A7-SN-1330 | 100% | 2025-08-15 | 2025-08-25 |
| C-FDN-A7-SN-1260 |  | Bench (Includes Trench)- Rebar (Modifications) | 2d | 2025-08-07 A | 2025-08-07 A | C-FDN-A7-SN-1250 | 100% | 2025-08-15 | 2025-08-18 |
| C-FDN-A7-SN-1270 |  | Bench (Includes Trench) - Rebar Inspection | 1d | 2025-08-08 A | 2025-08-08 A | C-FDN-A7-SN-1260 FF | 100% | 2025-08-19 | 2025-08-19 |
| C-FDN-A7-SN-1280 |  | Bench (Includes Trench)- Bonding Study | 3d | 2025-08-11 A | 2025-08-11 A | C-FDN-A7-SN-1270 | 100% | 2025-08-20 | 2025-08-22 |
| C-FDN-A7-SN-1290 |  | Bench (Includes Trench) - Formwork Close | 3d | 2025-08-12 A | 2025-08-13 A | C-FDN-A7-SN-1280 | 100% | 2025-08-25 | 2025-08-27 |
| C-FDN-A7-SN-1300 |  | Bench (Includes Trench) - Pour | 2d | 2025-08-14 A | 2025-08-14 A | C-FDN-A7-SN-1290 | 100% | 2025-08-28 | 2025-08-29 |
| C-FDN-A7-SN-1310 |  | Bench (Includes Trench) - Formwork Strip | 1d | 2025-09-05 A | 2025-09-05 A | C-FDN-A7-SN-1300 | 100% | 2025-09-12 | 2025-09-12 |
|  | 2 | **Walls** |  | 2025-07-16 | 2025-09-10 |  |  |  |  |
| C-FDN-A7-SN-1670 |  | Wall (Includes Trench) - Outside Forming | 2d | 2025-07-16 A | 2025-07-17 A |  | 100% | 2025-07-29 | 2025-07-30 |
| C-FDN-A7-SN-1680 |  | Wall (Includes Trench) - Rebar (Inside Half) | 2d | 2025-07-18 A | 2025-07-22 A | C-FDN-A7-SN-1670 | 100% | 2025-07-31 | 2025-08-01 |
| C-FDN-A7-SN-1690 |  | Wall (Includes Trench) - Pipe Penetrations | 7d | 2025-07-30 A | 2025-08-07 A |  | 100% | 2025-08-15 | 2025-08-25 |
| C-FDN-A7-SN-1780 |  | RFI 161- Dimension for the Skimmers | 5d | 2025-08-08 A | 2025-08-11 A | C-FDN-A7-SN-1690 | 100% | 2025-08-15 | 2025-08-21 |
| C-FDN-A7-SN-1700 |  | Wall (Includes Trench)- Rebar (Outside Half) | 1d | 2025-08-12 A | 2025-08-12 A | C-FDN-A7-SN-1690, C-FDN-A7-SN-1780 FF+2d | 100% | 2025-08-15 | 2025-08-15 |
| C-FDN-A7-SN-1710 |  | Wall (Includes Trench) - Rebar Inspection | 1d | 2025-08-13 A | 2025-08-13 A | C-FDN-A7-SN-1700 FF | 100% | 2025-08-15 | 2025-08-15 |
| C-FDN-A7-SN-1720 |  | Wall (Includes Trench)- Bonding Study | 3d | 2025-08-14 A | 2025-08-14 A | C-FDN-A7-SN-1710 | 100% | 2025-08-18 | 2025-08-20 |
| C-FDN-A7-SN-1730 |  | Wall (Includes Trench) - Formwork Close | 1d | 2025-08-25 A | 2025-08-25 A | C-FDN-A7-SN-1720 | 100% | 2025-08-29 | 2025-08-29 |
| C-FDN-A7-SN-1740 |  | Wall (Includes Trench) - Pour | 2d | 2025-09-05 A | 2025-09-05 A | C-FDN-A7-SN-1730, C-FDN-A7-SN-1300 | 100% | 2025-09-12 | 2025-09-15 |
| C-FDN-A7-SN-1750 |  | Wall (Includes Trench) - Formwork Strip | 2d | 2025-09-09 A | 2025-09-10 A | C-FDN-A7-SN-1740 | 100% | 2025-09-30 | 2025-10-01 |
|  | 16 | **Area-17 - Adult Hot Tub Stair** |  | 2025-09-24 | 2025-11-04 |  |  |  |  |
| C-FDN-A7-SN-1320 |  | Stair - Forming | 2d | 2025-09-24 A | 2025-10-28 A | C-FDN-A7-SN-1310, C-FDN-A7-SN-1750, C-FDN-SN-S1E/S1F/S7/S2B-1100 FF+4d | 100% | 2025-09-18 | 2025-09-19 |
| C-FDN-A7-SN-1340 |  | Stair - Rebar | 2d | 2025-10-27 A | 2025-10-28 A | C-FDN-A7-SN-1320 FF | 100% |  |  |
| C-FDN-A7-SN-1360 |  | Stair - Bonding for Railings | 2d | 2025-10-27 A | 2025-10-28 A | C-FDN-A7-SN-1350 FF | 100% |  |  |
| C-FDN-A7-SN-1350 |  | Stair - Rebar Inspection | 1d | 2025-10-30 A | 2025-10-30 A | C-FDN-A7-SN-1340 FF | 100% | 2025-10-28 | 2025-10-28 |
| C-FDN-A7-SN-1370 |  | Stair - Formwork Close | 1d | 2025-10-31 A | 2025-10-31 A | C-FDN-A7-SN-1360, C-FDN-SN-S1E/S1F/S7/S2B-1100 | 100% | 2025-10-29 | 2025-10-29 |
| C-FDN-A7-SN-1380 |  | Stair - Pour | 1d | 2025-11-01 A | 2025-11-01 A | C-FDN-A7-SN-1370 FF, C-FDN-SN-S1E/S1F/S7/S2B-1100 FF | 100% | 2025-10-29 | 2025-10-29 |
| C-FDN-A7-SN-1640 |  | Cure | 2d | 2025-11-02 A | 2025-11-03 A | C-FDN-A7-SN-1380 | 100% | 2025-10-30 | 2025-10-31 |
| C-FDN-A7-SN-1390 |  | Stair - Formwork Strip | 1d | 2025-11-04 A | 2025-11-04 A | C-FDN-A7-SN-1640 FF | 100% | 2025-10-31 | 2025-10-31 |

| ID | WBS | Activity | Duration | Start | Finish | Predecessors | Complete | Planned start | Planned finish | Total float | Free float |
| --- | --- | --- | --- | --- | --- | --- | --- | --- | --- | --- | --- |
|  | 4 | **S1 White - Slab on Grade S1E/S1F/S2B/S7** |  | 2025-08-26 | 2025-10-18 |  |  |  |  |  |  |
| C-FDN-SN-S1E/S1F/S7/S2B-1110 |  | Sanitary piping | 3d | 2025-08-26 A | 2025-09-09 A | C-FDN-A7-SN-1400 FF+1d | 100% | 2025-09-02 | 2025-09-04 |  |  |
| C-FDN-SN-S1E/S1F/S7/S2B-1030 |  | Radon Piping | 3d | 2025-09-09 A | 2025-09-09 A | C-FDN-A7-SN-1400, C-FDN-SN-UG-1030 | 100% | 2025-09-18 | 2025-09-22 |  |  |
| C-FDN-SN-S1E/S1F/S7/S2B-1040 |  | Radon Pits | 1d | 2025-09-09 A | 2025-09-09 A | C-FDN-SN-S1E/S1F/S7/S2B-1030 SS | 100% | 2025-09-18 | 2025-09-18 |  |  |
| C-FDN-SN-S1E/S1F/S7/S2B-1020 |  | Granular Slab Prep | 2d | 2025-09-11 A | 2025-09-12 A | C-FDN-SN-S1E/S1F/S7/S2B-1040 FF, C-FDN-SN-S1E/S1F/S7/S2B-1030 FF, C-FDN-A7-SN-1400 SS, C-FDN-SN-UG-1030, C-FDN-SN-S1E/S1F/S7/S2B-1110 | 100% | 2025-09-23 | 2025-09-24 |  |  |
| C-FDN-SN-S1E/S1F/S7/S2B-1050 |  | Vapour Barrier | 3d | 2025-09-13 A | 2025-09-15 A | C-FDN-SN-S1E/S1F/S7/S2B-1020 FS-3d | 100% | 2025-09-26 | 2025-09-30 |  |  |
| C-FDN-SN-S1E/S1F/S7/S2B-1000 |  | Inslab Electrical | 1d | 2025-09-16 A | 2025-09-16 A | C-FDN-SN-S1E/S1F/S7/S2B-1060 SS | 100% | 2025-10-01 | 2025-10-01 |  |  |
| C-FDN-SN-S1E/S1F/S7/S2B-1060 |  | Rebar - SOG and Trenches | 7d | 2025-09-17 A | 2025-09-23 A | C-FDN-SN-S1E/S1F/S7/S2B-1050 | 100% | 2025-10-01 | 2025-10-09 |  |  |
| C-FDN-SN-S1E/S1F/S7/S2B-1090 |  | Edgeform and Trench Blockouts | 8d | 2025-09-18 A | 2025-09-25 A | C-FDN-SN-S1E/S1F/S7/S2B-1070 | 100% | 2025-10-10 | 2025-10-22 |  |  |
| C-FDN-SN-S1E/S1F/S7/S2B-1070 |  | Rebar Inspection | 1d | 2025-09-24 A | 2025-09-24 A | C-FDN-SN-S1E/S1F/S7/S2B-1060 FF, C-FDN-SN-S1E/S1F/S7/S2B-1000 | 100% | 2025-10-09 | 2025-10-09 |  |  |
| C-FDN-SN-S1E/S1F/S7/S2B-1080 |  | Bonding | 2d | 2025-09-25 A | 2025-09-25 A | C-FDN-SN-S1E/S1F/S7/S2B-1070 | 100% | 2025-10-10 | 2025-10-14 |  |  |
| C-FDN-SN-S1E/S1F/S7/S2B-1100 |  | Pour and Finish | 7d | 2025-09-26 A | 2025-10-18 A | C-FDN-SN-S1E/S1F/S7/S2B-1080, C-FDN-SN-S1E/S1F/S7/S2B-1090 | 100% | 2025-09-26 | 2025-10-06 |  |  |
|  | 8 | **S3B - 200 Thick Heated Slab on Grade** |  | 2025-10-10 | 2025-11-07 |  |  |  |  |  |  |
| C-SW-1000 |  | Rough Grade Completion | 1d | 2025-10-10 A | 2025-10-14 A | C-FDN-A10B-1090 FF, C-FDN-A18-1170, C-FDN-A18-1160 FF | 100% | 2025-10-10 | 2025-10-10 |  |  |
| C-SW-1010 |  | Subgrade Granular | 1d | 2025-10-16 A | 2025-10-16 A | C-SW-1000 FF | 100% | 2025-10-17 | 2025-10-17 |  |  |
| C-SW-1020 |  | Insulation | 2d | 2025-10-18 A | 2025-10-20 A | C-SW-1010 | 100% | 2025-10-20 | 2025-10-21 |  |  |
| C-SW-1050 |  | Rebar | 2d | 2025-10-27 A | 2025-10-28 A | C-SW-1020 | 100% |  |  |  |  |
| C-SW-1110 |  | Rebar Inspection | 1d | 2025-11-03 A | 2025-11-03 A | C-SW-1050 FF | 100% | 2025-10-28 | 2025-10-28 |  |  |
| C-SW-1080 |  | Inslab Heating | 3d | 2025-11-04 A | 2025-11-06 A | C-SW-1050, P-PRO-637 | 100% | 2025-10-29 | 2025-10-31 |  |  |
| C-SW-1090 |  | Pour and Finish | 1d | 2025-11-07 A | 2025-11-07 A | C-SW-1110, C-SW-1080 | 100% | 2025-11-03 | 2025-11-03 |  |  |
|  | 6 | **East Natatorium Benches** |  | 2026-03-26 | 2026-04-11 |  |  |  |  |  |  |
| C-FDN-A7-SN-1570 |  | Forming | 2d | 2026-03-26 | 2026-03-27 | C-FDN-SN-S1E/S1F/S7/S2B-1100, T-INT-MF-Z5-2630, T-INT-MF-Z5-2230, T-INT-MF-Z5-2090 |  |  |  | 20d | 2d |
| C-FDN-A7-SN-1580 |  | Rebar | 3d | 2026-03-30 | 2026-04-01 | C-FDN-A7-SN-1570 |  |  |  | 15d | 0d |
| C-FDN-A7-SN-1590 |  | Inspection | 1d | 2026-04-02 | 2026-04-02 | C-FDN-A7-SN-1580 |  |  |  | 15d | 0d |
| C-FDN-A7-SN-1600 |  | Close | 2d | 2026-04-03 | 2026-04-06 | C-FDN-A7-SN-1590 |  | 2026-04-06 | 2026-04-07 | 18d | 0d |
| C-FDN-A7-SN-1610 |  | Pour | 1d | 2026-04-07 | 2026-04-07 | C-FDN-A7-SN-1600 |  |  |  | 14d | 0d |
| C-FDN-A7-SN-1660 |  | Cure | 3d | 2026-04-08 | 2026-04-10 | C-FDN-A7-SN-1610 |  |  |  | 18d | 0d |
| C-FDN-A7-SN-1620 |  | Strip | 1d | 2026-04-11 | 2026-04-11 | C-FDN-A7-SN-1660 |  | 2026-04-13 | 2026-04-13 | 18d | 8d |

| ID | WBS | Activity | Duration | Start | Finish | Predecessors | Complete | Planned start | Planned finish | Comments | Comment |
| --- | --- | --- | --- | --- | --- | --- | --- | --- | --- | --- | --- |
|  | 4 | **NORTH NATATORIUM GL P1-P5.5** |  | 2024-08-13 | 2025-11-24 |  |  |  |  |  |  |
|  | 1 | **Area-12 B S4 - Surge Tank Raft Slabs x 2** |  | 2024-08-13 | 2025-02-19 |  |  |  |  |  |  |
| C-FDN-A12A-1000 |  | 12B West Surge Tank Raft Slab | 5d | 2024-08-13 A | 2024-09-17 A | P-TEA-4 | 100% | 2024-08-22 | 2024-08-28 |  |  |
| C-FDN-A12A-1010 |  | Detailed Excavation - Step Footing,Surge Tanks and Remaining Footings | 3d | 2025-02-10 A | 2025-02-13 A | C-ENV-SID-EW-N-1000, C-ENV-SID-EW-E-1000 | 100% | 2025-02-18 | 2025-02-20 | this work will be after the exterior walls |  |
| C-FDN-A12A-1020 |  | Stand Forms | 3d | 2025-02-13 A | 2025-02-14 A | C-FDN-A11-1050, C-FDN-A12A-1010 FS+1d, C-FDN-A12A-1010 FF, C-FDN-A11-1050 FF, C-FDN-A12A-1010 SS | 100% | 2025-02-24 | 2025-02-26 |  |  |
| C-FDN-A12A-1030 |  | Pool Piping Wall Sleeving | 1d | 2025-02-17 A | 2025-02-17 A | C-FDN-A12A-1020 FF | 100% | 2025-02-26 | 2025-02-26 |  |  |
| C-FDN-A12A-1040 |  | Rebar | 1d | 2025-02-18 A | 2025-02-18 A | C-FDN-A12A-1020, P-PRO-145, C-FDN-A12A-1030 | 100% | 2025-02-27 | 2025-02-27 |  |  |
| C-FDN-A12A-1050 |  | Pour | 1d | 2025-02-19 A | 2025-02-19 A | C-FDN-A12A-1040 | 100% | 2025-02-28 | 2025-02-28 |  |  |
|  | 3 | **Area- 12 B Leisure Pool Footings** |  | 2024-08-13 | 2025-03-08 |  |  |  |  |  |  |
| C-FDN-A12B-1000 |  | 12 B Footings 1st Half | 5d | 2024-08-13 A | 2024-08-27 A | P-TEA-4 | 100% | 2024-08-22 | 2024-08-28 |  |  |
| C-FDN-A12B-1010 |  | Mud Slab | 1d | 2025-02-27 A | 2025-02-27 A | C-FDN-A12A-1010 FS+1d | 100% |  |  |  |  |
| C-FDN-A12B-1020 |  | Stand Forms | 3d | 2025-02-28 A | 2025-03-05 A | C-FDN-A11-1050, C-FDN-A11-1050 FF, C-FDN-A12B-1010 | 100% | 2025-02-28 | 2025-03-04 |  |  |
| C-FDN-A12B-1030 |  | Rebar and Inspection | 3d | 2025-03-05 A | 2025-03-07 A | C-FDN-A12B-1020 | 100% |  |  |  |  |
| C-FDN-A12B-1040 |  | Pour | 1d | 2025-03-08 A | 2025-03-08 A | C-FDN-A12B-1030 | 100% | 2025-03-10 | 2025-03-10 |  |  |
|  | 2 | **Area-13 A Surge Tank Walls x 2** |  | 2024-09-23 | 2025-03-03 |  |  |  |  |  |  |
| C-FDN-A13A-1000 |  | 13 A West Wall | 5d | 2024-09-23 A | 2025-02-20 A | C-FDN-A12A-1000, C-SS-PH2-1100 FF+5d, C-FDN-PH1-1010 | 100% | 2024-09-23 | 2024-09-27 | AFTER BASEMENT WALL POUR EAST WALL | AFTER PH-2 STEEL |
| C-FDN-A13A-1010 |  | Stand Forms | 4d | 2025-02-19 A | 2025-02-21 A | C-FDN-A12A-1050 FS+2d, C-FDN-A12A-1050 FF, C-FDN-A13A-1000 | 100% | 2025-03-05 | 2025-03-10 |  |  |
| C-FDN-A13A-1020 |  | Pool Piping Wall Sleeving | 2d | 2025-02-21 A | 2025-02-25 A | C-FDN-A13A-1010 FF | 100% | 2025-03-07 | 2025-03-10 |  |  |
| C-FDN-A13A-1030 |  | Rebar | 2d | 2025-02-25 A | 2025-02-27 A | C-FDN-A13A-1010, C-FDN-A13A-1020 | 100% | 2025-03-11 | 2025-03-12 |  |  |
| C-FDN-A13A-1040 |  | Close | 2d | 2025-02-27 A | 2025-02-28 A | C-FDN-A13A-1030 | 100% | 2025-03-13 | 2025-03-14 |  |  |
| C-FDN-A13A-1050 |  | Pour | 2d | 2025-03-03 A | 2025-03-03 A | C-FDN-A13A-1040 | 100% | 2025-03-17 | 2025-03-18 |  |  |
|  | 4 | **Areas 13A/B/C/D Leisure Pool Walls** |  | 2025-02-26 | 2025-05-05 |  |  |  |  |  |  |
| C-FDN-A13(ABCD)-1000 |  | Leisure pool wall North half | 5d | 2025-02-26 A | 2025-03-05 A | C-FDN-A13A-1000 FF, C-FDN-A5-1050, C-FDN-A12B-1040 FF, C-FDN-A12B-1020 | 100% | 2025-03-05 | 2025-03-11 |  |  |
| C-FDN-A13(ABCD)-1010 |  | Stand Forms - South Half | 4d | 2025-03-07 A | 2025-03-12 A | C-FDN-A12B-1040, C-FDN-A12B-1040 FF, C-FDN-A13(ABCD)-1000 | 100% | 2025-03-12 | 2025-03-17 |  |  |
| C-FDN-A13(ABCD)-1020 |  | Rebar - South Half | 3d | 2025-03-12 A | 2025-03-17 A | C-FDN-A13(ABCD)-1010 SS+6d | 100% | 2025-03-20 | 2025-03-24 |  |  |
| C-FDN-A13(ABCD)-1030 |  | Pool Mechanical Sleeving - South Half | 1d | 2025-03-12 A | 2025-03-12 A | C-FDN-A13(ABCD)-1010 FF | 100% | 2025-03-17 | 2025-03-17 |  |  |
| C-FDN-A13(ABCD)-1040 |  | Inspection - South Half | 1d | 2025-03-17 A | 2025-03-17 A | C-FDN-A13(ABCD)-1020 | 100% | 2025-03-25 | 2025-03-25 |  |  |
| C-FDN-A13(ABCD)-1050 |  | Bonding Study | 3d | 2025-03-17 A | 2025-03-17 A | C-FDN-A13(ABCD)-1040 | 100% | 2025-03-26 | 2025-03-28 |  |  |
| C-FDN-A13(ABCD)-1060 |  | Close - South Half | 2d | 2025-03-18 A | 2025-03-20 A | C-FDN-A13(ABCD)-1020, C-FDN-A13(ABCD)-1030, C-FDN-A13(ABCD)-1040, C-FDN-A13(ABCD)-1050 | 100% | 2025-03-31 | 2025-04-01 |  |  |
| C-FDN-A13(ABCD)-1070 |  | Pour 1 - South Half | 1d | 2025-03-20 A | 2025-03-20 A | C-FDN-A13(ABCD)-1060 FF | 100% | 2025-04-01 | 2025-04-01 |  |  |
| C-FDN-A13(ABCD)-1080 |  | Strip Bulkhead and close remaining forms - South Half | 5d | 2025-03-21 A | 2025-03-21 A | C-FDN-A13(ABCD)-1070 | 100% | 2025-04-02 | 2025-04-08 |  |  |
| C-FDN-A13(ABCD)-1090 |  | Pour 2 - South Half | 1d | 2025-03-24 A | 2025-03-24 A | C-FDN-A13(ABCD)-1060, C-FDN-A13(ABCD)-1080 FF | 100% | 2025-04-08 | 2025-04-08 |  |  |
| C-FDN-A14-1050 |  | Curing Time and Strip Form | 3d | 2025-05-05 A | 2025-05-05 A | X-LP-1020 | 100% | 2025-05-26 | 2025-05-28 |  |  |

| ID | WBS | Activity | Duration | Start | Finish | Predecessors | Complete | Planned start | Planned finish |
| --- | --- | --- | --- | --- | --- | --- | --- | --- | --- |
|  | 6 | **Area-14 Leisure Pool Raft Slab - 450 Thick** |  | 2025-03-27 | 2025-06-17 |  |  |  |  |
| C-FDN-A14-1000 |  | Trenching mechanical | 2d | 2025-03-27 A | 2025-03-28 A | C-FDN-A13(ABCD)-1070 | 100% | 2025-04-02 | 2025-04-03 |
| C-FDN-A14-1010 |  | Pool Mechanical Piping and Main Drain (P4/ PC-PE) | 7d | 2025-04-04 A | 2025-04-11 A | P-PRO-820, C-FDN-A14-1000 | 100% | 2025-04-04 | 2025-04-14 |
| C-FDN-A14-1020 |  | Trenching weeping tile | 2d | 2025-04-14 A | 2025-04-16 A | C-FDN-A13(ABCD)-1070, C-FDN-A13(ABCD)-1080 | 100% | 2025-04-09 | 2025-04-10 |
| C-FDN-A14-1040 |  | Trench back fill | 1d | 2025-04-28 A | 2025-04-28 A | C-FDN-A14-1010, IPP-QAQC-195, X-LP-1000 | 100% | 2025-02-18 | 2025-02-18 |
| C-FDN-A14-1060 |  | 300mm Washed Rock Install | 2d | 2025-05-15 A | 2025-05-25 A | C-FDN-A14-1040, C-FDN-A12B-1040, C-FDN-A13(ABCD)-1070, C-FDN-A14-1000, C-FDN-A14-1020, C-FDN-A13(ABCD)-1080, C-FDN-A13(ABCD)-1090, X-LP-1020, C-FDN-A14-1050 | 100% | 2025-05-26 | 2025-05-27 |
| C-FDN-A14-1070 |  | Rebar | 3d | 2025-05-26 A | 2025-05-28 A | C-FDN-A14-1060 | 100% | 2025-05-30 | 2025-06-03 |
| C-FDN-A14-1080 |  | Bonding and Dialog Inspection | 2d | 2025-05-30 A | 2025-06-02 A | C-FDN-A14-1070 | 100% | 2025-06-04 | 2025-06-05 |
| C-FDN-A14-1090 |  | Pour and Finish | 5d | 2025-06-04 A | 2025-06-17 A | C-FDN-A14-1070, C-FDN-A14-1080 | 100% | 2025-06-05 | 2025-06-11 |
|  | 5 | **Area-15 Lazy River- WaterSlide C2 Thickening** |  | 2025-06-20 | 2025-07-19 |  |  |  |  |
| C-FDN-A15-1010 |  | Rebar and Inspection | 2d | 2025-06-20 A | 2025-06-24 A | C-FDN-A14-1090 | 100% | 2025-07-03 | 2025-07-04 |
| C-FDN-A15-1000 |  | Formwork | 5d | 2025-07-02 A | 2025-07-05 A | C-FDN-A13(ABCD)-1070, C-FDN-A13(ABCD)-1080, C-FDN-A13(ABCD)-1090, C-FDN-A14-1090 FS+2d, C-FDN-A15-1010 | 100% | 2025-06-26 | 2025-07-03 |
| C-FDN-A15-1060 |  | WaterSlide Anchor Install | 5d | 2025-07-04 A | 2025-07-04 A | C-FDN-A15-1000 | 100% | 2025-07-09 | 2025-07-15 |
| C-FDN-A15-1070 |  | Bonding | 5d | 2025-07-04 A | 2025-07-04 A | C-FDN-A15-1060 | 100% | 2025-07-09 | 2025-07-15 |
| C-FDN-A15-1030 |  | Pour | 1d | 2025-07-10 A | 2025-07-10 A | C-FDN-A15-1000 FS+1d, C-FDN-A15-1060, X-A15-1000, X-A15-1010 FS+1d | 100% | 2025-07-29 | 2025-07-29 |
| C-FDN-A15-1050 |  | Cure | 3d | 2025-07-11 A | 2025-07-15 A | C-FDN-A15-1030 | 100% | 2025-07-30 | 2025-08-01 |
| C-FDN-A15-1040 |  | Strip | 2d | 2025-07-16 A | 2025-07-19 A | C-FDN-A15-1050 | 100% | 2025-07-29 | 2025-07-30 |
|  | 7 | **UNDERGROUND PIPING & EARTHWORKS** |  | 2025-05-22 | 2025-11-24 |  |  |  |  |
| C-FDN-NN-1050 |  | Leisure Pool Surge Tank Bushing Install | 5d | 2025-05-22 A | 2025-05-22 A |  | 100% | 2025-05-30 | 2025-06-05 |
| C-FDN-NN-1060 |  | Waterslide Drain Piping - Surge Tank to Last 45 | 1d | 2025-05-23 A | 2025-05-28 A |  | 100% | 2025-06-17 | 2025-06-17 |
| C-FDN-NN-1090 |  | Leisure Pool Gutter Piping - Surge Tank to Leisure Pool East | 2d | 2025-05-23 A | 2025-05-28 A | C-FDN-NN-1060, C-FDN-NN-1050 | 100% | 2025-06-18 | 2025-06-19 |
| C-FDN-NN-1010 |  | Core Missing Holes into North Basement Wall | 2d | 2025-06-03 A | 2025-06-05 A |  | 100% | 2025-06-05 | 2025-06-06 |
| C-FDN-NN-1070 |  | Fillcrete- Encase Water Slide Drain Piping | 1d | 2025-06-04 A | 2025-06-12 A | C-FDN-NN-1090 | 100% | 2025-06-05 | 2025-06-05 |
| C-FDN-NN-1020 |  | Complete Pool Piping Through North Basement Wall | 2d | 2025-06-05 A | 2025-06-06 A | C-FDN-NN-1010 | 100% | 2025-06-19 | 2025-06-20 |
| C-FDN-NN-1030 |  | Backfill NW Corner of Basement | 4d | 2025-06-09 A | 2025-06-19 A | C-FDN-NN-1020 | 100% | 2025-06-17 | 2025-06-20 |
| C-FDN-NN-1100 |  | Waterslide Inlet Piping - Leisure Pool to Waterslide | 2d | 2025-06-10 A | 2025-06-11 A | X-PIP-1000 | 100% | 2025-06-26 | 2025-06-27 |
| C-FDN-NN-1040 |  | Sanitary Line from S1A to Mechanical Room | 4d | 2025-06-17 A | 2025-06-19 A | C-FDN-NN-1020, C-FDN-NN-1030 | 100% | 2025-06-19 | 2025-06-24 |
| C-FDN-NN-1110 |  | Backfill Gutter and Inlet Trenches to U/S of Sanitary Piping | 2d | 2025-06-18 A | 2025-06-19 A | C-FDN-NN-1100 | 100% | 2025-07-02 | 2025-07-03 |
| C-FDN-NN-1680 |  | Formwork Close | 2d | 2025-10-12 A | 2025-10-17 A | C-FDN-NN-1660 | 100% | 2025-10-14 | 2025-10-15 |
| C-FDN-NN-1660 |  | Inside Gutter Formwork | 2d | 2025-10-16 A | 2025-10-17 A |  | 100% | 2025-10-10 | 2025-10-14 |
| C-FDN-NN-1690 |  | Pour | 1d | 2025-10-18 A | 2025-10-18 A | C-FDN-NN-1680 | 100% | 2025-10-21 | 2025-10-21 |
| C-FDN-NN-1700 |  | Grinding and Patching | 5d | 2025-10-19 A | 2025-11-24 A | C-FDN-NN-1660, C-FDN-NN-1680, C-FDN-NN-1690 | 100% | 2025-10-10 | 2025-10-17 |

Notes:
- C-FDN-A14-1010: Comment: MN increase to 20 but we have to confirm with them as we devide this activity into 2

| ID | WBS | Activity | Duration | Start | Finish | Predecessors | Complete | Planned start | Planned finish |
| --- | --- | --- | --- | --- | --- | --- | --- | --- | --- |
|  | 5 | **Pool Piping** |  | 2025-06-28 | 2025-07-22 |  |  |  |  |
| C-FDN-NN-1500 |  | Trench for Pool Piping from Family Hot Tub to Basement | 2d | 2025-06-28 A | 2025-07-16 A |  | 100% | 2025-08-12 | 2025-08-13 |
| C-FDN-NN-1510 |  | Pool Piping from Family Tub to Basement | 4d | 2025-06-29 A | 2025-07-15 A | C-FDN-NN-1500 | 100% | 2025-08-14 | 2025-08-19 |
| C-FDN-NN-1520 |  | Fillcrete - Encase Pool Piping from Family Hot Tub to Basement | 1d | 2025-07-02 A | 2025-07-16 A | C-FDN-NN-1510 | 100% | 2025-08-20 | 2025-08-20 |
| C-FDN-NN-1530 |  | Backfill to U/S Main Sanitary Line Between Lap and Leisure Pools | 1d | 2025-07-17 A | 2025-07-17 A | C-FDN-NN-1520 | 100% | 2025-08-12 | 2025-08-12 |
| C-FDN-NN-1540 |  | Main Sanitary Line Between Lap and Leisure Pools | 3d | 2025-07-18 A | 2025-07-21 A | C-FDN-NN-1530 | 100% | 2025-08-13 | 2025-08-15 |
| C-FDN-NN-1550 |  | Sanitary Line Trench Backfill to U/S of SOG Prep | 1d | 2025-07-22 A | 2025-07-22 A | C-FDN-NN-1540, C-FDN-NN-1040 | 100% | 2025-08-18 | 2025-08-18 |
|  | 1 | **WATERSLIDE SUMP** |  | 2025-06-20 | 2025-07-15 |  |  |  |  |
| C-FDN-NN-1120 |  | Excavate for Waterslide Sump | 2d | 2025-06-20 A | 2025-06-22 A | C-FDN-NN-1030 SS+2d, X-PIP-1000 | 100% | 2025-06-26 | 2025-06-27 |
| C-FDN-NN-1560 |  | Mud Slab | 1d | 2025-06-23 A | 2025-06-23 A | C-FDN-NN-1120 | 100% | 2025-07-02 | 2025-07-02 |
|  | 1 | **Raft Slab** |  | 2025-06-23 | 2025-06-27 |  |  |  |  |
| C-FDN-NN-1130 |  | Waterslide Sump Raft Slab - Forming | 1d | 2025-06-23 A | 2025-06-23 A | C-FDN-NN-1120, C-FDN-NN-1560 | 100% | 2025-06-26 | 2025-06-26 |
| C-FDN-NN-1140 |  | Waterslide Sump Raft Slab - Rebar | 2d | 2025-06-25 A | 2025-06-25 A | C-FDN-NN-1130 | 100% | 2025-07-09 | 2025-07-10 |
| C-FDN-NN-1160 |  | Waterslide Sump Raft Slab - Pour and Finish | 1d | 2025-06-27 A | 2025-06-27 A | C-FDN-NN-1140 | 100% | 2025-07-11 | 2025-07-11 |
|  | 2 | **Walls** |  | 2025-07-02 | 2025-07-15 |  |  |  |  |
| C-FDN-NN-1170 |  | Waterslide Sump Walls - Forming | 1d | 2025-07-02 A | 2025-07-03 A | C-FDN-NN-1160 | 100% | 2025-07-15 | 2025-07-15 |
| C-FDN-NN-1180 |  | Waterslide Sump Walls - Rebar | 1d | 2025-07-03 A | 2025-07-04 A | C-FDN-NN-1170 | 100% | 2025-07-10 | 2025-07-10 |
| C-FDN-NN-1190 |  | Waterslide Sump Walls - Inspection | 1d | 2025-07-07 A | 2025-07-07 A | C-FDN-NN-1180 | 100% | 2025-07-11 | 2025-07-11 |
| C-FDN-NN-1200 |  | Waterslide Sump Walls - Formwork Close | 1d | 2025-07-08 A | 2025-07-08 A | C-FDN-NN-1190 | 100% | 2025-07-14 | 2025-07-14 |
| C-FDN-NN-1210 |  | Waterslide Sump Walls - Pour | 1d | 2025-07-09 A | 2025-07-09 A | C-FDN-NN-1200 | 100% | 2025-07-15 | 2025-07-15 |
| C-FDN-NN-1640 |  | Cure | 3d | 2025-07-10 A | 2025-07-10 A | C-FDN-NN-1210 | 100% | 2025-07-29 | 2025-07-31 |
| C-FDN-NN-1220 |  | Backfill Around Waterslide Sump | 1d | 2025-07-15 A | 2025-07-15 A | C-FDN-NN-1640, C-FDN-NN-1110 | 100% | 2025-08-01 | 2025-08-01 |
|  | 2 | **FAMILY WHIRLPOOL** |  | 2025-06-21 | 2025-11-10 |  |  |  |  |
|  | 2 | **Main Drain** |  | 2025-06-21 | 2025-06-27 |  |  |  |  |
| C-FDN-NN-1230 |  | Excavate for Family WP (if required) | 2d | 2025-06-21 A | 2025-06-21 A | C-FDN-NN-1120 | 100% | 2025-06-26 | 2025-06-27 |
| C-FDN-NN-1240 |  | Main Drain Sump Setting | 1d | 2025-06-22 A | 2025-06-23 A | C-FDN-NN-1230 | 100% | 2025-07-02 | 2025-07-02 |
| C-FDN-NN-1250 |  | Main Drain Sump Base Form and Pour | 1d | 2025-06-23 A | 2025-06-23 A | C-FDN-NN-1240 | 100% | 2025-06-26 | 2025-06-26 |
| C-FDN-NN-1260 |  | Main Drain Piping | 3d | 2025-06-25 A | 2025-06-27 A | C-FDN-NN-1250 SS, C-FDN-NN-1240 FF | 100% | 2025-07-09 | 2025-07-11 |

| ID | WBS | Activity | Duration | Start | Finish | Predecessors | Complete | Planned start | Planned finish | #User-Text_01 |
| --- | --- | --- | --- | --- | --- | --- | --- | --- | --- | --- |
|  | 3 | **Raft Slab** |  | 2025-07-07 | 2025-07-31 |  |  |  |  |  |
| C-FDN-NN-1570 |  | Inlet Piping | 5d | 2025-07-07 A | 2025-07-08 A |  | 100% | 2025-07-09 | 2025-07-15 |  |
| C-FDN-NN-1280 |  | Raft Slab - Forming | 1d | 2025-07-07 A | 2025-07-18 A | C-FDN-NN-1260, X-FW-1000, C-FDN-NN-1580 SS | 100% | 2025-07-15 | 2025-07-15 |  |
| C-FDN-NN-1580 |  | Raft Slab Prep | 5d | 2025-07-09 A | 2025-07-09 A | C-FDN-NN-1570 | 100% | 2025-07-09 | 2025-07-15 |  |
| C-FDN-NN-1290 |  | Raft Slab - Rebar | 2d | 2025-07-19 A | 2025-07-29 A | C-FDN-NN-1280, X-FW-1010, X-FW-1020 | 100% | 2025-07-16 | 2025-07-17 |  |
| C-FDN-NN-1300 |  | Raft Slab - Rebar Inspection | 1d | 2025-07-30 A | 2025-07-30 A | C-FDN-NN-1290 | 100% |  |  |  |
| C-FDN-NN-1310 |  | Raft Slab - Pour | 1d | 2025-07-31 A | 2025-07-31 A | C-FDN-NN-1300 | 100% |  |  |  |
|  | 4 | **Wall & Bench** |  | 2025-08-05 | 2025-10-18 |  |  |  |  |  |
| C-FDN-NN-1320 |  | Wall & Bench - Inside Forming | 2d | 2025-08-05 A | 2025-08-06 A | C-FDN-NN-1310 | 100% |  |  |  |
| C-FDN-NN-1340 |  | Wall & Bench - Pipe Penetrations | 4d | 2025-08-05 A | 2025-08-12 A | C-FDN-NN-1330 | 100% | 2025-08-11 | 2025-08-14 | TBC |
| C-FDN-NN-1330 |  | Wall & Bench - Rebar (Inside Half) | 2d | 2025-08-13 A | 2025-08-13 A | C-FDN-NN-1320 | 100% | 2025-08-07 | 2025-08-08 | TBC |
| C-FDN-NN-1350 |  | Wall & Bench - Rebar (Outside Half) | 2d | 2025-08-13 A | 2025-08-13 A | C-FDN-NN-1340 | 100% | 2025-08-13 | 2025-08-14 | TBC |
| C-FDN-NN-1360 |  | Wall & Bench - Rebar Inspection | 1d | 2025-08-13 A | 2025-08-13 A | C-FDN-NN-1350 | 100% | 2025-08-19 | 2025-08-19 |  |
| C-FDN-NN-1380 |  | Wall & Bench - Formwork Close | 2d | 2025-08-14 A | 2025-08-28 A | C-FDN-NN-1360 SS, X-A10-1030 FF | 100% | 2025-08-18 | 2025-08-19 |  |
| C-FDN-NN-1370 |  | Wall & Bench - Bonding Study | 1d | 2025-09-12 A | 2025-09-12 A | C-FDN-NN-1360 | 100% |  |  |  |
| C-FDN-NN-1390 |  | Wall & Bench - Pour | 1d | 2025-09-25 A | 2025-10-08 A | C-FDN-NN-1380, C-FDN-NN-1370 | 100% | 2025-09-15 | 2025-09-15 |  |
| C-FDN-NN-1490 |  | Curing | 3d | 2025-10-09 A | 2025-10-14 A | C-FDN-NN-1390 | 100% | 2025-09-26 | 2025-09-30 |  |
| C-FDN-NN-1400 |  | Wall & Bench - Formwork Strip | 2d | 2025-10-15 A | 2025-10-18 A | C-FDN-NN-1390, C-FDN-NN-1490 | 100% | 2025-10-15 | 2025-10-16 |  |
|  | 6 | **Stair** |  | 2025-10-28 | 2025-11-10 |  |  |  |  |  |
| C-FDN-NN-1410 |  | Stair & Top of Wall - Forming | 2d | 2025-10-28 A | 2025-10-29 A | C-FDN-NN-1400 | 100% |  |  |  |
| C-FDN-NN-1430 |  | Stair & Top of Wall - Rebar | 2d | 2025-10-30 A | 2025-10-31 A | C-FDN-NN-1410 | 100% |  |  |  |
| C-FDN-NN-1440 |  | Stair & Top of Wall - Rebar Inspection | 1d | 2025-11-03 A | 2025-11-03 A | C-FDN-NN-1430 | 100% |  |  |  |
| C-FDN-NN-1450 |  | Stair & Top of Wall - Bonding for Railings | 1d | 2025-11-06 A | 2025-11-06 A | C-FDN-NN-1440 FF | 100% | 2025-11-03 | 2025-11-03 |  |
| C-FDN-NN-1460 |  | Stair & Top of Wall - Formwork Close | 2d | 2025-11-07 A | 2025-11-07 A | C-FDN-NN-1450 | 100% | 2025-11-04 | 2025-11-05 |  |
| C-FDN-NN-1470 |  | Stair & Top of Wall - Pour | 1d | 2025-11-08 A | 2025-11-08 A | C-FDN-NN-1460 | 100% | 2025-11-07 | 2025-11-07 |  |
| C-FDN-NN-1650 |  | Cure | 3d | 2025-11-09 A | 2025-11-09 A | C-FDN-NN-1470 | 100% | 2025-11-10 | 2025-11-12 |  |
| C-FDN-NN-1480 |  | Stair & Top of Wall - Formwork Strip | 1d | 2025-11-10 A | 2025-11-10 A | C-FDN-NN-1650 | 100% | 2025-11-11 | 2025-11-11 |  |

| ID | WBS | Activity | Duration | Start | Finish | Predecessors | Complete | Planned start | Planned finish | #User-Text_01 |
| --- | --- | --- | --- | --- | --- | --- | --- | --- | --- | --- |
|  | 1 | **SLAB ON GRADE- SOG S6/S2A** |  | 2025-07-15 | 2025-09-19 |  |  |  |  |  |
| C-FDN-NN-S6/S2A-1010 |  | Granular Slab Prep | 5d | 2025-07-15 A | 2025-07-19 A | C-FDN-NN-1220 FF | 100% | 2025-08-05 | 2025-08-11 |  |
| C-FDN-NN-S6/S2A-1020 |  | Vapour Barrier | 3d | 2025-07-20 A | 2025-07-21 A | C-FDN-NN-S6/S2A-1010 | 100% | 2025-08-07 | 2025-08-11 |  |
| C-FDN-NN-S6/S2A-1040 |  | Inslab Electrical | 1d | 2025-07-23 A | 2025-07-23 A | C-FDN-NN-S6/S2A-1020 | 100% | 2025-08-05 | 2025-08-05 |  |
| C-FDN-NN-S6/S2A-1030 |  | Rebar | 4d | 2025-07-28 A | 2025-08-07 A | C-FDN-NN-S6/S2A-1020 | 100% | 2025-08-05 | 2025-08-08 |  |
| C-FDN-NN-S6/S2A-1070 |  | Edgeform and Trench Drain Blockouts | 4d | 2025-08-09 A | 2025-09-11 A | C-FDN-NN-S6/S2A-1030 | 100% | 2025-08-21 | 2025-08-26 |  |
| C-FDN-NN-S6/S2A-1090 |  | Rebar Elevation Correction | 2d | 2025-08-11 A | 2025-08-12 A | C-FDN-NN-S6/S2A-1070 SS | 100% |  |  |  |
| C-FDN-NN-S6/S2A-1050 |  | Rebar Inspection | 1d | 2025-08-13 A | 2025-08-13 A | C-FDN-NN-S6/S2A-1030, C-FDN-NN-S6/S2A-1040 | 100% | 2025-08-15 | 2025-08-15 | TBC |
| C-FDN-NN-S6/S2A-1100 |  | Wedge Anchor and Anchor Bolts Install | 5d | 2025-08-13 A | 2025-08-13 A | C-FDN-NN-S6/S2A-1090 FF | 100% | 2025-08-15 | 2025-08-21 | TBC |
| C-FDN-NN-S6/S2A-1110 |  | Bonding | 5d | 2025-08-14 A | 2025-08-14 A | C-FDN-NN-S6/S2A-1090, C-FDN-NN-S6/S2A-1100 | 100% | 2025-08-15 | 2025-08-21 | TBC |
| C-FDN-NN-S6/S2A-1080 |  | Pour | 1d | 2025-09-12 A | 2025-09-12 A | C-FDN-NN-S6/S2A-1070, C-FDN-NN-S6/S2A-1110, C-FDN-NN-S6/S2A-1050 | 100% | 2025-09-26 | 2025-09-26 |  |
| C-FDN-NN-S6/S2A-1060 |  | Bonding Study above grade | 1d | 2025-09-19 A | 2025-09-19 A | C-FDN-NN-S6/S2A-1050, C-FDN-NN-S6/S2A-1080 FS+4d | 100% |  |  |  |
|  | 11 | **Area-9 South Gradebeam** |  | 2024-11-03 | 2025-01-28 |  |  |  |  |  |
| C-FDN-A9-1000 |  | Detailed Excavation | 1d | 2024-11-03 A | 2024-11-03 A | C-FDN-A20-1030 | 100% | 2024-10-23 | 2024-10-23 |  |
| C-FDN-A9-1010 |  | Scaffolding | 2d | 2024-11-06 A | 2024-11-19 A | C-FDN-A9-1000 | 100% | 2024-10-24 | 2024-10-25 |  |
| C-FDN-A9-1020 |  | Outside Forms | 2d | 2024-11-09 A | 2024-11-20 A | C-FDN-A9-1000 SS, C-FDN-A9-1010 SS, C-FDN-A9-1010 FF | 100% | 2024-11-11 | 2024-11-12 |  |
| C-FDN-A9-1030 |  | Rebar | 2d | 2024-11-14 A | 2024-11-21 A | C-FDN-A9-1020 SS, C-FDN-A9-1020 FF, C-FDN-A6-1060 | 100% | 2024-11-13 | 2024-11-14 |  |
| C-FDN-A9-1040 |  | Inspection | 1d | 2024-11-22 A | 2024-11-22 A | C-FDN-A9-1030 | 100% |  |  |  |
| C-FDN-A9-1050 |  | Inside Forms and Embeds | 1d | 2024-11-25 A | 2024-11-25 A | C-FDN-A9-1040 | 100% |  |  |  |
| C-FDN-A9-1060 |  | Concrete Pour | 1d | 2024-11-25 A | 2024-11-25 A | C-FDN-A9-1050 FF | 100% |  |  |  |
| C-FDN-A9-1070 |  | Strip | 1d | 2024-11-27 A | 2024-11-27 A | C-FDN-A9-1060 FS+1d | 100% |  |  |  |
| C-FDN-A9-1080 |  | Waterproofing | 2d | 2025-01-27 A | 2025-01-28 A | C-FDN-A9-1070, C-FDN-A9-1060 FS+10d, C-SS-PH3-1110, C-FDN-PH3-1000 SS, C-FDN-PH3-1010 | 100% |  |  |  |
|  | 14 | **Area-10A South Gradebeam** |  | 2024-11-01 | 2025-09-09 |  |  |  |  |  |
| C-FDN-A10A-1000 |  | Detailed Excavation | 1d | 2024-11-01 A | 2024-11-04 A | C-FDN-A9-1000 | 100% | 2024-10-18 | 2024-10-18 |  |
| C-FDN-A10A-1010 |  | Outside Forms | 2d | 2024-11-06 A | 2024-11-11 A | C-FDN-A10A-1000, C-FDN-A9-1020 | 100% | 2024-11-06 | 2024-11-07 |  |
| C-FDN-A10A-1020 |  | Rebar | 2d | 2024-11-11 A | 2024-11-14 A | C-FDN-A10A-1010 | 100% | 2024-11-20 | 2024-11-21 |  |
| C-FDN-A10A-1030 |  | Inspection | 1d | 2024-11-14 A | 2024-11-14 A | C-FDN-A10A-1020 | 100% | 2024-11-22 | 2024-11-22 |  |
| C-FDN-A10A-1040 |  | Inside Forms and Embeds | 1d | 2024-11-15 A | 2024-11-15 A | C-FDN-A10A-1030 | 100% | 2024-11-25 | 2024-11-25 |  |
| C-FDN-A10A-1050 |  | Concrete Pour | 1d | 2024-11-15 A | 2024-11-15 A | C-FDN-A10A-1040 FF | 100% | 2024-11-19 | 2024-11-19 |  |
| C-FDN-A10A-1060 |  | Strip | 1d | 2024-11-19 A | 2024-11-19 A | C-FDN-A10A-1050 FF | 100% |  |  |  |
| C-FDN-A10A-1070 |  | Waterproofing | 2d | 2025-09-08 A | 2025-09-09 A | C-FDN-A10A-1060, C-FDN-A10A-1050 FS+10d | 100% | 2025-09-12 | 2025-09-15 |  |

| ID | WBS | Activity | Duration | Start | Finish | Predecessors | Complete | Planned start | Planned finish |
| --- | --- | --- | --- | --- | --- | --- | --- | --- | --- |
|  | 12 | **Area-10B South Gradebeam** |  | 2024-12-04 | 2025-10-10 |  |  |  |  |
| C-FDN-A10B-1000 |  | Detailed Excavation | 1d | 2024-12-04 A | 2024-12-04 A | C-FDN-A9-1000 FF, C-FDN-A20-1030, C-FDN-A7A-1040 | 100% |  |  |
| C-FDN-A10B-1010 |  | Outside Forms | 1d | 2024-12-05 A | 2024-12-05 A | C-FDN-A10B-1000 SS+1d | 100% |  |  |
| C-FDN-A10B-1020 |  | Rebar | 3d | 2024-12-06 A | 2024-12-10 A | C-FDN-A10B-1010 | 100% |  |  |
| C-FDN-A10B-1030 |  | Inspection | 1d | 2024-12-11 A | 2024-12-11 A | C-FDN-A10B-1020 | 100% |  |  |
| C-FDN-A10B-1040 |  | Inside Forms and Embeds | 1d | 2024-12-12 A | 2024-12-12 A | C-FDN-A10B-1030 | 100% |  |  |
| C-FDN-A10B-1050 |  | Concrete Pour | 1d | 2024-12-12 A | 2024-12-12 A | C-FDN-A10B-1040 FF | 100% |  |  |
| C-FDN-A10B-1060 |  | Strip | 2d | 2024-12-17 A | 2024-12-18 A | C-FDN-A10B-1050 FS+2d | 100% |  |  |
| C-FDN-A10B-1130 |  | Formwork | 5d | 2025-06-21 A | 2025-06-22 A | X-A10-1010 | 100% | 2025-06-26 | 2025-07-03 |
| C-FDN-A10B-1140 |  | Rebar | 5d | 2025-06-23 A | 2025-06-26 A | C-FDN-A10B-1130, X-RS-1000 | 100% | 2025-07-04 | 2025-07-10 |
| C-FDN-A10B-1080 |  | Pour | 1d | 2025-07-03 A | 2025-07-03 A | C-FDN-A10B-1050, C-FDN-A10B-1140, X-A10-1020 | 100% | 2025-07-10 | 2025-07-10 |
| C-FDN-A10B-1110 |  | Cure | 1d | 2025-07-04 A | 2025-07-07 A | C-FDN-A10B-1080 | 100% | 2025-07-10 | 2025-07-10 |
| C-FDN-A10B-1100 |  | Strip | 1d | 2025-07-08 A | 2025-07-08 A | C-FDN-A10B-1110 FF | 100% | 2025-07-10 | 2025-07-10 |
| C-FDN-A10B-1070 |  | Waterproofing | 1d | 2025-07-09 A | 2025-07-09 A | C-FDN-A10B-1060, C-FDN-A9-1070, P-PRO-149, C-FDN-A9-1080, C-FDN-A10B-1050 FS+10d, C-FDN-A5-1090, C-FDN-A10B-1100 | 100% | 2025-07-10 | 2025-07-10 |
| C-FDN-A10B-1090 |  | Backfilling Southgrade beam | 5d | 2025-10-06 A | 2025-10-10 A | C-FDN-A10B-1060, C-FDN-A9-1070, C-FDN-A10B-1070, C-FDN-A7A-1040, C-FDN-A5-1080, C-FDN-A5-1090, C-FDN-ACB-1160 FF | 100% |  |  |
|  | 6 | **Area-11 ELEVATOR PIT** |  | 2024-08-16 | 2025-04-14 |  |  |  |  |
| C-FDN-A11-1000 |  | Stock Pile Removal | 2d | 2024-08-16 A | 2024-08-19 A | C-FDN-A11-1010 | 100% |  |  |
| C-FDN-A11-1010 |  | Pile 43 Remediation | 1d | 2024-08-20 A | 2024-08-23 A | P-TEA-4 | 100% | 2024-08-15 | 2024-08-15 |
| C-FDN-A11-1020 |  | Detailed Excavation | 2d | 2024-08-26 A | 2024-08-27 A | C-FDN-A11-1000, C-FDN-A11-1010 FF | 100% |  |  |
| C-FDN-A11-1030 |  | Formwork | 4d | 2024-08-28 A | 2024-09-03 A | C-FDN-A11-1020 | 100% |  |  |
| C-FDN-A11-1040 |  | Rebar | 4d | 2024-09-04 A | 2024-09-09 A | C-FDN-A11-1030 | 100% |  |  |
| C-FDN-A11-1050 |  | Pour | 1d | 2024-09-17 A | 2024-09-17 A | C-FDN-A11-1040 | 100% | 2024-09-10 | 2024-09-10 |
| C-FDN-A11-1060 |  | Waterproofing | 10d | 2024-10-08 A | 2024-10-16 A | C-FDN-A11-1050, P-PRO-149 | 100% | 2024-10-15 | 2024-10-28 |
| C-FDN-A11-1070 |  | Ground Thaw, Sump-Pit & Piping and Test | 5d | 2025-02-13 A | 2025-02-20 A | C-FDN-A11-1090 SS | 100% |  |  |
| C-FDN-A11-1080 |  | Backfilling | 2d | 2025-02-21 A | 2025-02-24 A | C-FDN-A11-1060, C-FDN-A11-1090, C-FDN-A11-1070 | 100% |  |  |
| C-FDN-A11-1090 |  | Install of Elevator Sump-Pit | 3d | 2025-04-10 A | 2025-04-14 A | C-FDN-A11-1060, C-FDN-A20-1130, C-SS-PH2-1060, C-SS-PH2-1100, C-FDN-PH1-1010 SS | 100% | 2025-02-10 | 2025-02-12 |

Notes:
- C-FDN-A11-1060: Comments: linked with the installation of steel structureph-1 as we need to finish most of the work before the winter
- C-FDN-A11-1070: Comments: AFTER DIALOG APPROVE THE MATERIAL BY 21 ST OCT 1 DAYS FOR DELIVERY
- C-FDN-A11-1090: Comments: AFTER DIALOG APPROVE THE MATERIAL BY 21 ST OCT 1 DAYS FOR DELIVERY

| ID | WBS | Activity | Duration | Start | Finish | Predecessors | Complete | Planned start | Planned finish | #User-Text_01 |
| --- | --- | --- | --- | --- | --- | --- | --- | --- | --- | --- |
|  | 9 | **Area-18 - Out Door Hot Slab & Walls** |  | 2024-11-01 | 2025-12-01 |  |  |  |  |  |
| C-FDN-A18-1000 |  | Piling | 1d | 2024-11-01 A | 2024-11-01 A | C-FDN-1020 FF, C-FDN-A20-1040 FF, C-FDN-A20-1040 | 100% |  |  |  |
|  | 1 | **Main Drain** |  | 2025-07-15 | 2025-07-24 |  |  |  |  |  |
| C-FDN-A18-1320 |  | Main Drain Sump Base Form and Pour | 1d | 2025-07-15 A | 2025-07-15 A | C-FDN-SN-UG-1120 | 100% | 2025-07-29 | 2025-07-29 |  |
| C-FDN-A18-1330 |  | Main Drain Sump Setting | 2d | 2025-07-16 A | 2025-07-16 A | C-FDN-SN-UG-1100, C-FDN-A18-1320 | 100% | 2025-07-30 | 2025-07-31 |  |
| C-FDN-A18-1310 |  | Main Drain Piping | 5d | 2025-07-17 A | 2025-07-22 A | C-FDN-A18-1330 | 100% | 2025-08-01 | 2025-08-08 |  |
| C-FDN-A18-1300 |  | Fillcrete - Encase Main Drain Piping | 1d | 2025-07-23 A | 2025-07-24 A | C-FDN-A18-1310, C-FDN-A18-1350 | 100% | 2025-08-11 | 2025-08-11 |  |
| C-FDN-A18-1350 |  | Insulation | 5d | 2025-07-23 A | 2025-07-24 A | C-FDN-A18-1310 | 100% | 2025-07-29 | 2025-08-05 |  |
|  | 2 | **Raft Slab** |  | 2025-07-28 | 2025-09-11 |  |  |  |  |  |
| C-FDN-A18-1290 |  | Slab - Forming and Modifications | 2d | 2025-07-28 A | 2025-09-10 A | C-FDN-A18-1300, C-FDN-A18-1360 FF+2d | 100% | 2025-07-29 | 2025-07-30 |  |
| C-FDN-A18-1280 |  | Slab - Rebar | 2d | 2025-08-06 A | 2025-08-10 A | C-FDN-A18-1290 SS | 100% | 2025-08-15 | 2025-08-18 |  |
| C-FDN-A18-1360 |  | Procurement of Water Stop Material (Arctic grade) | 5d | 2025-08-11 A | 2025-09-10 A |  | 100% | 2025-08-15 | 2025-08-21 | Delay Event added |
| C-FDN-A18-1270 |  | Slab - Rebar Inspection | 1d | 2025-08-13 A | 2025-08-13 A | C-FDN-A18-1280 | 100% | 2025-09-05 | 2025-09-05 | TBC |
| C-FDN-A18-1260 |  | Slab - Pour | 1d | 2025-09-11 A | 2025-09-11 A | C-FDN-A18-1270, C-FDN-A18-1290 | 100% | 2025-09-16 | 2025-09-16 |  |
|  | 3 | **Bench & Wall** |  | 2025-09-10 | 2025-10-10 |  |  |  |  |  |
| C-FDN-A18-1250 |  | Wall & Bench (Includes Trench) - Inside Forming | 2d | 2025-09-10 A | 2025-09-11 A | C-FDN-A18-1260 | 100% | 2025-09-26 | 2025-09-29 |  |
| C-FDN-A18-1240 |  | Wall & Bench (Includes Trench) - Rebar (Inside Half) | 2d | 2025-09-12 A | 2025-09-13 A | C-FDN-A18-1250 | 100% | 2025-09-30 | 2025-10-01 |  |
| C-FDN-A18-1230 |  | Wall & Bench (Includes Trench) - Pipe Penetrations | 5d | 2025-09-14 A | 2025-09-18 A | C-FDN-A18-1240 | 100% | 2025-10-02 | 2025-10-08 |  |
| C-FDN-A18-1220 |  | Wall & Bench (Includes Trench)- Rebar (Outside Half) | 2d | 2025-09-19 A | 2025-09-20 A | C-FDN-A18-1230 | 100% | 2025-10-09 | 2025-10-10 |  |
| C-FDN-A18-1210 |  | Wall & Bench (Includes Trench) - Rebar Inspection | 1d | 2025-09-21 A | 2025-09-21 A | C-FDN-A18-1220 | 100% | 2025-10-14 | 2025-10-14 |  |
| C-FDN-A18-1200 |  | Wall & Bench (Includes Trench)- Bonding Study | 2d | 2025-09-22 A | 2025-09-23 A | C-FDN-A18-1210 | 100% | 2025-10-15 | 2025-10-16 |  |
| C-FDN-A18-1190 |  | Wall & Bench (Includes Trench) - Formwork Close | 2d | 2025-09-24 A | 2025-09-25 A | C-FDN-A18-1200 | 100% | 2025-10-17 | 2025-10-20 |  |
| C-FDN-A18-1180 |  | Wall & Bench (Includes Trench) - Pour | 3d | 2025-10-06 A | 2025-10-06 A | C-FDN-A18-1190 | 100% | 2025-09-26 | 2025-09-30 |  |
| C-FDN-A18-1160 |  | Backfill Around Outdoor WP and Complete to U/S of SOG Prep | 1d | 2025-10-08 A | 2025-10-10 A | C-FDN-A18-1170 | 100% | 2025-09-29 | 2025-09-29 |  |
| C-FDN-A18-1170 |  | Wall & Bench (Includes Trench) - Formwork Strip | 1d | 2025-10-08 A | 2025-10-08 A | C-FDN-A18-1180 | 100% | 2025-09-26 | 2025-09-26 |  |

| ID | WBS | Activity | Duration | Start | Finish | Predecessors | Complete | Planned start | Planned finish | #User-Text_01 | Comment | Area- ID |
| --- | --- | --- | --- | --- | --- | --- | --- | --- | --- | --- | --- | --- |
|  | 4 | **Stair** |  | 2025-11-10 | 2025-12-01 |  |  |  |  |  |  |  |
| C-FDN-A18-1150 |  | Stair - Forming | 1d | 2025-11-10 A | 2025-11-13 A | C-FDN-A18-1170, C-SW-1090 | 100% | 2025-11-21 | 2025-11-21 | Progress |  |  |
| C-FDN-A18-1130 |  | Stair - Rebar | 1d | 2025-11-14 A | 2025-11-14 A | C-FDN-A18-1150 | 100% | 2025-11-24 | 2025-11-24 | Progress |  |  |
| C-FDN-A18-1120 |  | Stair - Rebar Inspection | 1d | 2025-11-17 A | 2025-11-17 A | C-FDN-A18-1130 FF | 100% | 2025-11-24 | 2025-11-24 | Progress |  |  |
| C-FDN-A18-1090 |  | Stair - Pour | 0d | 2025-11-18 A | 2025-11-18 A | C-FDN-A18-1110, C-FDN-A18-1120 | 100% | 2025-11-25 | 2025-11-25 | Progress |  |  |
| C-FDN-A18-1110 |  | Stair - Bonding for Railings | 1d | 2025-11-21 A | 2025-11-21 A | C-FDN-A18-1120 FF-5d, C-FDN-NN-1450 FF | 100% | 2025-12-05 | 2025-12-05 | Progress |  |  |
| C-FDN-A18-1080 |  | Stair - Formwork Strip | 1d | 2025-11-24 A | 2025-11-24 A | C-FDN-A18-1090 | 100% | 2025-12-08 | 2025-12-08 | Progress |  |  |
| C-FDN-A18-1340 |  | Stair- Cure | 4d | 2025-11-25 A | 2025-12-01 A | C-FDN-A18-1080 | 100% | 2025-12-09 | 2025-12-12 | Progress |  |  |
|  | 7 | **CONCRETE SLABS** |  | 2025-02-10 | 2025-10-09 |  |  |  |  |  |  |  |
|  | 1 | **S1 Grey - Slab on Grade S1A** |  | 2025-02-10 | 2025-05-02 |  |  |  |  |  |  |  |
| C-SOG-1000 |  | Ground Thaw | 1d | 2025-02-10 A | 2025-02-10 A | C-FDN-PH1-1000, C-FDN-PH3-1010 | 100% |  |  |  |  |  |
| C-SOG-1010 |  | Weeping tile and Storm line Work | 5d | 2025-02-11 A | 2025-03-25 A | C-SOG-1000 | 100% | 2025-01-10 | 2025-01-16 |  |  |  |
| C-SOG-1020 |  | Mechanical Drainage Installation & Floor Drain Installation | 5d | 2025-03-26 A | 2025-04-04 A | C-SS-PH1-1070, C-SOG-1010 | 100% | 2025-02-11 | 2025-02-18 |  | Check Calendar |  |
| C-SOG-1030 |  | Backfilling | 1d | 2025-04-09 A | 2025-04-09 A | C-SS-PH1-1070, C-SOG-1020, C-FDN-PH1-1010 | 100% | 2025-01-10 | 2025-01-10 |  |  | S-1GR |
| C-SOG-1040 |  | Subgrade Granular | 2d | 2025-04-11 A | 2025-04-14 A | C-FDN-A11-1050, C-SOG-1030, C-FDN-A11-1090, C-FDN-A11-1080 | 100% | 2025-01-13 | 2025-01-14 |  |  | S-1GR |
| C-SOG-1050 |  | Vapour Barrier and Edgeform | 2d | 2025-04-25 A | 2025-04-28 A | C-SOG-1040 FF, C-FDN-A11-1050 | 100% | 2025-01-13 | 2025-01-14 |  |  | S-1GR |
| C-SOG-1060 |  | Rebar | 4d | 2025-04-28 A | 2025-04-30 A | C-SOG-1050, P-PRO-147 SS | 100% | 2025-04-29 | 2025-05-02 |  |  | S-1GR |
| C-SOG-1070 |  | Inspection | 1d | 2025-04-30 A | 2025-04-30 A | C-SOG-1060 | 100% | 2025-05-05 | 2025-05-05 |  |  | S-1GR |
| C-SOG-1080 |  | Pour and Finish | 2d | 2025-04-30 A | 2025-04-30 A | C-SOG-1070, C-SOG-1090 | 100% | 2025-05-07 | 2025-05-08 |  |  | S-1GR |
| C-SOG-1090 |  | Install Electrical | 2d | 2025-04-30 A | 2025-04-30 A | C-SOG-1060 | 100% | 2025-05-05 | 2025-05-06 |  |  | S-1GR |
| C-SOG-1100 |  | Sawcuts | 2d | 2025-05-01 A | 2025-05-02 A | C-SOG-1080 | 100% |  |  |  |  | S-1GR |
|  | 4 | **Slab on Grade S2A/S6 and 250 Thick Slab on Grade** |  |  |  |  |  |  |  |  |  |  |
|  | 5 | **S1 White - Slab on Grade S1C/S1D** |  | 2025-07-28 | 2025-10-09 |  |  |  |  |  |  |  |
| C-SOG-S1C/D-1000 |  | Subgrade Granular | 5d | 2025-07-28 A | 2025-08-13 A | C-FDN-NN-1550 | 100% | 2025-08-18 | 2025-08-22 |  |  | S-1WRD |
| C-SOG-S1C/D-1010 |  | Vapour Barrier | 3d | 2025-08-13 A | 2025-08-15 A | C-SOG-S1C/D-1000 | 100% | 2025-08-15 | 2025-08-19 |  |  | S-1WRD |
| C-SOG-S1C/D-1020 |  | Rebar | 4d | 2025-08-18 A | 2025-09-25 A | C-SOG-S1C/D-1010 | 100% | 2025-08-29 | 2025-09-04 |  |  | S-1WRD |
| C-SOG-S1C/D-1060 |  | Pour and Finish | 1d | 2025-09-19 A | 2025-10-09 A | C-SOG-S1C/D-1040, C-SOG-S1C/D-1050 FF | 100% | 2025-09-19 | 2025-09-19 |  |  | S-1WRD |
| C-SOG-S1C/D-1040 |  | Inspection | 1d | 2025-09-25 A | 2025-09-25 A | C-SOG-S1C/D-1020 | 100% | 2025-09-26 | 2025-09-26 |  |  | S-1WRD |
| C-SOG-S1C/D-1050 |  | EdgeForm- Trench Drain Blockouts | 3d | 2025-10-01 A | 2025-10-08 A | C-SOG-S1C/D-1040 | 100% | 2025-10-10 | 2025-10-15 |  |  | S-1WRD |
| C-SOG-S1C/D-1070 |  | Sawcuts | 1d | 2025-10-09 A | 2025-10-09 A | C-SOG-S1C/D-1060, C-SOG-S1C/D-1050 | 100% | 2025-10-10 | 2025-10-10 |  |  | S-1WRD |

| ID | WBS | Activity | Duration | Start | Finish | Predecessors | Complete | Planned start | Planned finish | Area- ID | #User-Text_01 |
| --- | --- | --- | --- | --- | --- | --- | --- | --- | --- | --- | --- |
|  | 6 | **S1 Grey - Slab on Grade S1B** |  | 2025-08-10 | 2025-09-03 |  |  |  |  |  |  |
| C-SOG-S1B-1000 |  | Subgrade Granular | 2d | 2025-08-10 A | 2025-08-12 A | C-SOG-S1C/D-1000 | 100% | 2025-08-15 | 2025-08-18 | S-1BL |  |
| C-SOG-S1B-1010 |  | Vapour Barrier and Edgeform | 2d | 2025-08-13 A | 2025-08-15 A | C-SOG-S1B-1000 FF | 100% | 2025-08-15 | 2025-08-18 | S-1BL |  |
| C-SOG-S1C/D-1030 |  | Install Electrical | 2d | 2025-08-18 A | 2025-08-19 A | C-SOG-S1B-1010 | 100% | 2025-08-29 | 2025-09-02 |  |  |
| C-SOG-S1B-1020 |  | Rebar | 3d | 2025-08-20 A | 2025-08-22 A | C-SOG-S1B-1010, C-SOG-1080, C-SS-PH3-1110, C-SOG-1100, C-FDN-PH3-1000 SS, C-FDN-PH3-1010, C-SOG-1020, C-SOG-S1C/D-1030 | 100% | 2025-09-03 | 2025-09-05 | S-1BL |  |
| C-SOG-S1B-1030 |  | Inspection | 1d | 2025-08-25 A | 2025-08-25 A | C-SOG-S1B-1020 | 100% | 2025-08-29 | 2025-08-29 | S-1BL |  |
| C-SOG-S1B-1040 |  | Pour and Finish | 2d | 2025-09-02 A | 2025-09-02 A | C-SOG-S1B-1030 | 100% | 2025-09-12 | 2025-09-15 | S-1BL |  |
| C-SOG-S1B-1050 |  | Sawcuts | 1d | 2025-09-03 A | 2025-09-03 A | C-SOG-S1B-1040 | 100% | 2025-09-16 | 2025-09-16 | S-1BL |  |
|  | 15 | **Ground Thaw** |  | 2024-12-19 | 2025-02-28 |  |  |  |  |  |  |
|  | 1 | **PH1 & 2** |  | 2024-12-19 | 2025-02-14 |  |  |  |  |  |  |
| C-FDN-PH1-1000 |  | Tarp Enclosure | 5d | 2024-12-19 A | 2024-12-24 A | C-SS-PH2-1100, C-SS-PH1-1070 | 100% | 2024-12-04 | 2024-12-10 |  | TBC |
| C-FDN-PH1-1010 |  | Ground Thaw | 10d | 2025-01-13 A | 2025-02-14 A | C-FDN-PH1-1000 | 100% | 2025-01-13 | 2025-01-24 |  | TBC |
|  | 2 | **PH3** |  | 2025-01-15 | 2025-02-28 |  |  |  |  |  |  |
| C-FDN-PH3-1000 |  | Ground Thaw | 10d | 2025-01-15 A | 2025-02-28 A |  | 100% | 2025-01-15 | 2025-01-29 |  | TBC |
| C-FDN-PH3-1010 |  | Tarp Enclosure | 5d | 2025-01-17 A | 2025-01-23 A | C-SS-PH3-1110 SS+2d | 100% |  |  |  | TBC |
|  | 5 | **Architectural Concrete Bases** |  | 2025-06-03 | 2025-10-10 |  |  |  |  |  |  |
| C-FDN-ACB-1000 |  | North Elevation - Anchor Rods | 1d | 2025-06-03 A | 2025-06-03 A | C-FDN-A20-1140 | 100% | 2025-06-05 | 2025-06-05 |  |  |
| C-FDN-ACB-1010 |  | North Elevation - Rebar Mat | 1d | 2025-06-04 A | 2025-06-04 A | C-FDN-ACB-1000 | 100% | 2025-06-06 | 2025-06-06 |  |  |
| C-FDN-ACB-1020 |  | North Elevation - Formwork Close | 1d | 2025-06-04 A | 2025-06-04 A | C-FDN-ACB-1010 | 100% | 2025-06-09 | 2025-06-09 |  |  |
| C-FDN-ACB-1030 |  | North Elevation - Pour and Finish | 2d | 2025-07-02 A | 2025-07-03 A | C-FDN-ACB-1020 FS+1d, C-FDN-ACB-1180 | 100% | 2025-07-09 | 2025-07-10 |  |  |
| C-FDN-ACB-1050 |  | North Elevation - Backfill and Rough Subgrade | 2d | 2025-07-03 A | 2025-07-03 A | C-FDN-ACB-1040 | 100% | 2025-07-29 | 2025-07-30 |  |  |
| C-FDN-ACB-1040 |  | North Elevation - Formwork Strip | 1d | 2025-07-04 A | 2025-07-04 A | C-FDN-ACB-1030 | 100% | 2025-07-11 | 2025-07-11 |  |  |
| C-FDN-ACB-1060 |  | East Elevation - Anchor Rods | 2d | 2025-08-14 A | 2025-08-15 A | C-FDN-ACB-1050 | 100% | 2025-08-29 | 2025-09-02 |  |  |
| C-FDN-ACB-1070 |  | East Elevation - Rebar Mat | 2d | 2025-08-18 A | 2025-08-19 A | C-FDN-ACB-1060 | 100% | 2025-09-03 | 2025-09-04 |  |  |
| C-FDN-ACB-1110 |  | South Elevation - Anchor Rods | 1d | 2025-09-03 A | 2025-09-04 A | C-FDN-A10A-1070 | 100% | 2025-09-17 | 2025-09-17 |  |  |
| C-FDN-ACB-1080 |  | East Elevation - Formwork Close | 2d | 2025-09-08 A | 2025-09-10 A | C-FDN-ACB-1070 | 100% | 2025-09-12 | 2025-09-15 |  |  |
| C-FDN-ACB-1090 |  | East Elevation - Pour and Finish | 1d | 2025-09-11 A | 2025-09-12 A | C-FDN-ACB-1080 | 100% | 2025-09-16 | 2025-09-16 |  |  |
| C-FDN-ACB-1100 |  | East Elevation - Formwork Strip | 2d | 2025-09-13 A | 2025-09-15 A | C-FDN-ACB-1090 | 100% | 2025-09-26 | 2025-09-29 |  |  |
| C-FDN-ACB-1120 |  | South Elevation - Rebar Mat | 1d | 2025-09-17 A | 2025-09-17 A | C-FDN-ACB-1110 | 100% | 2025-09-26 | 2025-09-26 |  |  |
| C-FDN-ACB-1130 |  | South Elevation - Formwork Close | 1d | 2025-09-18 A | 2025-09-18 A | C-FDN-ACB-1120 | 100% | 2025-09-29 | 2025-09-29 |  |  |
| C-FDN-ACB-1140 |  | South Elevation - Pour and Finish | 1d | 2025-09-19 A | 2025-09-19 A | C-FDN-ACB-1130 | 100% | 2025-09-30 | 2025-09-30 |  |  |
| C-FDN-ACB-1150 |  | South Elevation - Formwork Strip | 1d | 2025-09-22 A | 2025-09-22 A | C-FDN-ACB-1140 | 100% | 2025-10-01 | 2025-10-01 |  |  |
| C-FDN-ACB-1160 |  | East and South Elevation - Backfill and Rough Subgrade | 3d | 2025-09-26 A | 2025-10-10 A | C-FDN-ACB-1150, C-FDN-SN-UG-1120 FF, C-FDN-ACB-1100 | 100% | 2025-09-26 | 2025-09-30 |  |  |

| ID | WBS | Activity | Duration | Start | Finish | Predecessors | Complete | Planned start | Planned finish | Comments |
| --- | --- | --- | --- | --- | --- | --- | --- | --- | --- | --- |
|  | 8 | **Area-20 FRONT ENTRANCE WORK (FOUNDATIONS)** |  | 2024-10-16 | 2025-10-08 |  |  |  |  |  |
| C-FDN-A20-1000 |  | Glazing Modifications | 2d | 2024-10-16 A | 2024-10-17 A |  | 100% |  |  |  |
| C-FDN-A20-1010 |  | Demolition | 3d | 2024-10-17 A | 2024-10-22 A | C-FDN-A20-1020 | 100% | 2024-10-18 | 2024-10-22 | 3WLA 20-10-24 |
| C-FDN-A20-1020 |  | Main Entrance Closure | 0d | 2024-10-17 A | 2024-10-17 A | WX-1030, WX-1040, C-FDN-A20-1000 FF | 100% | 2024-10-18 | 2024-10-18 |  |
| C-FDN-A20-1030 |  | Slab Removal | 1d | 2024-10-22 A | 2024-10-23 A | C-FDN-A20-1020 SS, C-FDN-A20-1010 | 100% | 2024-10-21 | 2024-10-21 |  |
| C-FDN-A20-1040 |  | Piling | 2d | 2024-10-24 A | 2024-10-31 A | C-FDN-A20-1030 FS+1d, X-PIL-1000 | 100% | 2024-10-23 | 2024-10-24 | 3WLA 23-10-24 ? |
| C-FDN-A20-1050 |  | Excavation for Pile Cap | 5d | 2024-11-01 A | 2024-11-02 A | C-FDN-A20-1040 | 100% | 2024-10-18 | 2024-10-24 |  |
| C-FDN-A20-1060 |  | Pile Cap Fomrwork | 5d | 2024-11-02 A | 2024-11-03 A | C-FDN-A20-1050 | 100% | 2024-10-18 | 2024-10-24 |  |
| C-FDN-A20-1070 |  | Pile Cap Repair | 5d | 2024-11-03 A | 2024-11-04 A | C-FDN-A20-1060 | 100% | 2024-10-18 | 2024-10-24 |  |
| C-FDN-A20-1080 |  | Pile Cap Closing Formwork | 5d | 2024-11-05 A | 2024-11-05 A | C-FDN-A20-1070 | 100% | 2024-10-18 | 2024-10-24 |  |
| C-FDN-A20-1090 |  | Pile Cap Pouring | 5d | 2024-11-06 A | 2024-11-06 A | C-FDN-A20-1070, C-FDN-A20-1080 | 100% | 2024-10-18 | 2024-10-24 |  |
| C-FDN-A20-1100 |  | Gradebeam Formwork Outside | 2d | 2024-11-07 A | 2024-11-08 A | C-FDN-A20-1040, C-FDN-A20-1090 | 100% |  |  |  |
| C-FDN-A20-1110 |  | Rebar | 2d | 2024-11-08 A | 2024-11-13 A | C-FDN-A20-1100 FF+1d | 100% | 2024-11-08 | 2024-11-11 |  |
| C-FDN-A20-1120 |  | Gradebeam Formwork Closure | 1d | 2024-11-13 A | 2024-11-14 A | C-FDN-A20-1110 FF | 100% | 2024-11-11 | 2024-11-11 |  |
| C-FDN-A20-1130 |  | Gradebeam Pour | 1d | 2024-11-14 A | 2024-11-14 A | C-FDN-A20-1110, C-FDN-A20-1120 | 100% | 2024-11-12 | 2024-11-12 |  |
| C-FDN-A20-1150 |  | Electrical Trenches and Conduit | 5d | 2025-05-06 A | 2025-05-07 A | C-FDN-A20-1130 | 100% | 2025-05-26 | 2025-05-30 |  |
| C-FDN-A20-1140 |  | Entrance Canopy Piles cap | 7d | 2025-05-20 A | 2025-05-27 A | C-ENV-SID-CL-N-1000 FF | 100% | 2025-05-26 | 2025-06-03 |  |
| C-FDN-A20-1160 |  | Backfill and Rough Subgrade | 1d | 2025-07-20 A | 2025-07-20 A | C-FDN-A20-1140, C-FDN-A20-1150 | 100% | 2025-07-29 | 2025-07-29 |  |
| C-FDN-A20-1170 |  | Entrance Canopy Steel | 16d | 2025-07-21 A | 2025-07-26 A | C-FDN-A20-1160, C-ENV-SID-CL-N-1010, C-FDN-ACB-1050 | 100% | 2025-07-30 | 2025-08-21 |  |
| C-FDN-A20-1220 |  | Canopy Decking | 3d | 2025-08-11 A | 2025-09-03 A | C-FDN-A20-1170 | 100% | 2025-08-12 | 2025-08-14 |  |
| C-FDN-A20-1230 |  | Rebar Modification to Apron Slab | 1d | 2025-08-14 A | 2025-08-14 A | C-FDN-A20-1160, C-FDN-A20-1110 | 100% | 2025-08-15 | 2025-08-15 |  |
| C-FDN-A20-1240 |  | Pour Apron Slab | 1d | 2025-08-28 A | 2025-08-28 A | C-FDN-A20-1230 | 100% | 2025-08-29 | 2025-08-29 |  |
| C-FDN-A20-1180 |  | Slab Prep | 3d | 2025-09-20 A | 2025-09-23 A | C-FDN-A20-1130 FS+2d, P-PRO-147 SS, C-SS-PH1-1070, C-SOG-1040 SS, C-FDN-PH1-1010, C-FDN-A20-1170, C-ENV-SID-CL-N-1020 SF, C-FDN-A20-1240 | 100% | 2025-10-10 | 2025-10-15 |  |
| C-FDN-A20-1250 |  | Insulation | 0d | 2025-09-24 A | 2025-10-02 A |  | 100% | 2025-09-29 | 2025-09-29 |  |
| C-FDN-A20-1190 |  | Rebar & Inspection | 3d | 2025-09-27 A | 2025-10-02 A | C-FDN-A20-1180, C-FDN-A20-1250 FS-2d | 100% | 2025-09-26 | 2025-09-30 |  |
| C-FDN-A20-1210 |  | Install Heating | 6d | 2025-10-01 A | 2025-10-06 A | C-FDN-A20-1180, C-SS-PH2-1100, C-FDN-A20-1190 | 100% | 2025-10-01 | 2025-10-08 |  |
| C-FDN-A20-1200 |  | Slab Pour | 1d | 2025-10-06 A | 2025-10-08 A | C-FDN-A20-1210, C-FDN-A20-1180, C-SS-PH2-1100 | 100% | 2025-10-09 | 2025-10-09 |  |

| ID | WBS | Activity | Duration | Start | Finish | Predecessors | Complete | Planned start | Planned finish | Total float | Free float | Area- ID | Comments |
| --- | --- | --- | --- | --- | --- | --- | --- | --- | --- | --- | --- | --- | --- |
|  | 2 | **SUPERSTRUCTURE (CORE AND SHELL)** |  | 2024-11-12 | 2026-02-20 |  |  |  |  |  |  |  |  |
|  | 1 | **STEEL STRUCTURE** |  | 2024-11-12 | 2025-01-21 |  |  |  |  |  |  |  |  |
|  | 1 | **Phase 1 - PA-PD / P1-P5** |  | 2024-11-12 | 2024-12-12 |  |  |  |  |  |  |  |  |
| C-SS-PH1-1000 |  | Off-Loading & Shakeout | 2d | 2024-11-12 A | 2024-11-18 A | P-PRO-30 FF+2d, P-PRO-42 | 100% | 2024-11-12 | 2024-11-13 |  |  |  |  |
| C-SS-PH1-1030 |  | Standing Steel | 4d | 2024-11-19 A | 2024-11-25 A | P-PRO-42, P-PRO-30, C-FDN-A20-1130, C-SS-PH1-1000, C-SS-PH2-1020, X-CR-1000 FF+3d | 100% | 2024-11-19 | 2024-11-22 |  |  | SS-1 |  |
| C-SS-PH1-1050 |  | Bolting Torquing | 8d | 2024-12-02 A | 2024-12-07 A | P-PRO-30, C-SS-PH1-1030, C-SS-PH2-1040 | 100% | 2024-11-26 | 2024-12-05 |  |  | SS-1 |  |
| C-SS-PH1-1070 |  | Decking | 4d | 2024-12-09 A | 2024-12-12 A | C-SS-PH1-1050 | 100% |  |  |  |  | SS-1 |  |
|  | 3 | **Phase 2 - PD-PG / P1-P5** |  | 2024-11-18 | 2024-12-21 |  |  |  |  |  |  |  |  |
| C-SS-PH2-1020 |  | Off-Loading & Shakeout | 1d | 2024-11-18 A | 2024-11-18 A | P-PRO-1454, C-SS-PH1-1000 FF | 100% |  |  |  |  |  |  |
| C-SS-PH2-1040 |  | Standing Steel | 3d | 2024-11-26 A | 2024-12-06 A | P-PRO-30, P-PRO-42, C-SS-PH1-1030, P-PRO-30 FF, P-PRO-1454, C-SS-PH2-1020, C-SS-PH2-1020 FF, P-PRO-1514 | 100% | 2024-11-19 | 2024-11-21 |  |  | SS-2 |  |
| C-SS-PH2-1060 |  | Bolting Torquing | 1.88d | 2024-12-08 A | 2024-12-09 A | C-SS-PH2-1040, C-SS-PH1-1050, C-SS-PH1-1050 FF | 100% | 2024-12-09 | 2024-12-10 |  |  | SS-2 |  |
| C-SS-PH2-1100 |  | Decking | 2d | 2024-12-20 A | 2024-12-21 A | C-SS-PH2-1060, C-SS-PH1-1070 | 100% | 2024-12-20 | 2024-12-23 |  |  | SS-2 |  |
|  | 2 | **Phase 3 - PA-PG / P5-P9** |  | 2024-11-12 | 2025-01-21 |  |  |  |  |  |  |  |  |
| C-SS-PH3-1010 |  | Off-Loading & Shakeout | 2d | 2024-11-12 A | 2024-11-18 A | P-PRO-1464 | 100% | 2024-11-15 | 2024-11-18 |  |  |  |  |
| C-SS-PH3-1080 |  | Standing Steel | 7d | 2024-12-09 A | 2024-12-18 A | C-SS-PH2-1040, P-PRO-42, C-SS-PH2-1040 FF, P-PRO-30, C-FDN-A9-1060, C-FDN-A9-1070, P-PRO-1464, C-FDN-A9-1070 FF, C-FDN-A10A-1060, C-FDN-A7A-1040 FS+1d, C-SS-PH3-1010, P-PRO-1524, C-SS-PH2-1060 | 100% |  |  |  |  | SS-3 |  |
| C-SS-PH3-1090 |  | Bolting Torquing | 11d | 2024-12-18 A | 2025-01-08 A | C-SS-PH3-1080, C-SS-PH2-1060 | 100% | 2024-12-18 | 2025-01-07 |  |  | SS-3 |  |
| C-SS-PH3-1110 |  | Decking | 7d | 2025-01-08 A | 2025-01-21 A | C-SS-PH3-1090 SS+1d | 100% | 2025-01-15 | 2025-01-23 |  |  | SS-3 |  |
|  | 2 | **BUILDING ENVELOPE** |  | 2025-01-14 | 2026-02-20 |  |  |  |  |  |  |  |  |
| C-ENV-GL-1000 |  | Exterior Glazing Finishing | 10d | 2026-01-26 | 2026-02-06 | C-ENV-SID-CL-S-1040 |  |  |  | 94d | 0d |  |  |
|  | 1 | **Roofing** |  | 2025-01-14 | 2025-08-27 |  |  |  |  |  |  |  |  |
|  | 1 | **North Side** |  | 2025-01-14 | 2025-08-27 |  |  |  |  |  |  |  |  |
| C-ENV-RF-N-1000 |  | Parapets (North Side) | 10d | 2025-01-14 A | 2025-01-27 A | C-SS-PH1-1070 SS, C-SS-PH2-1100 SS, C-ENV-SID-EW-N-1000 SS, MIL-C-480 | 100% |  |  |  |  |  | EXPLAIN THE COMMENT |
| C-ENV-RF-N-1010 |  | Install Vestibule coverboard and vapour barrier | 1d | 2025-02-28 A | 2025-02-28 A | C-ENV-RF-N-1000, C-ENV-RF-E&S-1020, MIL-C-480 | 100% |  |  |  |  |  |  |
| C-ENV-RF-N-1020 |  | Install Vestibule roofing assembly- 1st Fix | 5d | 2025-05-12 A | 2025-06-17 A | C-ENV-RF-N-1010, C-ENV-RF-E&S-1000 | 100% | 2025-05-26 | 2025-05-30 |  |  |  |  |
| C-ENV-RF-N-1030 |  | Mockup | 5d | 2025-06-18 A | 2025-06-18 A |  | 100% | 2025-06-19 | 2025-06-25 |  |  |  |  |
| C-ENV-RF-N-1040 |  | Exterior Wall Mock Up Inspection | 3d | 2025-06-24 A | 2025-06-24 A | C-ENV-RF-N-1030, X-ENV-1160 | 100% | 2025-06-26 | 2025-06-30 |  |  |  |  |
| C-ENV-RF-N-1050 |  | N- Exterior Wall Mock Up Approval | 5d | 2025-06-24 A | 2025-06-24 A | C-ENV-RF-N-1040 | 100% | 2025-06-26 | 2025-07-03 |  |  |  |  |
| C-ENV-RF-N-1060 |  | N- Install Vestibule roofing assembly- 2nd Fix | 0d | 2025-06-26 A | 2025-08-27 A | C-ENV-RF-N-1050 | 100% | 2025-07-04 | 2025-07-04 |  |  |  |  |

Notes:
- C-SS-PH1-1030: Comment: Three day push due to building cladding removal was required
- C-SS-PH2-1040: Comment: Delay due to trade had coating issues with four joists. Working on a recovery plan.
- C-SS-PH3-1080: Comment: Check the Steel Strucutre Calander ?

| ID | WBS | Activity | Duration | Start | Finish | Predecessors | Complete | Planned start | Planned finish | Total float | Free float | Comment | Area- ID |
| --- | --- | --- | --- | --- | --- | --- | --- | --- | --- | --- | --- | --- | --- |
|  | 2 | **Part of East Side** |  | 2025-01-16 | 2025-02-28 |  |  |  |  |  |  |  |  |
| C-ENV-RF-E-1000 |  | Parapets Part of East Side) 1st Part | 10d | 2025-01-16 A | 2025-01-24 A | C-ENV-RF-N-1000, C-SS-PH2-1100, C-ENV-SID-EW-E-1000 SS, MIL-C-480 | 100% | 2025-01-16 | 2025-01-29 |  |  |  |  |
| C-ENV-RF-E-1010 |  | Parapets Part of East Side) 2nd Part | 4d | 2025-01-22 A | 2025-01-27 A | C-ENV-RF-N-1000, C-ENV-SID-EW-E-1010 FF, C-ENV-RF-E-1000, MIL-C-480 | 100% |  |  |  |  |  |  |
| C-ENV-RF-E-1020 |  | Mechanical Curbs, Roof Drain and Vent Installation | 2d | 2025-02-14 A | 2025-02-18 A | MIL-C-480 | 100% | 2025-02-06 | 2025-02-07 |  |  | SUCC |  |
| C-ENV-RF-E-1030 |  | Install North coverboard and vapour barrier | 3d | 2025-02-20 A | 2025-02-21 A | P-PRO-153, C-SS-PH2-1100, C-SS-PH3-1110, C-ENV-RF-E-1020, C-FDN-PH3-1010, MIL-C-480 | 100% | 2025-02-10 | 2025-02-12 |  |  |  |  |
| C-ENV-RF-E-1040 |  | Install North roofing assembly | 10d | 2025-02-24 A | 2025-02-28 A | C-SS-PH3-1110, P-PRO-153, C-SS-PH2-1100, C-ENV-RF-E-1030, C-FDN-PH3-1000 SS | 100% | 2025-02-13 | 2025-02-27 |  |  |  |  |
|  | 3 | **Rest of East Side and South Side** |  | 2025-03-03 | 2025-03-28 |  |  |  |  |  |  |  |  |
| C-ENV-RF-E&S-1000 |  | Install South coverboard and vapour barrier | 4d | 2025-03-03 A | 2025-03-10 A | C-ENV-RF-E-1030, C-ENV-RF-E-1040, MIL-C-480 | 100% | 2025-03-10 | 2025-03-13 |  |  |  |  |
| C-ENV-RF-E&S-1010 |  | Install South roofing assembly | 9d | 2025-03-11 A | 2025-03-21 A | C-ENV-RF-E&S-1000, C-ENV-RF-E-1040 | 100% | 2025-03-14 | 2025-03-26 |  |  |  |  |
| C-ENV-RF-E&S-1020 |  | Install West coverboard and vapour barrier | 1d | 2025-03-27 A | 2025-03-27 A | C-ENV-RF-E-1040 | 100% | 2025-02-27 | 2025-02-27 |  |  |  |  |
| C-ENV-RF-E&S-1030 |  | Install West roofing assembly | 2d | 2025-03-27 A | 2025-03-28 A | C-ENV-RF-E&S-1020, C-ENV-RF-E&S-1010 | 100% |  |  |  |  |  |  |
|  | 2 | **North Side** |  | 2025-01-28 | 2026-02-20 |  |  |  |  |  |  |  |  |
|  | 3 | **Exterior Wall** |  | 2025-01-28 | 2025-02-27 |  |  |  |  |  |  |  |  |
| C-ENV-SID-EW-N-1000 |  | Exterior Wall Framing,Bording | 10d | 2025-01-28 A | 2025-02-27 A | C-SS-PH1-1070, P-PRO-157, C-SS-PH2-1100 | 100% | 2025-01-28 | 2025-02-10 |  |  |  | ENV-N |
|  | Glazing | **Glazing** |  | 2025-04-15 | 2025-07-16 |  |  |  |  |  |  |  |  |
| C-ENV-SID-GL-N-1010 |  | N- Curtain Wall Framing | 7d | 2025-04-15 A | 2025-06-30 A | P-PRO-196, C-ENV-SID-EW-N-1000, IPP-SAFE-179 | 100% | 2025-02-11 | 2025-02-20 |  |  |  | ENV-N |
| C-ENV-SID-GL-N-1040 |  | N- Curtain Wall Glass | 6d | 2025-07-07 A | 2025-07-16 A | P-PRO-156, C-ENV-SID-GL-N-1010 | 100% | 2025-07-09 | 2025-07-16 |  |  |  | ENV-N |
|  | 1 | **Clading** |  | 2025-04-23 | 2026-02-20 |  |  |  |  |  |  |  |  |
| C-ENV-SID-CL-N-1000 |  | AVB Membrane | 4d | 2025-04-23 A | 2025-05-30 A | C-ENV-SID-EW-N-1000, C-ENV-RF-N-1000 | 100% | 2025-01-10 | 2025-01-15 |  |  |  | ENV-N |
| C-ENV-SID-CL-N-1010 |  | N- Z-girts and insulation | 8d | 2025-05-31 A | 2025-07-04 A | C-ENV-SID-CL-N-1000 | 100% | 2025-06-05 | 2025-06-16 |  |  |  | ENV-N |
| C-ENV-SID-CL-N-1030 |  | N- Cladding - Below from Canopy | 5d | 2025-08-06 A | 2025-08-10 A | P-PRO-154 | 100% | 2025-08-15 | 2025-08-21 |  |  |  |  |
| C-ENV-SID-CL-N-1020 |  | N- Cladding - Above Canopy | 4d | 2025-09-23 A | 2025-09-26 A | C-ENV-SID-CL-N-1010, P-PRO-154, P-PRO-155, C-ENV-RF-N-1060, C-FDN-A20-1220, C-ENV-SID-CL-N-1030 | 100% | 2025-09-26 | 2025-10-01 |  |  |  | ENV-N |
| C-ENV-SID-CL-N-1040 |  | Wood Soffit | 9d | 2026-02-09 | 2026-02-20 | C-ENV-SID-CL-S-1040, C-ENV-GL-1000 |  |  |  | 94d | 0d |  | ENV-N |
|  | 3 | **East Side** |  | 2025-01-28 | 2025-11-10 |  |  |  |  |  |  |  |  |
|  | 3 | **Exterior Wall** |  | 2025-01-28 | 2025-03-13 |  |  |  |  |  |  |  |  |
| C-ENV-SID-EW-E-1000 |  | Exterior Wall Framing,Boarding 1st Part | 14d | 2025-01-28 A | 2025-02-27 A | C-SS-PH2-1100, C-ENV-SID-EW-N-1000 | 100% | 2025-01-28 | 2025-02-14 |  |  |  | ENV-E |
| C-ENV-SID-EW-E-1010 |  | Exterior Wall Framing,Bording 2nd Part | 10d | 2025-02-28 A | 2025-03-13 A | C-ENV-SID-EW-N-1000, C-SS-PH3-1110, C-ENV-SID-EW-E-1000 | 100% | 2025-02-18 | 2025-03-03 |  |  |  | ENV-E |

Notes:
- C-ENV-RF-E-1000: Comments: I Devided the East elevation to 2 1st and 2nd part to expedite the work for hording

| ID | WBS | Activity | Duration | Start | Finish | Predecessors | Complete | Remaining | Planned start | Planned finish | Total float | Free float | Expected finish | Area- ID | #User-Text_01 |
| --- | --- | --- | --- | --- | --- | --- | --- | --- | --- | --- | --- | --- | --- | --- | --- |
|  | Glazing | **Glazing** |  | 2025-06-23 | 2025-07-16 |  |  |  |  |  |  |  |  |  |  |
| C-ENV-SID-GL-E-1010 |  | Curtain Wall Framing | 7d | 2025-06-23 A | 2025-06-25 A | C-ENV-SID-GL-N-1010, C-ENV-SID-EW-E-1010 | 100% |  | 2025-06-26 | 2025-07-07 |  |  |  | ENV-E |  |
| C-ENV-SID-GL-E-1020 |  | E- Curtain Wall Glass | 5d | 2025-07-07 A | 2025-07-16 A | P-PRO-1484, C-ENV-SID-GL-N-1040 FF+1d | 100% |  | 2025-07-17 | 2025-07-23 |  |  |  | ENV-E |  |
|  | 1 | **Clading** |  | 2025-06-10 | 2025-11-10 |  |  |  |  |  |  |  |  |  |  |
| C-ENV-SID-CL-E-1000 |  | AVB Membrane- Except the Access area | 12d | 2025-06-10 A | 2025-06-17 A | C-ENV-SID-EW-E-1010, C-ENV-SID-CL-N-1000 | 100% |  | 2025-06-19 | 2025-07-07 |  |  |  | ENV-E |  |
| C-ENV-SID-CL-E-1010 |  | E- Z-girts and insulation- Except the Access area | 8d | 2025-06-17 A | 2025-06-30 A | C-ENV-SID-CL-E-1000 | 100% |  | 2025-08-01 | 2025-08-13 |  |  |  | ENV-E |  |
| C-ENV-SID-CL-E-1020 |  | E- Cladding- Except the Access Area / Circular Window | 19d | 2025-08-04 A | 2025-09-05 A | P-PRO-154, C-ENV-SID-CL-N-1030 | 100% |  | 2025-08-22 | 2025-09-18 |  |  |  | ENV-E |  |
| C-ENV-SID-CL-E-1030 |  | Procurement of Circular Window Frame | 5d | 2025-08-14 A | 2025-09-15 A |  | 100% |  | 2025-08-15 | 2025-08-21 |  |  |  |  |  |
|  | 1 | **Access Area** |  | 2025-09-03 | 2025-11-10 |  |  |  |  |  |  |  |  |  |  |
| C-ENV-SID-CL-AC-1100 |  | E- Z-girts and insulation - Access Area for Family Hot Tub | 2d | 2025-09-03 A | 2025-10-07 A | C-ENV-SID-CL-N-1010, C-ENV-SID-CL-AC-1000 | 100% |  | 2025-09-26 | 2025-09-29 |  |  |  | ENV-E | Crew 2 |
| C-ENV-SID-CL-AC-1000 |  | E- AVB Membrane- Access Area for Family Hot Tub | 2d | 2025-09-22 A | 2025-09-23 A | C-FDN-NN-1390 SF | 100% |  | 2025-10-01 | 2025-10-02 |  |  |  | ENV-E | Crew 2 |
| C-ENV-SID-CL-AC-1110 |  | E- Cladding- Access Area for Family Hot Tub | 2d | 2025-10-08 A | 2025-10-31 A | C-ENV-SID-CL-AC-1100, C-ENV-SID-CL-E-1020 | 100% |  | 2025-09-30 | 2025-10-01 |  |  |  | ENV-E | Crew 2 |
| C-ENV-SID-CL-AC-1120 |  | Remaining Glass Installation | 6d | 2025-11-10 A | 2025-11-10 A | C-ENV-SID-CL-AC-1110 | 100% |  | 2025-11-21 | 2025-11-28 |  |  |  | ENV-E | Crew 2 |
|  | 4 | **South Side** |  | 2025-01-28 | 2026-01-23 |  |  |  |  |  |  |  |  |  |  |
|  | 3 | **Exterior Wall** |  | 2025-01-28 | 2025-04-25 |  |  |  |  |  |  |  |  |  |  |
| C-ENV-SID-EW-S-1000 |  | Exterior Wall Framing, Boarding | 10d | 2025-01-28 A | 2025-04-25 A | C-SS-PH3-1110, C-FDN-PH3-1000 SS, C-FDN-PH3-1010, C-ENV-SID-EW-E-1000 FS-1d | 100% |  | 2025-02-14 | 2025-02-28 |  |  |  | ENV-S |  |
|  | Glazing | **Glazing** |  | 2025-07-09 | 2025-07-19 |  |  |  |  |  |  |  |  |  |  |
| C-ENV-SID-GL-S-1010 |  | S- Curtain Wall Framing | 7d | 2025-07-09 A | 2025-07-17 A | C-ENV-SID-GL-E-1010, C-ENV-SID-EW-S-1000 | 100% |  | 2025-07-29 | 2025-08-07 |  |  |  | ENV-S |  |
| C-ENV-SID-GL-S-1020 |  | S- Curtain Wall Glass | 5d | 2025-07-18 A | 2025-07-19 A | C-ENV-SID-GL-S-1010, P-PRO-1504, C-ENV-SID-GL-E-1020 | 100% |  | 2025-08-08 | 2025-08-14 |  |  |  | ENV-S |  |
|  | 1 | **Clading** |  | 2025-07-21 | 2026-01-23 |  |  |  |  |  |  |  |  |  |  |
| C-ENV-SID-CL-S-1000 |  | S- AVB Membrane | 6d | 2025-07-21 A | 2025-09-04 A | C-ENV-SID-EW-S-1000, C-ENV-SID-CL-E-1000 | 100% |  | 2025-07-29 | 2025-08-06 |  |  |  | ENV-S |  |
| C-ENV-SID-CL-S-1010 |  | S- Z-girts and insulation | 2d | 2025-09-05 A | 2025-10-10 A | C-ENV-SID-CL-S-1000 | 100% |  | 2025-09-12 | 2025-09-15 |  |  |  | ENV-S |  |
| C-ENV-SID-CL-S-1020 |  | S- Cladding | 11d | 2025-09-26 A | 2025-11-11 A | C-ENV-SID-CL-S-1010, P-PRO-154, C-ENV-SID-CL-E-1020 SS, C-FDN-ACB-1140 FF-5d, C-ENV-SID-CL-AC-1110 FF+5d | 100% |  | 2025-10-14 | 2025-10-28 |  |  |  | ENV-S | Crew 1 |
| C-ENV-SID-CL-S-1030 |  | Remaining Glass Installation | 2d | 2025-10-16 A | 2025-10-17 A | C-ENV-SID-CL-S-1010 | 100% |  | 2025-11-10 | 2025-11-11 |  |  |  | ENV-S | Crew 1 |
| C-ENV-SID-CL-S-1060 |  | Install Aluminum Frame and Sidelight AQ 146A | 3d | 2025-11-12 A | 2026-01-08 A | C-ENV-SID-CL-S-1020 | 100% |  | 2025-11-21 | 2025-11-25 |  |  |  |  |  |
| C-ENV-SID-CL-S-1070 |  | Install Scaffold, Heat and Hoard | 3d | 2025-12-04 A | 2025-12-05 A | C-ENV-SID-CL-S-1060 | 100% |  | 2025-12-15 | 2025-12-17 |  |  |  |  |  |
| C-ENV-SID-CL-S-1040 |  | Stone Veneer | 12d | 2025-12-08 A | 2026-01-23 | C-ENV-SID-CL-S-1020, C-SW-1090, C-ENV-SID-CL-S-1070 |  | 5d | 2025-12-17 | 2026-01-06 | 28d | 0d | 2026-01-23 | ENV-S |  |
| C-ENV-SID-CL-S-1050 |  | IMP Installation | 3d | 2025-12-15 A | 2026-01-16 A | C-ENV-SID-CL-S-1020, T-INT-SF-MR-2020 SS+2d, C-ENV-S-CL-1000 | 100% |  | 2025-12-17 | 2025-12-19 |  |  |  | ENV-S |  |

| ID | WBS | Activity | Type | Duration | Start | Finish | Predecessors | Complete | Remaining | Planned start | Planned finish | Total float | Free float | Expected finish | #User-Text_01 |
| --- | --- | --- | --- | --- | --- | --- | --- | --- | --- | --- | --- | --- | --- | --- | --- |
|  | 3 | **INTERIOR** |  |  | 2024-12-21 | 2026-06-19 |  |  |  |  |  |  |  |  |  |
|  | 1 | **BASEMENT** |  |  | 2025-07-28 | 2026-05-25 |  |  |  |  |  |  |  |  |  |
|  | 3 | **Basement & Pool Equipments** |  |  | 2025-07-28 | 2026-05-25 |  |  |  |  |  |  |  |  |  |
| T-INT-MF-BA-9000 |  | Basement Completion | milestone | 0d | 2026-05-25 | 2026-05-25 | T-INT-BA-2100 FF, T-INT-BA-2010 FF, T-INT-BA-2000 FF, T-INT-BA-2020 FF, T-INT-BA-2030 FF, T-INT-BA-2040 FF, T-INT-BA-2050 FF, T-INT-BA-2120 FF, T-INT-BA-2130 FF, T-INT-BA-2140 FF, T-INT-BA-2150 FF, T-INT-BA-2160 FF, T-INT-BA-2170 FF, T-INT-BA-2180 FF, T-INT-BA-2190 FF, T-INT-BA-2070 FF, T-INT-BA-2060 FF, T-INT-BA-2080 FF, T-INT-BA-2090 FF |  |  |  |  | 56d |  |  |  |
|  | 2 | **Structure** |  |  | 2025-07-28 | 2025-10-24 |  |  |  |  |  |  |  |  |  |
| T-INT-BA-2000 |  | Concrete Slab Infill and Patching |  | 5d | 2025-07-28 A | 2025-10-10 A | C-FDN-A6-1010 | 100% |  | 2025-07-29 | 2025-08-05 |  |  |  | Deficiancy correction |
| T-INT-BA-2100 |  | Floor Sink Installation |  | 2d | 2025-08-07 A | 2025-08-08 A | C-FDN-A6-1010, C-FDN-A6-1090, P-PRO-1534 SS, T-INT-BA-2000 SS | 100% |  | 2025-08-21 | 2025-08-22 |  |  |  |  |
| T-INT-BA-2010 |  | Mechanical Ductwork |  | 5d | 2025-08-14 A | 2025-08-20 A | T-INT-BA-2000 SS, T-INT-BA-2100 | 100% |  | 2025-08-29 | 2025-09-05 |  |  |  |  |
| T-INT-BA-2020 |  | Basement Painting |  | 3d | 2025-10-14 A | 2025-10-17 A | T-INT-BA-2010, T-INT-BA-2000 | 100% |  | 2025-10-14 | 2025-10-16 |  |  |  |  |
| T-INT-BA-2030 |  | Housekeeping Pads - 1st Lift |  | 1d | 2025-10-24 A | 2025-10-24 A | T-INT-BA-2020 | 100% |  | 2025-10-17 | 2025-10-17 |  |  |  |  |
|  | 1 | **Pool Equipment & Fitout** |  |  | 2025-10-27 | 2026-05-25 |  |  |  |  |  |  |  |  |  |
| T-INT-BA-2040 |  | Pool Equipment Placement |  | 1d | 2025-10-27 A | 2025-10-27 A | T-INT-BA-2030, P-PRO-363, P-PRO-353, P-PRO-343, P-PRO-323, P-PRO-403, P-PRO-333, P-PRO-383 SS | 100% |  |  |  |  |  |  |  |
| T-INT-BA-2050 |  | Plumbing Mechanical room suction side |  | 62d | 2025-10-28 A | 2025-12-05 A | T-INT-BA-2040 | 100% |  | 2025-12-05 | 2026-03-06 |  |  |  |  |
| T-INT-BA-2120 |  | Mount equipment on rack and walls |  | 13d | 2025-12-08 A | 2025-12-22 A | T-INT-BA-2050 | 100% |  | 2025-12-10 | 2025-12-30 |  |  |  |  |
| T-INT-BA-2130 |  | Plumbing Circulation loop from wall to filter back to wall |  | 20d | 2026-01-05 A | 2026-01-30 | T-INT-BA-2120 |  | 10d |  |  | 33d | 0d | 2026-01-30 |  |
| T-INT-BA-2140 |  | Water Filtration Loops |  | 15d | 2026-02-02 | 2026-02-23 | T-INT-BA-2130 |  |  |  |  | 33d | 0d |  |  |
| T-INT-BA-2150 |  | U.V Bypass loops |  | 10d | 2026-02-24 | 2026-03-09 | T-INT-BA-2140 |  |  |  |  | 33d | 0d |  |  |
| T-INT-BA-2160 |  | Chemical Bypass Loops |  | 13d | 2026-03-10 | 2026-03-26 | T-INT-BA-2150 |  |  |  |  | 33d | 0d |  |  |
| T-INT-BA-2170 |  | Heat Exchanger Bypass Loops |  | 15d | 2026-03-27 | 2026-04-17 | T-INT-BA-2160 |  |  |  |  | 33d | 0d |  |  |
| T-INT-BA-2180 |  | Finishing Trim |  | 10d | 2026-04-20 | 2026-05-01 | T-INT-BA-2170 |  |  |  |  | 33d | 0d |  |  |
| T-INT-BA-2190 |  | Pool E System |  | 15d | 2026-05-04 | 2026-05-25 | T-INT-BA-2180 |  |  |  |  | 33d | 0d |  |  |
|  | 3 | **Connections & Fixtures** |  |  | 2026-02-24 | 2026-04-07 |  |  |  |  |  |  |  |  |  |
| T-INT-BA-2060 |  | Electrical Connections and Rough In's |  | 25d | 2026-02-24 | 2026-03-30 | T-INT-BA-2140 |  |  |  |  | 39d | 0d |  |  |
| T-INT-BA-2070 |  | Mechanical Fixtures |  | 5d | 2026-02-24 | 2026-03-03 | T-INT-BA-2060 SS |  |  | 2026-02-24 | 2026-03-02 | 47d | 15d |  |  |
| T-INT-BA-2080 |  | Electrical Fixtures |  | 5d | 2026-03-31 | 2026-04-07 | T-INT-BA-2070, T-INT-BA-2060 |  |  |  |  | 39d | 9d |  |  |

Notes:
- T-INT-BA-2040: PLANNING NOTES: Waiting for detailed fitout schedule from Trade

| ID | WBS | Activity | Type | Duration | Start | Finish | Predecessors | Complete | Remaining | Planned start | Planned finish | Total float | Free float | Expected finish | Area- ID |
| --- | --- | --- | --- | --- | --- | --- | --- | --- | --- | --- | --- | --- | --- | --- | --- |
|  | 4 | **Startup & Testing** |  |  | 2026-04-20 | 2026-04-20 |  |  |  |  |  |  |  |  |  |
| T-INT-BA-2090 |  | Pool Equipment Start Up and Testing |  | 1d | 2026-04-20 | 2026-04-20 | T-INT-MF-Z1-ER-1150, T-INT-BA-2060, T-INT-BA-2170 |  |  |  |  | 33d | 12d |  |  |
|  | 2 | **MAIN FLOOR** |  |  | 2025-09-02 | 2026-06-19 |  |  |  |  |  |  |  |  |  |
|  | 1 | **ZONE #1 - MECHANICAL ROOM, ELECTRICAL ROOM, EXIT CORRIDOR** |  |  | 2025-09-02 | 2026-04-28 |  |  |  |  |  |  |  |  |  |
| T-INT-MF-Z1-9000 |  | Zone 01 Completion | milestone | 0d | 2026-04-28 | 2026-04-28 | T-INT-MF-Z1-1350 FF, T-INT-MF-Z1-1310 FF, T-INT-MF-Z1-1360 FF, T-INT-MF-Z1-1280 FF, T-INT-MF-Z1-1330 FF, T-INT-MF-Z1-1370 FF, T-INT-MF-Z1-1300 FF, T-INT-MF-Z1-1080 FF, T-INT-MF-Z1-1130 FF, T-INT-MF-Z1-1262 FF, T-INT-MF-Z1-1100 FF, T-INT-MF-Z1-1190 FF, T-INT-MF-Z1-1110 FF, T-INT-MF-Z1-1220 FF, T-INT-MF-Z1-1170 FF, T-INT-MF-Z1-1180 FF, T-INT-MF-Z1-1250 FF, T-INT-MF-Z1-1270 FF, T-INT-MF-Z1-ER-1020 FF, T-INT-MF-Z1-ER-1050 FF, T-INT-MF-Z1-ER-1070 FF, T-INT-MF-Z1-ER-1100 FF, T-INT-MF-Z1-ER-1090 FF, T-INT-MF-Z1-ER-1080 FF, T-INT-MF-Z1-ER-1030 FF, T-INT-MF-Z1-ER-1120 FF, T-INT-MF-Z1-ER-1160 FF, T-INT-MF-Z1-ER-1130 FF, T-INT-MF-Z1-ER-1110 FF, T-INT-MF-Z1-ER-1140 FF, T-INT-MF-Z1-ER-1150 FF, T-INT-MF-Z1-1000 FF, T-INT-MF-Z1-MR-1060 FF, T-INT-MF-Z1-1230 FF, T-INT-MF-Z1-1010 FF, T-INT-MF-Z1-1050 FF, T-INT-MF-Z1-MR-1090 FF, T-INT-MF-Z1-1240 FF, T-INT-MF-Z1-1200 FF, T-INT-MF-Z1-1140 FF, T-INT-MF-Z1-1150 FF, T-INT-MF-Z1-1120 FF, T-INT-MF-Z1-1060 FF, T-INT-MF-Z1-1070 FF, T-INT-MF-Z1-MR-1080 FF, T-INT-MF-Z1-MR-1040 FF, T-INT-MF-Z1-1090 FF, T-INT-MF-Z1-1260 FF, T-INT-MF-Z1-MR-1180 FF, T-INT-MF-Z1-MR-1150 FF |  |  |  |  | 74d |  |  |  |
|  | 3 | **Corridor Fitouts (AQ-C006)** |  |  | 2025-12-08 | 2026-01-16 |  |  |  |  |  |  |  |  |  |
| T-INT-MF-Z1-1350 |  | Drywall mud tape and finish remaining walls - 2 |  | 5d | 2025-12-08 A | 2025-12-12 A | T-INT-MF-Z1-1100 SS | 100% |  | 2026-01-05 | 2026-01-09 |  |  |  |  |
| T-INT-MF-Z1-1300 |  | Electrical Fixtures- Ceilings |  | 3d | 2025-12-12 A | 2026-01-09 A | T-INT-MF-Z1-1330 | 100% |  | 2026-01-14 | 2026-01-16 |  |  |  | INT-Z1 |
| T-INT-MF-Z1-1280 |  | Plumbing Pipe Runs from Bold Centre to Mech Room |  | 5d | 2025-12-15 A | 2026-01-15 A |  | 100% |  | 2025-12-16 | 2025-12-22 |  |  |  | INT-Z1 |
| T-INT-MF-Z1-1330 |  | Electrical Runs |  | 5d | 2025-12-15 A | 2026-01-15 A | T-INT-MF-Z1-ER-1120 SS | 100% |  | 2026-01-07 | 2026-01-13 |  |  |  |  |
| T-INT-MF-Z1-1370 |  | Sprinkler Ceilings |  | 5d | 2025-12-15 A | 2026-01-14 A | T-INT-MF-Z1-1280 SS | 100% |  | 2025-12-16 | 2025-12-22 |  |  |  | INT-Z1 |
| T-INT-MF-Z1-1310 |  | Paint - Finish Coat |  | 5d | 2025-12-16 A | 2026-01-13 A | T-INT-MF-Z1-1350 | 100% |  | 2025-12-16 | 2025-12-22 |  |  |  | INT-Z1 |
| T-INT-MF-Z1-1360 |  | Open Exit Corridor for Egress |  | 1d | 2026-01-16 A | 2026-01-16 A | T-INT-MF-Z1-1310 | 100% |  | 2026-01-05 | 2026-01-05 |  |  |  | INT-Z1 |
|  | 6 | **Corridor Fitouts (AQ-C002 & AQ-C005)** |  |  | 2025-09-02 | 2026-04-20 |  |  |  |  |  |  |  |  |  |
| T-INT-MF-Z1-1080 |  | Install Stair |  | 5d | 2025-09-02 A | 2025-09-08 A | C-SOG-S1B-1040 | 100% |  | 2025-10-10 | 2025-10-17 |  |  |  | INT-Z1 |
| T-INT-MF-Z1-1100 |  | Pipe runs - branches to poke through into rooms |  | 10d | 2025-11-19 A | 2026-01-09 A | T-INT-MF-Z1-1010, IPP-QAQC-202 SS, T-INT-MF-Z1-1050 | 100% |  | 2025-11-21 | 2025-12-04 |  |  |  |  |
| T-INT-MF-Z1-1130 |  | Pre-board inspection - 1 |  | 1d | 2025-12-02 A | 2025-12-02 A | T-INT-MF-Z1-1200 | 100% |  | 2025-12-10 | 2025-12-10 |  |  |  |  |
| T-INT-MF-Z1-1262 |  | Drywall mud tape and finish remaining walls - 2 |  | 5d | 2025-12-03 A | 2025-12-08 A | T-INT-MF-Z1-1130 | 100% |  | 2025-12-10 | 2025-12-16 |  |  |  |  |
| T-INT-MF-Z1-1110 |  | Electrical Runs |  | 5d | 2025-12-08 A | 2026-03-13 | T-INT-MF-Z1-1100 FF, T-INT-MF-Z1-ER-1110 FF |  | 39d | 2025-12-22 | 2025-12-30 | 54d | 0d | 2026-02-20 |  |
| T-INT-MF-Z1-1190 |  | Painting - Prime, Plus One |  | 5d | 2026-01-05 A | 2026-01-09 A | T-INT-MF-Z1-1080, T-INT-MF-Z1-1262, T-INT-MF-Z1-1310 | 100% |  |  |  |  |  |  | INT-Z1 |
| T-INT-MF-Z1-1220 |  | T-Bar Ceiling Grid |  | 5d | 2026-03-16 | 2026-03-20 | T-INT-MF-Z1-1190, T-INT-MF-Z1-1110, T-INT-MF-Z1-1100 |  |  |  |  | 54d | 0d |  |  |
| T-INT-MF-Z1-1170 |  | Mechanical Fixtures- Ceilings |  | 10d | 2026-03-23 | 2026-04-06 | T-INT-MF-Z1-1100, T-INT-MF-Z1-1010, T-INT-MF-Z1-1220 |  |  |  |  | 54d | 0d |  | INT-Z1 |
| T-INT-MF-Z1-1180 |  | Electrical Fixtures- Ceilings |  | 10d | 2026-03-23 | 2026-04-06 | T-INT-MF-Z1-1110, T-INT-MF-Z1-1010, T-INT-MF-Z1-1220 |  |  |  |  | 54d | 0d |  | INT-Z1 |
| T-INT-MF-Z1-1250 |  | Ceiling Tiles |  | 5d | 2026-04-07 | 2026-04-13 | T-INT-MF-Z1-1180, T-INT-MF-Z1-1170 |  |  |  |  | 54d | 0d |  |  |
| T-INT-MF-Z1-1270 |  | Resilient Flooring |  | 5d | 2026-04-14 | 2026-04-20 | T-INT-MF-Z1-1250 |  |  |  |  | 54d | 0d |  |  |

| ID | WBS | Activity | Type | Duration | Start | Finish | Predecessors | Complete | Remaining | Planned start | Planned finish | Total float | Free float | Expected finish | Area- ID | #User-Text_01 | Comment |
| --- | --- | --- | --- | --- | --- | --- | --- | --- | --- | --- | --- | --- | --- | --- | --- | --- | --- |
|  | 1 | **Electrical Room (AQ152) Equipments & Fitouts** |  |  | 2025-10-27 | 2026-03-11 |  |  |  |  |  |  |  |  |  |  |  |
| T-INT-MF-Z1-ER-1020 |  | F/R/P Housekeeping Pads/Fire Rated Plywood |  | 2d | 2025-10-27 A | 2025-10-27 A | C-SOG-S1B-1050, T-INT-MF-Z1-1010 | 100% |  | 2025-11-03 | 2025-11-04 |  |  |  | INT-Z1 |  |  |
| T-INT-MF-Z1-ER-1050 |  | Room is Ready to Receive Equipment | milestone | 0d | 2025-10-28 A | 2025-10-28 A | T-INT-MF-Z1-ER-1020 FF | 100% |  | 2025-11-04 | 2025-11-04 |  |  |  | INT-Z1 |  |  |
| T-INT-MF-Z1-ER-1070 |  | Place CDP (6D5,6D6,2D4) |  | 5d | 2025-11-17 A | 2025-11-21 A | T-INT-MF-Z1-ER-1050, P-PRO-757 | 100% |  | 2025-11-21 | 2025-11-27 |  |  |  | INT-Z1 | 1 |  |
| T-INT-MF-Z1-ER-1090 |  | Place Power Panel |  | 10d | 2025-11-24 A | 2026-01-08 A | T-INT-MF-Z1-ER-1070 SS+7d, IPP-SAFE-182 | 100% |  | 2025-12-05 | 2025-12-18 |  |  |  | INT-Z1 | 5 |  |
| T-INT-MF-Z1-ER-1100 |  | Cable Pulling to the Electrical Room |  | 5d | 2025-11-24 A | 2025-12-04 A |  | 100% |  | 2025-12-05 | 2025-12-11 |  |  |  |  | 2 |  |
| T-INT-MF-Z1-ER-1080 |  | Place Transformer |  | 2d | 2026-01-08 A | 2026-01-09 A | P-PRO-787, T-INT-MF-Z1-ER-1050, T-INT-MF-Z1-ER-1070, T-INT-MF-Z1-ER-1090 SS+24d | 100% |  |  |  |  |  |  | INT-Z1 | 4 |  |
| T-INT-MF-Z1-ER-1030 |  | Door Install |  | 1d | 2026-01-12 A | 2026-01-19 | T-INT-MF-Z1-1190 |  | 1d | 2026-01-12 | 2026-01-12 | 73d | 0d | 2026-01-19 | INT-Z1 | TBC |  |
| T-INT-MF-Z1-ER-1120 |  | Distribution Conduits (CDP to Panels) |  | 5d | 2026-01-12 A | 2026-01-16 A | P-PRO-597, T-INT-MF-Z1-ER-1070 FF, T-INT-MF-Z1-ER-1080 | 100% |  |  |  |  |  |  | INT-Z1 | 3 |  |
| T-INT-MF-Z1-ER-1110 |  | Pull Branch Power For The Entire Building |  | 32d | 2026-01-19 | 2026-03-04 | T-INT-MF-Z1-ER-1100, T-INT-MF-Z1-ER-1080, T-INT-MF-Z1-ER-1120 SS |  |  |  |  | 42d | 0d |  |  | 6 |  |
| T-INT-MF-Z1-ER-1160 |  | CDP Feeds to L2 |  | 3d | 2026-01-19 | 2026-01-21 | T-INT-MF-Z1-ER-1100, T-INT-MF-Z1-ER-1120 |  |  |  |  | 61d | 0d |  |  |  |  |
| T-INT-MF-Z1-ER-1130 |  | Transformer is Ready for Energization | milestone | 0d | 2026-03-04 | 2026-03-04 | T-INT-MF-Z1-ER-1080, T-INT-MF-Z1-ER-1120, T-INT-MF-Z1-ER-1160 FF, T-INT-MF-Z1-ER-1110 FF, T-INT-MF-Z1-ER-1100 FF |  |  |  |  | 42d | 0d |  | INT-Z1 |  |  |
| T-INT-MF-Z1-ER-1140 |  | Inspection |  | 5d | 2026-03-05 | 2026-03-11 | T-INT-MF-Z1-ER-1130, T-INT-MF-Z1-ER-1030 |  |  |  |  | 42d | 0d |  | INT-Z1 |  |  |
| T-INT-MF-Z1-ER-1150 |  | Energization |  | 5d | 2026-03-05 | 2026-03-11 | T-INT-MF-Z1-ER-1140 SS, T-INT-MF-Z1-ER-1050 FF, T-INT-MF-Z1-ER-1070, T-INT-MF-Z1-ER-1080, IPP-SAFE-184 |  |  |  |  | 42d | 0d |  | INT-Z1 |  |  |
|  | 2 | **Mechanical Room (AQ153) Fitouts** |  |  | 2025-09-15 | 2026-04-28 |  |  |  |  |  |  |  |  |  |  |  |
| T-INT-MF-Z1-1000 |  | Fireproofing UnderSide of 2nd Floor Structure Steel Decking |  | 5d | 2025-09-15 A | 2025-09-29 A | P-SD-337, P-PRO-100, C-SS-PH3-1110, C-SOG-S1B-1050, C-FDN-PH3-1000 SS, C-FDN-PH3-1010, MIL-C-710, T-INT-MF-Z1-1010 SF | 100% |  | 2025-09-26 | 2025-10-02 |  |  |  | INT-Z1 |  |  |
| T-INT-MF-Z1-1010 |  | Steel Stud Framing - Full Height |  | 5d | 2025-09-26 A | 2025-11-03 A | C-SS-PH3-1110, P-PRO-167, C-SOG-S1B-1050, C-FDN-PH3-1000 SS, C-FDN-PH3-1010, MIL-C-630, IPP-SAFE-183 | 100% |  | 2025-09-26 | 2025-10-02 |  |  |  | INT-Z1 |  |  |
| T-INT-MF-Z1-1230 |  | Housekeeping pads |  | 1d | 2025-10-27 A | 2025-10-27 A | T-INT-BA-2030 | 100% |  |  |  |  |  |  |  |  |  |
| T-INT-MF-Z1-MR-1060 |  | Room is Ready to Receive Equipment | milestone | 0d | 2025-10-27 A | 2025-10-27 A | T-INT-MF-Z1-1230 FF | 100% |  |  |  |  |  |  | INT-Z1 |  |  |
| T-INT-MF-Z1-MR-1090 |  | Place of Boilers |  | 10d | 2025-11-03 A | 2025-11-07 A | P-PRO-567 | 100% |  | 2025-11-28 | 2025-12-11 |  |  |  | INT-Z1 |  |  |
| T-INT-MF-Z1-1050 |  | Drywall, Mud, Tape Inner Room & Corridor Top |  | 5d | 2025-11-04 A | 2025-11-07 A | IPP-QAQC-209 FF-1d, T-INT-MF-Z1-1010 | 100% |  | 2025-10-27 | 2025-10-31 |  |  |  | INT-Z1 |  |  |
| T-INT-MF-Z1-1200 |  | M/E Wall Rough In's |  | 5d | 2025-11-04 A | 2025-11-10 A | T-INT-MF-Z1-1010 | 100% |  | 2025-12-10 | 2025-12-16 |  |  |  |  | Logic? |  |
| T-INT-MF-Z1-1240 |  | Place Boilers |  | 4d | 2025-11-06 A | 2025-11-07 A | T-INT-MF-Z1-1230 FS+1d | 100% |  | 2025-10-29 | 2025-11-03 |  |  |  |  |  |  |
| T-INT-MF-Z1-MR-1080 |  | Mechanical Room Fitout Including Piping |  | 60d | 2025-11-10 A | 2026-03-12 | T-INT-MF-Z1-MR-1060, P-PRO-697 FF, T-INT-MF-Z1-1050 |  | 38d | 2025-12-10 | 2026-03-09 | 40d | 0d | 2026-03-12 | INT-Z1 |  | MN Increase from 46 to 60 |
| T-INT-MF-Z1-1140 |  | Fire Caulking |  | 1d | 2025-11-11 A | 2025-11-11 A | T-INT-MF-Z1-1050 FF, T-INT-MF-Z1-1010 FF, MIL-C-710 FF, IPP-QAQC-202 SF, T-INT-MF-Z1-1200 FF | 100% |  | 2025-12-10 | 2025-12-10 |  |  |  |  |  |  |
| T-INT-MF-Z1-1150 |  | Removal of Hoardings |  | 5d | 2025-12-16 A | 2026-01-22 | C-ENV-SID-CL-S-1050 FF+3d |  | 4d | 2025-12-16 | 2025-12-22 | 24d | 0d | 2026-01-22 |  |  |  |
| T-INT-MF-Z1-9010 |  | Pipe Runs Material Delivery |  | 30d | 2025-12-22 A | 2026-02-12 |  |  | 19d | 2025-12-22 | 2026-02-04 | 9d | 0d | 2026-02-12 |  |  |  |
| T-INT-MF-Z1-1120 |  | Pipe runs from Mechanical room to Level 2 |  | 11d | 2026-02-13 | 2026-03-02 | T-INT-MF-Z1-1150, T-INT-MF-Z1-9010 |  |  |  |  | 9d | 0d |  |  |  |  |
| T-INT-MF-Z1-1060 |  | Painting Drywall |  | 4d | 2026-03-03 | 2026-03-06 | P-PRO-169, T-INT-MF-Z1-1010, T-INT-MF-Z1-1000, T-INT-MF-Z1-1050, MIL-C-710, IPP-QAQC-202 SS, T-INT-MF-Z1-1120 |  |  |  |  | 45d | 0d |  | INT-Z1 |  |  |
| T-INT-MF-Z1-MR-1150 |  | Mechanical Piping Insulation |  | 40d | 2026-03-03 | 2026-04-28 | T-INT-MF-Z1-MR-1080 FF, T-INT-MF-Z1-1120 |  |  |  |  | 9d | 0d |  | INT-Z1 |  | MN Increase from 10 to 15 |
| T-INT-MF-Z1-1260 |  | Electrical Connections |  | 15d | 2026-03-05 | 2026-03-25 | T-INT-MF-Z1-1240, T-INT-MF-Z1-ER-1080, T-INT-MF-Z1-ER-1110, T-INT-MF-Z1-MR-1080 FF |  |  |  |  | 47d | 0d |  |  |  |  |
| T-INT-MF-Z1-1070 |  | Mechanical Fixtures- Ceilings |  | 10d | 2026-03-09 | 2026-03-20 | P-PRO-677, T-INT-MF-Z1-1200, T-INT-MF-Z1-MR-1080 FF, T-INT-MF-Z1-1060 |  |  |  |  | 58d | 20d |  | INT-Z1 |  |  |
| T-INT-MF-Z1-1090 |  | Electrical Fixtures- Ceilings |  | 10d | 2026-03-12 | 2026-03-25 | P-PRO-747, P-PRO-777, T-INT-MF-Z1-1260 FF, T-INT-MF-Z1-1240, T-INT-MF-Z1-1060 |  |  |  |  | 47d | 17d |  | INT-Z1 |  |  |
| T-INT-MF-Z1-MR-1040 |  | Door Install |  | 1d | 2026-03-13 | 2026-03-13 | T-INT-MF-Z1-MR-1090, T-INT-MF-Z1-MR-1080 |  |  |  |  | 40d | 31d |  | INT-Z1 |  |  |
| T-INT-MF-Z1-MR-1180 |  | Room Is Ready | milestone | 0d | 2026-04-28 | 2026-04-28 | T-INT-MF-Z1-MR-1080 FF, T-INT-MF-Z1-MR-1150 FF, T-INT-MF-Z1-MR-1040 FF, P-PRO-697 FF, C-SOG-S1B-1050 FF, T-INT-MF-Z1-1060 FF |  |  |  |  | 9d | 0d |  | INT-Z1 |  |  |

| ID | WBS | Activity | Type | Duration | Start | Finish | Predecessors | Complete | Remaining | Planned start | Planned finish | Total float | Free float | Constraint | Expected finish | Area- ID | #User-Text_01 | Comment |
| --- | --- | --- | --- | --- | --- | --- | --- | --- | --- | --- | --- | --- | --- | --- | --- | --- | --- | --- |
|  | 4 | **Deficiency** |  |  |  |  |  |  |  |  |  |  |  |  |  |  |  |  |
|  | 2 | **ZONE #2 - STAFF AREAS** |  |  | 2025-09-15 | 2026-05-01 |  |  |  |  |  |  |  |  |  |  |  |  |
| T-INT-MF-Z2-1000 |  | Fireproofing UnderSide of 2nd Floor Structure Steel Decking |  | 5d | 2025-09-15 A | 2025-09-19 A | P-PRO-100, C-SS-PH2-1100, C-SS-PH1-1070, T-INT-SF-2000, C-FDN-PH1-1010, C-FDN-NN-S6/S2A-1080 | 100% |  | 2025-09-26 | 2025-10-02 |  |  |  |  | INT-Z2 |  |  |
| T-INT-MF-Z2-1010 |  | Steel Stud Framing - Full Height |  | 7d | 2025-09-29 A | 2025-10-07 A | C-SOG-1100, T-INT-SF-2000, C-SOG-S1C/D-1060 | 100% |  | 2025-10-10 | 2025-10-21 |  |  |  |  | INT-Z2 | M/E-Steel Stud- Fire proof' |  |
| T-INT-MF-Z2-1020 |  | Wall Rough Ins (Electrical) |  | 7d | 2025-10-08 A | 2025-10-27 A | T-INT-MF-Z2-1010 | 100% |  | 2025-10-22 | 2025-10-30 |  |  |  |  | INT-Z2 |  |  |
| T-INT-MF-Z2-1040 |  | Wall Rough Ins (Mechanical) |  | 20d | 2025-10-08 A | 2025-10-27 A | T-INT-MF-Z2-1010 | 100% |  | 2025-10-22 | 2025-11-18 |  |  |  |  | INT-Z2 |  | MN Increase from 7 to 20 |
| T-INT-MF-Z2-1030 |  | Door Frames |  | 5d | 2025-10-30 A | 2025-11-07 A | T-INT-MF-Z2-1010, P-PRO-166 | 100% |  | 2025-10-30 | 2025-11-05 |  |  |  |  | INT-Z2 |  |  |
| T-INT-MF-Z2-1050 |  | Board Plenum Space (Tops) |  | 5d | 2025-11-03 A | 2025-11-07 A | T-INT-MF-Z2-1020, T-INT-MF-Z2-1040 | 100% |  | 2025-10-24 | 2025-10-30 |  |  |  |  |  |  |  |
| T-INT-MF-Z2-1060 |  | M/E wall inspection |  | 1d | 2025-11-24 A | 2025-11-24 A | T-INT-MF-Z2-1040, T-INT-MF-Z2-1020, T-INT-MF-Z2-1030, IPP-QAQC-219 | 100% |  | 2025-12-08 | 2025-12-08 |  |  |  |  |  |  |  |
| T-INT-MF-Z2-1170 |  | Drywall Board, Mud & Tape - Walls |  | 5d | 2025-11-25 A | 2025-12-03 A | T-INT-MF-Z2-1060, T-INT-MF-Z2-1050, T-INT-MF-Z2-1050 FF | 100% |  | 2025-12-09 | 2025-12-15 |  |  |  |  |  |  |  |
| T-INT-MF-Z2-1070 |  | Prime and Paint |  | 5d | 2025-12-16 A | 2026-01-16 A | T-INT-MF-Z2-1170, T-INT-MF-Z2-1040, T-INT-MF-Z2-1020, T-INT-MF-Z2-1030, IPP-QAQC-219, T-INT-MF-Z1-1190 | 100% |  | 2025-12-16 | 2025-12-22 |  |  |  |  | INT-Z2 |  |  |
| T-INT-MF-Z2-1210 |  | Pipe Runs- Incoming From Zone 1 |  | 10d | 2025-12-16 A | 2026-01-09 A | T-INT-MF-Z2-1010, T-INT-MF-Z2-1000, T-INT-MF-Z2-1020, T-INT-MF-Z2-1040, T-INT-MF-Z2-1030, IPP-QAQC-219, T-INT-MF-Z1-1100 | 100% |  | 2025-12-16 | 2025-12-31 |  |  |  |  |  |  |  |
| T-INT-MF-Z2-1080 |  | Door Install |  | 5d | 2026-01-05 A | 2026-01-09 A | T-INT-MF-Z2-1070 | 100% |  |  |  |  |  |  |  | INT-Z2 |  |  |
| T-INT-MF-Z2-1100 |  | Ceiling T-Bar and Perimeter/ Devices Tiles |  | 10d | 2026-01-26 | 2026-02-06 | T-INT-MF-Z2-1070, T-INT-MF-Z2-1210, T-INT-MF-Z2-1080 |  |  |  |  | 15d | 0d | start on or after 2026-01-26 |  | INT-Z2 |  |  |
| T-INT-MF-Z2-1110 |  | Tiling |  | 15d | 2026-02-09 | 2026-03-02 | P-PRO-168, T-INT-MF-Z2-1070, T-INT-MF-Z2-1100 |  |  |  |  | 15d | 0d |  |  | INT-Z2 |  |  |
| T-INT-MF-Z2-1230 |  | Interior Storefront (BL 3, 5 8, 9, 10) |  | 3d | 2026-03-03 | 2026-03-05 | T-INT-MF-Z2-1110 |  |  |  |  | 64d | 25d |  |  | INT-Z2 |  |  |
| T-INT-MF-Z2-1090 |  | Millwork |  | 5d | 2026-03-20 | 2026-03-26 | T-INT-MF-Z2-1070, P-PRO-165, T-INT-MF-Z2-1110 FS+13d |  |  |  |  | 15d | 0d |  |  | INT-Z2 | Gap |  |
| T-INT-MF-Z2-1130 |  | Electrical Fixtures |  | 10d | 2026-03-27 | 2026-04-10 | T-INT-MF-Z2-1090, T-INT-MF-Z2-1110, P-PRO-747, P-PRO-767, P-PRO-777 |  |  |  |  | 36d | 5d |  |  | INT-Z2 |  |  |
| T-INT-MF-Z2-1220 |  | Millwork Countertops |  | 1d | 2026-04-10 | 2026-04-10 | T-INT-MF-Z2-1090, T-INT-MF-Z3-1270 |  |  |  |  | 26d | 0d |  |  | INT-Z2 |  | MN Decrease from 10 to 5 |
| T-INT-MF-Z2-1120 |  | Mechanical Fixtures |  | 5d | 2026-04-13 | 2026-04-17 | T-INT-MF-Z2-1090, T-INT-MF-Z2-1110, P-PRO-677, P-PRO-627, P-PRO-657, T-INT-MF-Z2-1230, T-INT-MF-Z2-1220 |  |  |  |  | 39d | 0d |  |  | INT-Z2 |  | MN Decrease from 10 to 5 |
| T-INT-MF-Z2-1140 |  | Finish Paint |  | 5d | 2026-04-20 | 2026-04-24 | T-INT-MF-Z2-1120, T-INT-MF-Z2-1130, T-INT-MF-Z2-1110, T-INT-MF-Z2-1080 |  |  |  |  | 45d | 0d |  |  | INT-Z2 |  |  |
| T-INT-MF-Z2-1150 |  | Install of Remaining Ceiling Tiles |  | 5d | 2026-04-27 | 2026-05-01 | T-INT-MF-Z2-1100, T-INT-MF-Z2-1140 |  |  |  |  | 45d | 0d |  |  | INT-Z2 |  |  |
| T-INT-MF-Z2-9000 |  | Zone 2 Completion | milestone | 0d | 2026-05-01 | 2026-05-01 | T-INT-MF-Z2-1000 FF, T-INT-MF-Z2-1010 FF, T-INT-MF-Z2-1040 FF, T-INT-MF-Z2-1020 FF, T-INT-MF-Z2-1030 FF, T-INT-MF-Z2-1050 FF, T-INT-MF-Z2-1060 FF, T-INT-MF-Z2-1170 FF, T-INT-MF-Z2-1070 FF, T-INT-MF-Z2-1210 FF, T-INT-MF-Z2-1080 FF, T-INT-MF-Z2-1100 FF, T-INT-MF-Z2-1110 FF, T-INT-MF-Z2-1230 FF, T-INT-MF-Z2-1090 FF, T-INT-MF-Z2-1120 FF, T-INT-MF-Z2-1130 FF, T-INT-MF-Z2-1220 FF, T-INT-MF-Z2-1140 FF, T-INT-MF-Z2-1150 FF |  |  |  |  | 71d |  |  |  | INT-Z2 |  |  |
|  | 3 | **ZONE #3 - CHANGE ROOMS** |  |  | 2025-09-15 | 2026-06-04 |  |  |  |  |  |  |  |  |  |  |  |  |
| T-INT-MF-Z3-1010 |  | Fireproofing UnderSide of 2nd Floor Structure Steel Decking |  | 15d | 2025-09-15 A | 2025-09-29 A | P-PRO-100, T-INT-MF-Z2-1000, T-INT-MF-Z1-1000 FF | 100% |  | 2025-09-30 | 2025-10-21 |  |  |  |  | INT-Z3 |  |  |
| T-INT-MF-Z3-1020 |  | Mechanical Carrier Installation |  | 5d | 2025-10-01 A | 2025-11-12 A | C-SOG-S1C/D-1070, C-FDN-A7A-1040, C-FDN-A5-1080, C-FDN-A5-1090 | 100% |  | 2025-10-10 | 2025-10-17 |  |  |  |  |  |  |  |
| T-INT-MF-Z3-1030 |  | Masonry - Concrete Block Walls |  | 20d | 2025-10-01 A | 2025-11-12 A | P-PRO-158, C-FDN-A7A-1040, C-FDN-A5-1080, C-FDN-A5-1090, T-INT-MF-Z3-1010 FS+1d | 100% |  | 2025-10-10 | 2025-11-07 |  |  |  |  | INT-Z3 |  |  |
| T-INT-MF-Z3-1040 |  | Electrical Wall Rough-In |  | 15d | 2025-10-10 A | 2025-11-21 A | T-INT-MF-Z3-1020 SS | 100% |  | 2025-10-10 | 2025-10-31 |  |  |  |  |  |  |  |
| T-INT-MF-Z3-1060 |  | Mechanical Ceiling Rough In's |  | 10d | 2025-11-05 A | 2026-02-06 | T-INT-MF-Z3-1030 SS+7d, T-INT-MF-Z3-1040, P-TEA-21 SS, T-INT-MF-Z3-1030, T-INT-MF-Z3-1050 FF | 100% | 9d | 2025-11-10 | 2025-11-21 | 6d | 0d |  | 2026-01-30 | INT-Z3 |  | MN Increase from 15 to 25 |
| T-INT-MF-Z3-1070 |  | Electrical Ceiling Rough In's (Includes Branch power Pathways) |  | 15d | 2025-11-21 A | 2026-02-06 | T-INT-MF-Z3-1030, T-INT-MF-Z3-1050 FF | 100% | 8d | 2025-12-05 | 2025-12-29 | 6d | 0d |  | 2026-01-29 | INT-Z3 |  |  |
| T-INT-MF-Z3-1280 |  | Trench Drains |  | 10d | 2026-01-15 A | 2026-02-06 | T-INT-MF-Z3-1050 FF |  | 15d | 2025-12-16 | 2025-12-31 | 33d | 0d |  | 2026-02-06 | INT-Z3 |  |  |
| T-INT-MF-Z3-1050 |  | Tiling - Topping Slab |  | 0d | 2026-02-06 | 2026-02-06 | T-INT-MF-Z3-1010, T-INT-MF-Z3-1040, T-INT-MF-Z3-1020, T-INT-MF-Z3-1030, T-INT-MF-Z5-1090 |  |  |  |  | 6d | 0d |  | 2026-01-23 | INT-Z3 |  |  |
| T-INT-MF-Z3-1080 |  | Ceiling and Bulkhead Framing |  | 7d | 2026-02-06 | 2026-02-17 | T-INT-MF-Z3-1030, T-INT-MF-Z3-1070, T-INT-MF-Z3-1060 |  |  |  |  | 6d | 0d |  |  | INT-Z3 |  |  |
| T-INT-MF-Z3-1250 |  | Sprinkler Heads |  | 5d | 2026-02-18 | 2026-02-24 | T-INT-MF-Z3-1080 |  |  |  |  | 6d | 0d |  |  | INT-Z3 |  |  |
| T-INT-MF-Z3-1090 |  | Ceiling Inspection |  | 1d | 2026-02-25 | 2026-02-25 | T-INT-MF-Z3-1080, T-INT-MF-Z3-1250 |  |  |  |  | 6d | 0d |  |  |  |  |  |
| T-INT-MF-Z3-1100 |  | Ceiling Drywall Install |  | 3d | 2026-02-26 | 2026-03-02 | T-INT-MF-Z3-1060, T-INT-MF-Z3-1070, MIL-C-440, T-INT-MF-Z3-1080, IPP-QAQC-229, T-INT-MF-Z3-1090, T-INT-MF-Z3-1050, T-INT-MF-Z3-1280 SS |  |  |  |  | 6d | 0d |  |  | INT-Z3 |  |  |
| T-INT-MF-Z3-1110 |  | Ceiling Mud, Tape and Sand |  | 2d | 2026-03-03 | 2026-03-04 | T-INT-MF-Z3-1100 |  |  |  |  | 6d | 0d |  |  | INT-Z3 |  |  |
| T-INT-MF-Z3-1120 |  | Paint - Prime Plus One |  | 10d | 2026-03-05 | 2026-03-18 | T-INT-MF-Z3-1110, IPP-QAQC-239, T-INT-MF-Z3-1030, T-INT-MF-Z3-1010 |  |  |  |  | 6d | 0d |  |  | INT-Z3 |  |  |
| T-INT-MF-Z3-1150 |  | Tiling - Floor |  | 15d | 2026-03-19 | 2026-04-09 | T-INT-MF-Z3-1120, T-INT-MF-Z3-1050 |  |  |  |  | 6d | 0d |  |  | INT-Z3 |  |  |
| T-INT-MF-Z3-1200 |  | Lockers |  | 10d | 2026-03-19 | 2026-04-01 | P-PRO-253, T-INT-MF-Z3-1120 |  |  |  |  | 26d | 0d |  |  | INT-Z3 |  |  |
| T-INT-MF-Z3-1270 |  | Millwork/Lockers |  | 5d | 2026-04-02 | 2026-04-09 | T-INT-MF-Z3-1200, T-INT-MF-Z2-1090 |  |  |  |  | 26d | 0d |  |  | INT-Z3 |  |  |
| T-INT-MF-Z3-1130 |  | Millwork - Vanities |  | 7d | 2026-04-10 | 2026-04-20 | T-INT-MF-Z3-1150, T-INT-MF-Z2-1090 |  |  |  |  | 6d | 0d |  |  | INT-Z3 | Gap |  |
| T-INT-MF-Z3-1170 |  | Electrical Fixtures |  | 15d | 2026-04-21 | 2026-05-11 | P-PRO-747, P-PRO-777, T-INT-MF-Z3-1130 |  |  |  |  | 15d | 7d |  |  | INT-Z3 |  |  |
| T-INT-MF-Z3-1240 |  | Millwork Countertops |  | 2d | 2026-04-21 | 2026-04-22 | T-INT-MF-Z3-1130, T-INT-MF-Z2-1220 |  |  |  |  | 20d | 0d |  |  | INT-Z3 |  |  |
| T-INT-MF-Z3-1140 |  | Wall Tiling |  | 15d | 2026-04-23 | 2026-05-13 | T-INT-MF-Z3-1150, T-INT-MF-Z3-1240 |  |  |  |  | 22d | 0d |  |  | INT-Z3 |  |  |
| T-INT-MF-Z3-1160 |  | Mechanical Fixtures |  | 15d | 2026-04-23 | 2026-05-13 | P-PRO-677, P-PRO-627, P-PRO-657, T-INT-MF-Z3-1130, T-INT-MF-Z3-1240 |  |  |  |  | 21d | 15d |  |  | INT-Z3 |  |  |
| T-INT-MF-Z3-1180 |  | Washroom Accessories |  | 5d | 2026-05-14 | 2026-05-21 | P-PRO-243, T-INT-MF-Z3-1140 |  |  |  |  | 32d | 10d |  |  | INT-Z3 |  |  |
| T-INT-MF-Z3-1190 |  | Toilet Partitions |  | 15d | 2026-05-14 | 2026-06-04 | P-PRO-233, T-INT-MF-Z3-1140 |  |  |  |  | 22d | 0d |  |  | INT-Z3 |  |  |
| T-INT-MF-Z3-1220 |  | Final Paint |  | 5d | 2026-05-29 | 2026-06-04 | T-INT-MF-Z3-1190 FF, T-INT-MF-Z3-1200, T-INT-MF-Z3-1240, P-PRO-183 |  |  |  |  | 22d | 0d |  |  | INT-Z3 |  |  |
| T-INT-MF-Z3-1260 |  | Zone 03 Completion | milestone | 0d | 2026-06-04 | 2026-06-04 | T-INT-MF-Z3-1010 FF, T-INT-MF-Z3-1030 FF, T-INT-MF-Z3-1020 FF, T-INT-MF-Z3-1040 FF, T-INT-MF-Z3-1060 FF, T-INT-MF-Z3-1070 FF, T-INT-MF-Z3-1080 FF, T-INT-MF-Z3-1250 FF, T-INT-MF-Z3-1090 FF, T-INT-MF-Z3-1100 FF, T-INT-MF-Z3-1110 FF, T-INT-MF-Z3-1050 FF, T-INT-MF-Z3-1120 FF, T-INT-MF-Z3-1200 FF, T-INT-MF-Z3-1150 FF, T-INT-MF-Z3-1130 FF, T-INT-MF-Z3-1160 FF, T-INT-MF-Z3-1170 FF, T-INT-MF-Z3-1240 FF, T-INT-MF-Z3-1140 FF, T-INT-MF-Z3-1180 FF, T-INT-MF-Z3-1190 FF, T-INT-MF-Z3-1220 FF |  |  |  |  | 48d |  |  |  | INT-Z3 |  |  |

| ID | WBS | Activity | Type | Duration | Start | Finish | Predecessors | Complete | Remaining | Planned start | Planned finish | Total float | Free float | Expected finish | Area- ID |
| --- | --- | --- | --- | --- | --- | --- | --- | --- | --- | --- | --- | --- | --- | --- | --- |
|  | 4 | **ZONE #4 - POOL MECHANICAL, STORAGE, CHEMICAL, ROOMS** |  |  | 2025-11-14 | 2026-05-21 |  |  |  |  |  |  |  |  |  |
| T-INT-MF-Z4-9000 |  | Zone 04 Completion | milestone | 0d | 2026-05-21 | 2026-05-21 | T-INT-MF-Z4-1080, T-INT-MF-Z4-1010, T-INT-MF-Z4-1000, T-INT-MF-Z4-1110, T-INT-MF-Z4-1020, T-INT-MF-Z4-1040, T-INT-MF-Z4-1070, T-INT-MF-Z4-1140, T-INT-MF-Z4-1150, T-INT-MF-Z4-1160, T-INT-MF-Z4-1170, T-INT-MF-Z4-1230, T-INT-MF-Z4-1090, T-INT-MF-Z4-1130, T-INT-MF-Z4-1190, T-INT-MF-Z4-1120, T-INT-MF-Z4-1180, T-INT-MF-Z4-1200, T-INT-MF-Z4-1210 |  |  |  |  | 58d |  |  |  |
|  | 3 | **Prep & Rough-Ins** |  |  | 2025-11-14 | 2026-03-03 |  |  |  |  |  |  |  |  |  |
| T-INT-MF-Z4-1080 |  | F/R/P Housekeeping Pads |  | 0d | 2025-11-14 A | 2025-11-14 A | T-INT-SF-MR-2130 SS | 100% |  | 2025-12-05 | 2025-12-05 |  |  |  | INT-Z4 |
| T-INT-MF-Z4-1010 |  | Curbs |  | 5d | 2025-11-17 A | 2025-11-21 A | T-INT-MF-Z4-1080 | 100% |  | 2025-12-05 | 2025-12-11 |  |  |  |  |
| T-INT-MF-Z4-1000 |  | Block Wall |  | 12d | 2025-11-24 A | 2026-01-30 | C-SS-PH3-1110, C-FDN-PH3-1000 SS, C-FDN-PH3-1010, C-FDN-A7A-1040, C-FDN-A5-1080, C-FDN-A5-1090, T-INT-MF-Z4-1010, T-INT-MF-Z3-1030, T-INT-MF-Z4-9010 FF, C-Z5-NN-FRA-1020 FF |  | 10d | 2025-12-12 | 2025-12-31 | 8d | 0d | 2026-01-30 | INT-Z4 |
| T-INT-MF-Z4-1020 |  | Electrical Rough In's- Ceiling & Wall |  | 17d | 2025-11-24 A | 2026-02-09 | T-INT-MF-Z4-1000 SS, T-INT-MF-Z4-1000 FF+5d, T-INT-MF-Z4-9010 FF |  | 16d | 2025-12-05 | 2025-12-31 | 12d | 0d | 2026-02-09 | INT-Z4 |
| T-INT-MF-Z4-9010 |  | Door Frame Install |  | 1d | 2026-01-19 | 2026-01-19 |  |  |  |  |  | 17d | 0d | 2026-01-19 | INT-Z4 |
| T-INT-MF-Z4-1040 |  | Mechanical Rough In's- Ceiling & Wall |  | 10d | 2026-02-02 | 2026-02-13 | T-INT-MF-Z4-1000, P-TEA-21 SS, T-INT-MF-Z1-1100 |  |  |  |  | 8d | 0d |  | INT-Z4 |
| T-INT-MF-Z4-1110 |  | Drywall, mud, tape |  | 5d | 2026-02-02 | 2026-02-06 | T-INT-MF-Z4-1000 |  |  |  |  | 14d | 6d |  |  |
| T-INT-MF-Z4-1070 |  | Prime and Paint- Prime Plus one |  | 10d | 2026-02-18 | 2026-03-03 | T-INT-MF-Z4-1040, T-INT-MF-Z4-1020, IPP-QAQC-249, T-INT-MF-Z4-1110 |  |  |  |  | 8d | 0d |  | INT-Z4 |
|  | 1 | **Install Pool Equipment** |  |  | 2026-02-25 | 2026-05-06 |  |  |  |  |  |  |  |  |  |
| T-INT-MF-Z4-1140 |  | pH Feeders |  | 50d | 2026-02-25 | 2026-05-06 | P-PRO-293, T-INT-MF-Z4-1070 SS+5d |  |  |  |  | 8d | 0d |  |  |
| T-INT-MF-Z4-1150 |  | Storage |  | 50d | 2026-02-25 | 2026-05-06 | P-PRO-303, T-INT-MF-Z4-1070 SS+5d |  |  |  |  | 8d | 0d |  |  |
| T-INT-MF-Z4-1160 |  | Pumps and Boosters |  | 50d | 2026-02-25 | 2026-05-06 | P-PRO-333, T-INT-MF-Z4-1070 SS+5d |  |  |  |  | 8d | 0d |  |  |
| T-INT-MF-Z4-1170 |  | Flow Meters |  | 50d | 2026-02-25 | 2026-05-06 | P-PRO-353, T-INT-MF-Z4-1070 SS+5d |  |  |  |  | 8d | 0d |  |  |
| T-INT-MF-Z4-1230 |  | Completion of Pool Equipment Installation |  | 1d | 2026-05-06 | 2026-05-06 | T-INT-MF-Z4-1140 FF, T-INT-MF-Z4-1150 FF, T-INT-MF-Z4-1160 FF, T-INT-MF-Z4-1170 FF |  |  |  |  | 8d | 0d |  |  |
|  | 2 | **Install Mechanical Equipment & Fitouts** |  |  | 2026-02-02 | 2026-04-14 |  |  |  |  |  |  |  |  |  |
| T-INT-MF-Z4-1090 |  | Place of Mechanical Equipments & Fitouts |  | 50d | 2026-02-02 | 2026-04-14 | P-PRO-517, T-INT-MF-Z4-1000 |  |  |  |  | 19d | 0d |  | INT-Z4 |
|  | 4 | **Finishing** |  |  | 2025-12-01 | 2026-05-21 |  |  |  |  |  |  |  |  |  |
| T-INT-MF-Z4-1130 |  | Install Stair Railing |  | 5d | 2025-12-01 A | 2025-12-05 A | T-INT-MF-Z4-1010 | 100% |  | 2026-01-28 | 2026-02-03 |  |  |  | INT-Z4 |
| T-INT-MF-Z4-1120 |  | Mechanical Fixtures |  | 5d | 2026-04-15 | 2026-04-21 | P-PRO-677, P-PRO-627, P-PRO-657, T-INT-MF-Z4-1090, P-PRO-313 |  |  |  |  | 19d | 11d |  | INT-Z4 |
| T-INT-MF-Z4-1190 |  | Door Install |  | 1d | 2026-04-15 | 2026-04-15 | T-INT-MF-Z4-1090, T-INT-MF-Z4-1090 FF |  |  |  |  | 37d | 20d |  | INT-Z4 |
| T-INT-MF-Z4-1200 |  | Electrical Connections |  | 5d | 2026-05-07 | 2026-05-13 | T-INT-MF-Z4-1120, T-INT-MF-Z4-1090, T-INT-MF-Z4-1230 |  |  |  |  | 8d | 0d |  |  |
| T-INT-MF-Z4-1180 |  | Electrical Fixtures |  | 5d | 2026-05-14 | 2026-05-21 | T-INT-MF-Z4-1130, P-PRO-747, P-PRO-777, T-INT-MF-Z4-1090, T-INT-MF-Z4-1200 |  |  |  |  | 8d | 0d |  | INT-Z4 |
| T-INT-MF-Z4-1210 |  | Final Paint |  | 5d | 2026-05-14 | 2026-05-21 | T-INT-MF-Z4-1200, T-INT-MF-Z4-1190 |  |  |  |  | 17d | 0d |  |  |

Notes:
- T-INT-MF-Z4-1040: Comment: MN Increase from 15 to 20
- T-INT-MF-Z4-1140: Comment: Main floor
- T-INT-MF-Z4-1150: Comment: Main floor
- T-INT-MF-Z4-1160: Comment: Basement and Main
- T-INT-MF-Z4-1170: Comment: Main floor
- T-INT-MF-Z4-1090: Comment: opening in wall need to be left to allow equipment to be into room

| ID | WBS | Activity | Type | Duration | Start | Finish | Predecessors | Complete | Remaining | Planned start | Planned finish | Total float | Free float | Expected finish | Area- ID | #User-Text_01 | Comment |
| --- | --- | --- | --- | --- | --- | --- | --- | --- | --- | --- | --- | --- | --- | --- | --- | --- | --- |
|  | 5 | **Deficiency** |  |  |  |  |  |  |  |  |  |  |  |  |  |  |  |
|  | 5 | **ZONE #5 - NATATORIUM, STEAM AND SAUNA, VIEWING** |  |  | 2025-11-21 | 2026-06-09 |  |  |  |  |  |  |  |  |  |  |  |
|  | 8 | **North Natatorium** |  |  | 2025-11-21 | 2026-05-04 |  |  |  |  |  |  |  |  |  |  |  |
| T-INT-MF-Z5-9000 |  | Zone 05 Completion- North Natatorium | milestone | 0d | 2026-05-04 | 2026-05-04 | T-INT-MF-Z5-1280 FF, T-INT-MF-Z5-1300 FF, T-INT-MF-Z5-2760 FF, T-INT-MF-Z5-1040 FF, T-INT-MF-Z5-1140 FF, T-INT-MF-Z5-1220 FF, T-INT-MF-Z5-1030 FF, T-INT-MF-Z5-1320 FF, T-INT-MF-Z5-2750 FF, T-INT-MF-Z5-2740 FF, T-INT-MF-Z5-1290 FF, T-INT-MF-Z5-1010 FF, T-INT-MF-Z5-1130 FF, T-INT-MF-Z5-1270 FF, T-INT-MF-Z5-2780 FF, T-INT-MF-Z5-1340 FF, T-INT-MF-Z5-1050 FF, T-INT-MF-Z5-2770 FF, T-INT-MF-Z5-1310 FF, T-INT-MF-Z5-2900 FF, T-INT-MF-Z5-1120 FF, T-INT-MF-Z5-2790 FF, T-INT-MF-Z5-1020 FF, T-INT-MF-Z5-1100 FF, T-INT-MF-Z5-1080 FF, T-INT-MF-Z5-1090 FF, T-INT-MF-Z5-1150 FF, T-INT-MF-Z5-2310 FF, T-INT-MF-Z5-1210 FF, T-INT-MF-Z5-2920 FF, T-INT-MF-Z5-2870 FF, T-INT-MF-Z5-2860 FF, T-INT-MF-Z5-1180 FF, T-INT-MF-Z5-1230 FF, T-INT-MF-Z5-1110 FF |  |  |  |  | 70d |  |  |  |  |  |
|  | 1 | **Prep & Rough-In's** |  |  | 2025-11-21 | 2026-03-09 |  |  |  |  |  |  |  |  |  |  |  |
| T-INT-MF-Z5-1280 |  | Remove Tarps N Wall |  | 0d | 2025-11-21 A | 2025-11-21 A | T-INT-MF-Z2-1050 | 100% |  | 2025-12-05 | 2025-12-05 |  |  |  |  |  |  |
| T-INT-MF-Z5-1300 |  | Leisure Pool- Setup DanceFloor Scaffold |  | 3d | 2025-11-24 A | 2025-12-01 A | C-FDN-NN-S6/S2A-1080, C-SOG-S1C/D-1060, C-FDN-A14-1090, C-FDN-A15-1040, C-FDN-PH1-1010, C-FDN-PH3-1000, C-FDN-PH3-1010, MIL-C-670, C-FDN-NN-1690, C-FDN-NN-1700, C-FDN-SN-S1E/S1F/S7/S2B-1100 FF, C-FDN-A8-1070 FF, C-FDN-PH3-1010 FF, MIL-C-650 FF | 100% |  | 2025-12-05 | 2025-12-09 |  |  |  |  |  |  |
| T-INT-MF-Z5-1220 |  | HVAC Wall Rough-Ins |  | 5d | 2025-11-26 A | 2026-01-07 A | T-INT-MF-Z5-1280, C-Z5-NN-HVAC-1000 FF | 100% |  | 2025-12-05 | 2025-12-11 |  |  |  |  |  |  |
| T-INT-MF-Z5-2760 |  | Permanent Gas Connection |  | 0d | 2025-12-03 A | 2025-12-03 A |  | 100% |  | 2025-12-05 | 2025-12-05 |  |  |  |  |  |  |
| T-INT-MF-Z5-1040 |  | Leak Test Pool B |  | 15d | 2025-12-04 A | 2025-12-16 A | C-FDN-A7-1130, C-FDN-A8-1080, X-LP-1020, C-FDN-A15-1030, C-SOG-S1C/D-1060, C-FDN-SN-LPT-1040, C-FDN-A15-1040, C-FDN-NN-S6/S2A-1080, C-FDN-A14-1090, C-FDN-A7-SN-1390 SS+10d, T-INT-MF-Z5-1300, C-FDN-SN-S1E/S1F/S7/S2B-1100, C-FDN-A8-1070, C-FDN-PH3-1010, MIL-C-650, IPP-QAQC-299 | 100% |  | 2025-12-05 | 2025-12-29 |  |  |  | INT-Z5 |  |  |
| T-INT-MF-Z5-1140 |  | Hanger Installation |  | 5d | 2025-12-04 A | 2025-12-17 A | T-INT-MF-Z5-1300 | 100% |  | 2025-12-05 | 2025-12-11 |  |  |  |  |  |  |
| T-INT-MF-Z5-1030 |  | Ceiling Electrical |  | 5d | 2025-12-08 A | 2025-12-19 A | T-INT-MF-Z5-1300 | 100% |  | 2025-12-10 | 2025-12-16 |  |  |  | INT-Z5 |  |  |
| T-INT-MF-Z5-1320 |  | Electrical Wall Rough-Ins |  | 10d | 2025-12-09 A | 2026-01-14 A | T-INT-MF-Z5-1280, C-ENV-SID-CL-AC-1110, T-INT-MF-Z5-2750 SS, T-INT-MF-Z5-2750, C-Z5-NN-ELEC-1010 SS | 100% |  | 2025-12-16 | 2025-12-31 |  |  |  |  |  |  |
| T-INT-MF-Z5-2740 |  | Leak Test Pool C |  | 6d | 2025-12-16 A | 2026-01-06 A | C-FDN-A7-1130, C-FDN-A8-1080, X-LP-1020, C-FDN-A15-1030, C-SOG-S1C/D-1060, C-FDN-SN-LPT-1040, C-FDN-A15-1040, C-FDN-NN-S6/S2A-1080, C-FDN-A14-1090, C-FDN-A7-SN-1390 SS+10d, T-INT-MF-Z5-1300, C-FDN-SN-S1E/S1F/S7/S2B-1100, C-FDN-A8-1070, C-FDN-PH3-1010, MIL-C-650, C-FDN-NN-1480 | 100% |  | 2026-01-19 | 2026-01-26 |  |  |  | INT-Z5 |  |  |
| T-INT-MF-Z5-1010 |  | Acoustic Spray |  | 8d | 2025-12-19 A | 2026-01-09 A | P-PRO-213, T-INT-MF-Z5-1300, T-INT-MF-Z5-1140, T-INT-MF-Z5-1030 SS+8d | 100% |  | 2026-01-19 | 2026-01-28 |  |  |  | INT-Z5 |  |  |
| T-INT-MF-Z5-2750 |  | Wall & Bulkhead Framing |  | 4d | 2025-12-22 A | 2026-01-14 A | T-INT-MF-Z2-1050, T-INT-MF-Z5-1280, T-INT-MF-Z5-1220 FF | 100% |  | 2026-01-19 | 2026-01-22 |  |  |  |  |  |  |
| T-INT-MF-Z5-1290 |  | Cement Board Install |  | 5d | 2026-01-06 A | 2026-01-23 | T-INT-MF-Z5-1220 SS+3d, T-INT-MF-Z5-1320, IPP-QAQC-259 FF, C-MOB-210, C-Z5-NN-ELEC-1010 FF |  | 5d | 2026-01-23 | 2026-01-29 | 8d | 0d | 2026-01-23 |  | Plenum Box Delivery? |  |
| T-INT-MF-Z5-1340 |  | Sprinkler Ceiling |  | 5d | 2026-01-19 | 2026-01-23 | T-INT-MF-Z5-1010 |  |  |  |  | 2d | 0d |  |  |  |  |
| T-INT-MF-Z5-1050 |  | Ceiling Painting |  | 4d | 2026-01-26 | 2026-01-29 | T-INT-MF-Z5-1340 |  |  |  |  | 2d | 0d |  | INT-Z5 |  |  |
| T-INT-MF-Z5-1130 |  | Wall Cladding (Z Bars & J Trim) |  | 5d | 2026-01-26 | 2026-01-30 | T-INT-MF-Z5-1290 |  |  |  |  | 8d | 0d |  |  |  |  |
| T-INT-MF-Z5-9020 |  | Ceiling Clean |  | 2d | 2026-01-30 | 2026-02-02 | T-INT-MF-Z5-1050 |  |  |  |  | 2d | 0d |  |  |  |  |
| T-INT-MF-Z5-1270 |  | Wall Spray Foam |  | 5d | 2026-02-02 | 2026-02-06 | T-INT-MF-Z5-1130 |  |  |  |  | 33d | 8d |  |  |  |  |
| T-INT-MF-Z5-2780 |  | High Performance Wall Coating- North |  | 5d | 2026-02-02 | 2026-02-06 | T-INT-MF-Z5-1130 |  |  |  |  | 8d | 0d |  | INT-Z5 |  |  |
| T-INT-MF-Z5-1310 |  | Leisure Pool- Dismantle Dancefloor Scaffolding |  | 5d | 2026-02-03 | 2026-02-09 | T-INT-MF-Z5-1300, T-INT-MF-Z5-1050, T-INT-MF-Z5-9020 |  |  |  |  | 2d | 0d |  |  |  |  |
| T-INT-MF-Z5-1020 |  | Ceiling Mechanical (Includes Perimeter HVAC) |  | 20d | 2026-02-09 | 2026-03-09 | T-INT-MF-Z5-2780 |  |  |  |  | 15d | 0d |  | INT-Z5 |  | MN Increase from 27 to 30 |
| T-INT-MF-Z5-2770 |  | High Performance Wall Coating- West |  | 8d | 2026-02-09 | 2026-02-19 | T-INT-MF-Z5-2780 |  |  |  |  | 8d | 0d |  | INT-Z5 |  |  |
| T-INT-MF-Z5-2900 |  | Pool Slab Remediation |  | 3d | 2026-02-10 | 2026-02-12 | T-INT-MF-Z5-1310 |  |  |  |  | 2d | 0d |  |  |  |  |
| T-INT-MF-Z5-1120 |  | High Performance Wall Coating- East |  | 9d | 2026-02-20 | 2026-03-04 | T-INT-MF-Z5-2770 |  |  |  |  | 8d | 0d |  | INT-Z5 |  |  |
| T-INT-MF-Z5-2790 |  | Wall Cladding |  | 10d | 2026-02-20 | 2026-03-05 | T-INT-MF-Z5-1270, T-INT-MF-Z5-2780, T-INT-MF-Z5-2770 |  |  |  |  | 25d | 0d |  |  |  |  |

| ID | WBS | Activity | Type | Duration | Start | Finish | Predecessors | Complete | Remaining | Planned start | Planned finish | Total float | Free float | Expected finish | #User-Text_01 | Area- ID | Comment |
| --- | --- | --- | --- | --- | --- | --- | --- | --- | --- | --- | --- | --- | --- | --- | --- | --- | --- |
|  | 2 | **Fixtures** |  |  | 2026-02-27 | 2026-03-25 |  |  |  |  |  |  |  |  |  |  |  |
| T-INT-MF-Z5-1100 |  | Waterslide Stair and Railing Steel |  | 5d | 2026-02-27 | 2026-03-05 | C-FDN-NN-S6/S2A-1080, T-INT-MF-Z5-2780, T-INT-MF-Z5-2790 SS+5d, T-INT-MF-Z5-1020 SS+7d |  |  |  |  | 25d | 0d |  | Link? | INT-Z5 |  |
| T-INT-MF-Z5-1080 |  | Electrical Wiring Pulling & Fixtures |  | 15d | 2026-03-05 | 2026-03-25 | T-INT-MF-Z5-1120 |  |  |  |  | 47d | 27d |  |  | INT-Z5 |  |
|  | 3 | **Tiling** |  |  | 2026-01-19 | 2026-05-04 |  |  |  |  |  |  |  |  |  |  |  |
| T-INT-MF-Z5-1090 |  | Tiling - North Natatorium Topping |  | 14d | 2026-01-19 | 2026-02-05 | T-INT-MF-Z5-1040, T-INT-MF-Z5-1010 |  |  |  |  | 6d | 0d |  | Dec 15 to Jan 11- Delayed due to Acoustic | INT-Z5 |  |
| T-INT-MF-Z5-1150 |  | Tiling - Family Hot Tub (Pool C) |  | 15d | 2026-02-06 | 2026-02-27 | T-INT-MF-Z5-1090, IPP-QAQC-190 SS+8d, T-INT-MF-Z5-2740 |  |  |  |  | 62d | 0d |  | Follows North Topping | INT-Z5 |  |
| T-INT-MF-Z5-2310 |  | Tiling - Leisure Pool (Pool B) |  | 30d | 2026-02-13 | 2026-03-27 | T-INT-MF-Z5-2360, IPP-QAQC-190 SS+10d, C-FDN-NN-S6/S2A-1080, C-SOG-S1C/D-1060, C-FDN-A14-1090, C-FDN-A15-1040, C-FDN-PH1-1010, C-FDN-PH3-1000, C-FDN-PH3-1010, MIL-C-670, T-INT-MF-Z5-1090, T-INT-MF-Z5-1310, T-INT-MF-Z5-2900, T-INT-MF-Z5-1040 |  |  |  |  | 2d | 0d |  | Jan 16 to Feb 23 | INT-Z5 |  |
| T-INT-MF-Z5-1210 |  | Tiling - North Floor |  | 15d | 2026-03-30 | 2026-04-20 | T-INT-MF-Z5-1100, T-INT-MF-Z5-1090, IPP-QAQC-190, T-INT-MF-Z5-2740, T-INT-MF-Z5-2310, T-INT-MF-Z5-2790 |  |  |  |  | 9d | 0d |  |  | INT-Z5 |  |
| T-INT-MF-Z5-2920 |  | Tiling - North Wall |  | 10d | 2026-04-21 | 2026-05-04 | T-INT-MF-Z5-2390 SS+15d, T-INT-MF-Z5-1210 |  |  |  |  | 14d | 0d |  |  | INT-Z5 |  |
| T-INT-MF-Z5-2940 |  | Tile Cleaning |  | 3d | 2026-04-21 | 2026-04-23 | T-INT-MF-Z5-2920 SS |  |  |  |  | 24d | 22d |  |  |  |  |
|  | 6 | **Crew 2** |  |  |  |  |  |  |  |  |  |  |  |  |  |  |  |
|  | 2 | **(New WBS)** |  |  |  |  |  |  |  |  |  |  |  |  |  |  |  |
|  | 6 | **Curing** |  |  | 2026-02-28 | 2026-04-03 |  |  |  |  |  |  |  |  |  |  |  |
| T-INT-MF-Z5-2870 |  | Curing-Family Hot Tub |  | 7d | 2026-02-28 | 2026-03-06 | T-INT-MF-Z5-1150 |  |  | 2026-03-02 | 2026-03-10 | 160d | 59d |  |  | INT-Z5 |  |
| T-INT-MF-Z5-2860 |  | Curing- Leisure Pool |  | 7d | 2026-03-28 | 2026-04-03 | T-INT-MF-Z5-2310 |  |  | 2026-03-30 | 2026-04-08 | 55d | 31d |  |  | INT-Z5 |  |
|  | 4 | **Finishing** |  |  | 2026-03-05 | 2026-03-27 |  |  |  |  |  |  |  |  |  |  |  |
| T-INT-MF-Z5-1180 |  | Interior Glazing works (Viewing Area, Change Rooms) |  | 6d | 2026-03-05 | 2026-03-12 | P-PRO-183, T-INT-MF-Z5-1120 |  |  |  |  | 80d | 36d |  |  | INT-Z5 |  |
| T-INT-MF-Z5-1230 |  | Waterslide and Platform Installation |  | 11d | 2026-03-06 | 2026-03-20 | P-PRO-152, T-INT-MF-Z5-1100 |  |  |  |  | 74d | 30d |  |  | INT-Z5 |  |
| T-INT-MF-Z5-1110 |  | Pool Fixtures- Water Features and Deck Goods. |  | 6d | 2026-03-20 | 2026-03-27 | P-PRO-173, T-INT-MF-Z5-1040 FF, T-INT-MF-Z5-1090 FF, IPP-QAQC-190 FF, T-INT-MF-Z5-2740 FF, T-INT-MF-Z5-2310 FF |  |  |  |  | 69d | 25d |  | Before Filling Leisure Pool | INT-Z5 |  |
|  | 5 | **Deficiency** |  |  |  |  |  |  |  |  |  |  |  |  |  |  |  |
|  | 1 | **South Natatorium** |  |  | 2025-12-01 | 2026-06-09 |  |  |  |  |  |  |  |  |  |  |  |
| T-INT-MF-Z5-9010 |  | Zone 05 Completion- SouthNatatorium | milestone | 0d | 2026-06-09 | 2026-06-09 | T-INT-MF-Z5-2670 FF, T-INT-MF-Z5-2240 FF, T-INT-MF-Z5-2700 FF, T-INT-MF-Z5-2710 FF, T-INT-MF-Z5-2220 FF, T-INT-MF-Z5-2460 FF, T-INT-MF-Z5-2360 FF, T-INT-MF-Z5-2850 FF, T-INT-MF-Z5-2720 FF, T-INT-MF-Z5-2630 FF, T-INT-MF-Z5-2730 FF, T-INT-MF-Z5-2820 FF, T-INT-MF-Z5-2260 FF, T-INT-MF-Z5-2450 FF, T-INT-MF-Z5-2690 FF, T-INT-MF-Z5-2910 FF, T-INT-MF-Z5-2370 FF, T-INT-MF-Z5-2230 FF, T-INT-MF-Z5-2800 FF, T-INT-MF-Z5-2810 FF, T-INT-MF-Z5-2830 FF, T-INT-MF-Z5-2280 FF, T-INT-MF-Z5-2330 FF, T-INT-MF-Z5-2410 FF, T-INT-MF-Z5-2390 FF, T-INT-MF-Z5-2400 FF, T-INT-MF-Z5-2180 FF, T-INT-MF-Z5-2930 FF, T-INT-MF-Z5-1200 FF, T-INT-MF-Z5-2430 FF, T-INT-MF-Z5-2880 FF, T-INT-MF-Z5-2890 FF, T-INT-MF-Z5-2380 FF, T-INT-MF-Z5-2210 FF, T-INT-MF-Z5-2010 FF, T-INT-MF-Z5-2020 FF, T-INT-MF-Z5-2090 FF, T-INT-MF-Z5-2030 FF, T-INT-MF-Z5-2040 FF, T-INT-MF-Z5-2050 FF, T-INT-MF-Z5-2070 FF, T-INT-MF-Z5-2080 FF, T-INT-MF-Z5-2100 FF, T-INT-MF-Z5-2110 FF, T-INT-MF-Z5-2120 FF, T-INT-MF-Z5-2130 FF, T-INT-MF-Z5-2170 FF, T-INT-MF-Z5-2150 FF, T-INT-MF-Z5-2160 FF |  |  |  |  | 45d |  |  |  |  |  |
|  | 1 | **Prep & Rough-In's** |  |  | 2025-12-01 | 2026-04-21 |  |  |  |  |  |  |  |  |  |  |  |
| T-INT-MF-Z5-2670 |  | Lap Pool- Setup DanceFloor Scaffold |  | 5d | 2025-12-01 A | 2025-12-16 A | C-FDN-SN-S1E/S1F/S7/S2B-1100, C-FDN-SN-LPT-1040, C-FDN-A8-1070, C-FDN-PH3-1010, MIL-C-650 FS+5d, C-FDN-SN-LPT-1050, C-ENV-LP-1000 | 100% |  | 2025-12-05 | 2025-12-11 |  |  |  |  |  |  |
| T-INT-MF-Z5-2710 |  | HVAC Wall Rough-Ins |  | 10d | 2025-12-17 A | 2026-01-12 A | T-INT-MF-Z5-1220 | 100% |  | 2026-01-19 | 2026-01-30 |  |  |  |  |  |  |
| T-INT-MF-Z5-2850 |  | Leak Test Pool D |  | 15d | 2025-12-18 A | 2026-02-06 | T-INT-MF-Z5-2740 |  | 15d | 2026-01-19 | 2026-02-06 | 11d | 0d | 2026-02-06 |  | INT-Z5 |  |
| T-INT-MF-Z5-2240 |  | Ceiling Electrical |  | 5d | 2026-01-05 A | 2026-01-23 | C-FDN-NN-S6/S2A-1080, C-SOG-S1C/D-1060, C-FDN-A14-1090, C-FDN-A15-1040, C-FDN-PH1-1010, C-FDN-PH3-1000, C-FDN-PH3-1010, MIL-C-670, T-INT-MF-Z5-2670 |  | 5d | 2026-01-19 | 2026-01-23 | 31d | 0d | 2026-01-23 |  | INT-Z5 |  |
| T-INT-MF-Z5-2700 |  | Hanger Installation |  | 5d | 2026-01-05 A | 2026-01-09 A | C-FDN-NN-S6/S2A-1080, C-SOG-S1C/D-1060, C-FDN-A14-1090, C-FDN-A15-1040, C-FDN-PH1-1010, C-FDN-PH3-1000, C-FDN-PH3-1010, MIL-C-670, T-INT-MF-Z5-2670 | 100% |  | 2026-01-19 | 2026-01-23 |  |  |  |  |  |  |
| T-INT-MF-Z5-2360 |  | Leak Test Pool A |  | 15d | 2026-01-09 A | 2026-01-30 | C-FDN-A7-1130, C-FDN-A8-1080, X-LP-1020, C-FDN-A15-1030, C-SOG-S1C/D-1060, C-FDN-SN-LPT-1040, C-FDN-A15-1040, C-FDN-NN-S6/S2A-1080, C-FDN-A14-1090, C-FDN-A7-SN-1390 SS+10d, T-INT-MF-Z5-2670, C-FDN-PH1-1010, C-FDN-PH3-1000, C-FDN-PH3-1010, MIL-C-670, T-INT-MF-Z5-2700 | 100% | 10d | 2026-01-26 | 2026-02-13 | 11d | 0d | 2026-01-30 |  | INT-Z5 |  |
| T-INT-MF-Z5-2220 |  | Acoustic Spray |  | 7d | 2026-01-12 A | 2026-01-20 | P-PRO-213, T-INT-MF-Z5-2700, C-FDN-NN-S6/S2A-1080, C-SOG-S1C/D-1060, C-FDN-A14-1090, C-FDN-A15-1040, C-FDN-PH1-1010, C-FDN-PH3-1000, C-FDN-PH3-1010, MIL-C-670, T-INT-MF-Z5-2670, T-INT-MF-Z5-2240 SS, T-INT-MF-Z5-1010 |  | 2d | 2026-01-26 | 2026-02-03 | 31d | 0d | 2026-01-20 |  | INT-Z5 |  |
| T-INT-MF-Z5-2460 |  | Wall & Bulkhead Framing |  | 5d | 2026-01-19 | 2026-01-23 | C-FDN-NN-S6/S2A-1080, C-SOG-S1C/D-1060, C-FDN-A14-1090, C-FDN-A15-1040, C-FDN-PH1-1010, C-FDN-PH3-1000, C-FDN-PH3-1010, MIL-C-670, T-INT-MF-Z5-1280, T-INT-MF-Z5-2710, C-ENV-SID-CL-S-1060 |  |  |  |  | 19d | 0d |  |  |  |  |
| T-INT-MF-Z5-2720 |  | Electrical Wall Rough-Ins |  | 10d | 2026-01-26 | 2026-02-06 | T-INT-MF-Z5-2460, C-ENV-SID-CL-AC-1110, T-INT-MF-Z5-1320 |  |  |  |  | 24d | 0d |  |  |  |  |
| T-INT-MF-Z5-2730 |  | Sprinkler Ceiling |  | 5d | 2026-01-26 | 2026-01-30 | T-INT-MF-Z5-2220, T-INT-MF-Z5-1340 |  |  |  |  | 28d | 0d |  |  |  |  |
| T-INT-MF-Z5-2260 |  | Ceiling Painting |  | 5d | 2026-02-02 | 2026-02-06 | T-INT-MF-Z5-2730, T-INT-MF-Z5-1050 |  |  |  |  | 28d | 0d |  |  | INT-Z5 |  |
| T-INT-MF-Z5-2630 |  | Cement Board Install |  | 5d | 2026-02-03 | 2026-02-09 | T-INT-MF-Z5-2710, T-INT-MF-Z5-2720 SS+6d, T-INT-MF-Z5-1290, IPP-QAQC-269 |  |  |  |  | 24d | 0d |  |  |  |  |
| T-INT-MF-Z5-9030 |  | Ceiling Clean |  | 2d | 2026-02-09 | 2026-02-10 | T-INT-MF-Z5-2260 |  |  |  |  | 28d | 0d |  |  | INT-Z5 |  |
| T-INT-MF-Z5-2820 |  | Wall Cladding (Z Bars & J Trim) |  | 5d | 2026-02-10 | 2026-02-17 | T-INT-MF-Z5-2630, T-INT-MF-Z5-1130 |  |  |  |  | 29d | 0d |  |  |  |  |
| T-INT-MF-Z5-2690 |  | Lap Pool- Dismantle Dancefloor Scaffolding |  | 3d | 2026-02-11 | 2026-02-13 | T-INT-MF-Z5-2670, T-INT-MF-Z5-2360, T-INT-MF-Z5-2260, T-INT-MF-Z5-9030 |  |  |  |  | 28d | 0d |  |  |  |  |
| T-INT-MF-Z5-2910 |  | Pool Slab Remediation |  | 3d | 2026-02-17 | 2026-02-19 | T-INT-MF-Z5-2690 |  |  |  |  | 28d | 26d |  |  |  |  |
| T-INT-MF-Z5-2450 |  | Wall Spray Foam |  | 3d | 2026-02-18 | 2026-02-20 | T-INT-MF-Z5-2820 |  |  |  |  | 39d | 31d |  |  |  |  |
| T-INT-MF-Z5-2370 |  | High Performance Wall Coating- East |  | 9d | 2026-03-05 | 2026-03-17 | T-INT-MF-Z5-2460 FF, T-INT-MF-Z5-2630, T-INT-MF-Z5-1120 |  |  |  |  | 8d | 0d |  | To mobilize Crew 2? Success? | INT-Z5 |  |
| T-INT-MF-Z5-2230 |  | Ceiling Mechanical (Includes Perimeter HVAC) |  | 12d | 2026-03-10 | 2026-03-25 | C-FDN-NN-S6/S2A-1080, C-SOG-S1C/D-1060, C-FDN-A14-1090, C-FDN-A15-1040, C-FDN-PH1-1010, C-FDN-PH3-1000, C-FDN-PH3-1010, MIL-C-670, T-INT-MF-Z5-1020, T-INT-MF-Z5-2820 |  |  |  |  | 15d | 0d |  |  | INT-Z5 | MN Increase from 27 to 30 |
| T-INT-MF-Z5-2800 |  | High Performance Wall Coating- South |  | 6d | 2026-03-18 | 2026-03-25 | T-INT-MF-Z5-2370 |  |  |  |  | 8d | 0d |  |  | INT-Z5 |  |
| T-INT-MF-Z5-2810 |  | High Performance Wall Coating- West |  | 8d | 2026-03-26 | 2026-04-07 | T-INT-MF-Z5-2800 |  |  |  |  | 8d | 0d |  |  | INT-Z5 |  |
| T-INT-MF-Z5-2830 |  | Wall Cladding |  | 10d | 2026-04-08 | 2026-04-21 | T-INT-MF-Z5-2450, T-INT-MF-Z5-2810, P-PRO-193 |  |  |  |  | 8d | 0d |  |  |  |  |

| ID | WBS | Activity | Duration | Start | Finish | Predecessors | Complete | Planned start | Planned finish | Total float | Free float | Constraint | Area- ID | #User-Text_01 |
| --- | --- | --- | --- | --- | --- | --- | --- | --- | --- | --- | --- | --- | --- | --- |
|  | 2 | **Fixtures** |  | 2026-03-26 | 2026-04-10 |  |  |  |  |  |  |  |  |  |
| T-INT-MF-Z5-2280 |  | Electrical Wiring Pulling & Fixtures | 11d | 2026-03-26 | 2026-04-10 | T-INT-MF-Z5-2720, T-INT-MF-Z5-2730, T-INT-MF-Z5-2370, T-INT-MF-Z5-2800 |  |  |  | 26d | 18d |  | INT-Z5 |  |
|  | 3 | **Tiling** |  | 2026-02-06 | 2026-06-09 |  |  |  |  |  |  |  |  |  |
| T-INT-MF-Z5-2330 |  | Tiling - South Natatorium Topping | 10d | 2026-02-06 | 2026-02-20 | T-INT-MF-Z5-1090 |  |  |  | 49d | 41d |  | INT-Z5 |  |
| T-INT-MF-Z5-2390 |  | Tiling - Lap Pool (Pool A)- After Leisure Pool | 35d | 2026-03-30 | 2026-05-19 | C-FDN-SN-LPT-1040, T-INT-MF-Z5-2690, T-INT-MF-Z5-2310, T-INT-MF-Z5-2360, IPP-QAQC-190 FF, T-INT-MF-Z5-2910 |  |  |  | 2d | 0d |  |  | Feb 23 to Mar 12 |
| T-INT-MF-Z5-2410 |  | Tiling - South Floor | 15d | 2026-04-22 | 2026-05-12 | T-INT-MF-Z5-2330, C-FDN-A7-SN-1620, C-FDN-NN-S6/S2A-1080, T-INT-MF-Z5-2280 SS, T-INT-MF-Z5-2830, T-INT-MF-Z5-1210 |  |  |  | 8d | 0d |  |  |  |
| T-INT-MF-Z5-2400 |  | Tiling - Adult Hot Tub (Pool D)- After Leisure Pool | 15d | 2026-04-28 | 2026-05-19 | C-FDN-A7-SN-1390, T-INT-MF-Z5-2390 FF |  |  |  | 7d | 0d |  |  |  |
| T-INT-MF-Z5-2180 |  | Tiling - Steam | 15d | 2026-05-06 | 2026-05-27 | T-INT-MF-Z5-2410 SS+10d, T-INT-MF-Z5-2050 |  |  |  | 18d | 0d |  |  | Gap |
| T-INT-MF-Z5-1200 |  | Tiling - Sauna | 15d | 2026-05-13 | 2026-06-03 | T-INT-MF-Z5-2180 SS+5d, T-INT-MF-Z5-2130, T-INT-MF-Z5-2170 |  |  |  | 22d | 4d |  |  |  |
| T-INT-MF-Z5-2440 |  | Tile Cleaning | 3d | 2026-05-13 | 2026-05-15 | T-INT-MF-Z5-2930 SS |  |  |  | 8d | 6d |  |  |  |
| T-INT-MF-Z5-2930 |  | Tiling - South Wall | 10d | 2026-05-13 | 2026-05-27 | T-INT-MF-Z5-2920, T-INT-MF-Z5-2410 |  |  |  | 8d | 0d |  |  |  |
| T-INT-MF-Z5-2430 |  | Tiling - Outdoor Adult Hot Tub | 15d | 2026-05-20 | 2026-06-09 | C-FDN-A18-1340, MIL-C-470, T-INT-MF-Z5-2390 |  |  |  | 22d | 0d |  |  |  |
|  | 6 | **Crew 2** |  |  |  |  |  |  |  |  |  |  |  |  |
|  | 8 | **Curing** |  | 2026-05-20 | 2026-05-26 |  |  |  |  |  |  |  |  |  |
| T-INT-MF-Z5-2880 |  | Curing- Lap Pool | 7d | 2026-05-20 | 2026-05-26 | T-INT-MF-Z5-2390 |  | 2026-05-20 | 2026-05-28 | 2d | 0d |  |  |  |
| T-INT-MF-Z5-2890 |  | Curing- Adult Hot Tub | 7d | 2026-05-20 | 2026-05-26 | T-INT-MF-Z5-2400 |  | 2026-05-20 | 2026-05-28 | 79d | 14d |  |  |  |
|  | 4 | **Finishing** |  | 2026-02-10 | 2026-03-27 |  |  |  |  |  |  |  |  |  |
| T-INT-MF-Z5-2380 |  | Interior Glazing works (Steam, Sauna South Vestibule) | 5d | 2026-02-10 | 2026-02-17 | P-PRO-183, T-INT-MF-Z5-2630 |  |  |  | 97d | 78d | start on or after 2026-01-08 | INT-Z5 |  |
| T-INT-MF-Z5-2210 |  | Pool Fixtures- Water Features and Deck Goods. | 12d | 2026-03-12 | 2026-03-27 | P-PRO-173, T-INT-MF-Z5-2310 FF |  |  |  | 68d | 27d |  | INT-Z5 |  |
|  | 6 | **Steam Room** |  | 2025-12-17 | 2026-06-01 |  |  |  |  |  |  |  |  |  |
| T-INT-MF-Z5-2010 |  | Block Wall | 3d | 2025-12-17 A | 2025-12-19 A | C-FDN-SN-S1E/S1F/S7/S2B-1100 | 100% | 2026-02-02 | 2026-02-04 |  |  |  |  |  |
| T-INT-MF-Z5-2020 |  | Framing | 3d | 2026-01-26 | 2026-01-28 | T-INT-MF-Z5-2460, T-INT-MF-Z5-2010 |  |  |  | 19d | 0d |  |  | Gap |
| T-INT-MF-Z5-2090 |  | Concrete Benches | 5d | 2026-01-29 | 2026-02-04 | T-INT-MF-Z5-2010, T-INT-MF-Z5-2020 |  |  |  | 49d | 0d |  |  |  |
| T-INT-MF-Z5-2030 |  | Mechanical Rough In | 2d | 2026-02-05 | 2026-02-06 | T-INT-MF-Z5-2020, T-INT-MF-Z5-2090 |  |  |  | 71d | 0d |  |  |  |
| T-INT-MF-Z5-2040 |  | Electrical Rough In | 2d | 2026-02-09 | 2026-02-10 | T-INT-MF-Z5-2030 |  |  |  | 71d | 0d |  |  |  |
| T-INT-MF-Z5-2050 |  | Drywall Mud Tape & Sand | 5d | 2026-02-11 | 2026-02-18 | T-INT-MF-Z5-2040, T-INT-MF-Z5-2030 |  |  |  | 71d | 53d |  |  |  |
| T-INT-MF-Z5-2070 |  | Mechanical Fixtures | 3d | 2026-05-28 | 2026-06-01 | T-INT-MF-Z5-2180 |  |  |  | 18d | 0d |  | INT-Z5 |  |
| T-INT-MF-Z5-2080 |  | Electrical Fixtures | 3d | 2026-05-28 | 2026-06-01 | T-INT-MF-Z5-2070 SS |  |  |  | 24d | 6d |  | INT-Z5 | Follow Fitout |

| ID | WBS | Activity | Type | Duration | Start | Finish | Predecessors | Complete | Planned start | Planned finish | Total float | Free float | Constraint | Area- ID |
| --- | --- | --- | --- | --- | --- | --- | --- | --- | --- | --- | --- | --- | --- | --- |
|  | 7 | **Sauna Room** |  |  | 2026-02-02 | 2026-06-09 |  |  |  |  |  |  |  |  |
| T-INT-MF-Z5-2100 |  | Framing |  | 5d | 2026-02-02 | 2026-02-06 | C-FDN-SN-S1E/S1F/S7/S2B-1100, T-INT-MF-Z4-1000, T-INT-MF-Z5-2020 |  |  |  | 17d | 0d |  |  |
| T-INT-MF-Z5-2110 |  | Mechanical Rough In |  | 5d | 2026-02-09 | 2026-02-13 | T-INT-MF-Z5-2100, T-INT-MF-Z5-2030 |  |  |  | 72d | 0d |  |  |
| T-INT-MF-Z5-2120 |  | Electrical Rough In |  | 5d | 2026-02-11 | 2026-02-18 | T-INT-MF-Z5-2040 |  |  |  | 75d | 3d |  |  |
| T-INT-MF-Z5-2130 |  | Drywall Mud Tape & Sand |  | 5d | 2026-02-17 | 2026-02-23 | T-INT-MF-Z5-2120 FF, T-INT-MF-Z5-2110 |  |  |  | 72d | 0d |  |  |
| T-INT-MF-Z5-2170 |  | Sauna Cedar Walls and Ceiling Install |  | 5d | 2026-02-24 | 2026-03-02 | P-PRO-263, T-INT-MF-Z5-2130 |  |  |  | 72d | 50d |  |  |
| T-INT-MF-Z5-2150 |  | Mechanical Fixtures |  | 3d | 2026-06-02 | 2026-06-04 | T-INT-MF-Z5-2170, T-INT-MF-Z5-2070 |  |  |  | 18d | 0d |  | INT-Z5 |
| T-INT-MF-Z5-2160 |  | Electrical Fixtures |  | 3d | 2026-06-05 | 2026-06-09 | T-INT-MF-Z5-2150, T-INT-MF-Z5-2150 FF |  |  |  | 18d | 0d |  | INT-Z5 |
|  | 5 | **Deficiency** |  |  |  |  |  |  |  |  |  |  |  |  |
|  | 6 | **ZONE #6 - LOBBY AND VESTIBULE** |  |  | 2025-12-02 | 2026-06-19 |  |  |  |  |  |  |  |  |
| T-INT-MF-Z6-1100 |  | Install Stair Railing |  | 5d | 2025-12-02 A | 2025-12-02 A |  | 100% | 2026-03-23 | 2026-03-27 |  |  |  | INT-Z6 |
| T-INT-MF-Z6-1040 |  | Place of FCU |  | 3d | 2026-01-20 | 2026-01-22 | P-PRO-547, P-PRO-617 FF |  |  |  | 16d | 0d | start on or after 2026-01-20 | INT-Z6 |
| T-INT-MF-Z6-1220 |  | Ductwork Install |  | 7d | 2026-01-23 | 2026-02-02 | T-INT-MF-Z6-1040 |  |  |  | 16d | 0d |  | INT-Z6 |
| T-INT-MF-Z6-1000 |  | Steel Stud Framing - Full Height |  | 4d | 2026-02-03 | 2026-02-06 | T-INT-MF-Z5-2460, T-INT-MF-Z5-2100 SS, T-INT-MF-Z6-1220 |  |  |  | 16d | 0d |  | INT-Z6 |
| T-INT-MF-Z6-1010 |  | Electrical Rough In's |  | 15d | 2026-02-09 | 2026-03-02 | T-INT-MF-Z6-1000 |  |  |  | 16d | 0d |  | INT-Z6 |
| T-INT-MF-Z6-1020 |  | Door Frames |  | 5d | 2026-02-09 | 2026-02-13 | T-INT-MF-Z6-1000 |  |  |  | 27d | 11d |  | INT-Z6 |
| T-INT-MF-Z6-1030 |  | Mechanical Rough In's |  | 15d | 2026-02-09 | 2026-03-02 | T-INT-MF-Z6-1000 |  |  |  | 16d | 0d |  | INT-Z6 |
| T-INT-MF-Z6-1050 |  | Drywall Install |  | 5d | 2026-03-04 | 2026-03-10 | T-INT-MF-Z6-1030, T-INT-MF-Z6-1010, T-INT-MF-Z6-1020, MIL-C-440, MIL-C-490, MIL-C-710, IPP-QAQC-279 |  |  |  | 16d | 0d |  | INT-Z6 |
| T-INT-MF-Z6-1060 |  | Mud, Tape and Sand |  | 7d | 2026-03-11 | 2026-03-19 | T-INT-MF-Z6-1050, T-INT-MF-Z6-1010 |  |  |  | 16d | 0d |  | INT-Z6 |
| T-INT-MF-Z6-1070 |  | Prime and Paint |  | 10d | 2026-03-20 | 2026-04-02 | T-INT-MF-Z6-1060 |  |  |  | 16d | 0d |  | INT-Z6 |
| T-INT-MF-Z6-1080 |  | Main Entrance Exterior and Interior Aluminum Storefront and Glazing |  | 8d | 2026-04-06 | 2026-04-15 | T-INT-MF-Z6-1070 |  |  |  | 16d | 0d |  | INT-Z6 |
| T-INT-MF-Z6-1090 |  | Ceiling T-Bar and Permieter/ Devices Tiles |  | 10d | 2026-04-06 | 2026-04-17 | T-INT-MF-Z6-1070 |  |  |  | 16d | 0d |  | INT-Z6 |
| T-INT-MF-Z6-1210 |  | Interior Storefront (BL 2, 7 |  | 10d | 2026-04-16 | 2026-04-29 | T-INT-MF-Z6-1080 |  |  |  | 16d | 10d |  | INT-Z6 |
| T-INT-MF-Z6-1140 |  | Electrical Fixtures |  | 15d | 2026-04-20 | 2026-05-08 | T-INT-MF-Z6-1070, P-PRO-747, P-PRO-777, T-INT-MF-Z6-1090 |  |  |  | 16d | 8d |  | INT-Z6 |
| T-INT-MF-Z6-1110 |  | Millworks |  | 10d | 2026-04-21 | 2026-05-04 | T-INT-MF-Z6-1070, T-INT-MF-Z3-1130 |  |  |  | 6d | 0d |  | INT-Z6 |
| T-INT-MF-Z6-1120 |  | Flooring |  | 7d | 2026-05-05 | 2026-05-13 | T-INT-MF-Z6-1090, T-INT-MF-Z6-1110 |  |  |  | 6d | 0d |  | INT-Z6 |
| T-INT-MF-Z6-1190 |  | Millwork Countertops |  | 1d | 2026-05-05 | 2026-05-05 | T-INT-MF-Z6-1110, T-INT-MF-Z3-1240 |  |  |  | 12d | 6d |  | INT-Z6 |
| T-INT-MF-Z6-1130 |  | Mechanical Fixtures |  | 15d | 2026-05-14 | 2026-06-04 | T-INT-MF-Z6-1070, T-INT-MF-Z6-1120, P-PRO-677, P-PRO-627, P-PRO-647, P-PRO-657, T-INT-MF-Z6-1210, T-INT-MF-Z6-1040, T-INT-MF-Z6-1190, T-INT-MF-Z6-1090 |  |  |  | 6d | 0d |  | INT-Z6 |
| T-INT-MF-Z6-1150 |  | Final Paint |  | 5d | 2026-06-05 | 2026-06-11 | T-INT-MF-Z6-1120, T-INT-MF-Z6-1100, T-INT-MF-Z6-1140, T-INT-MF-Z6-1130, T-INT-MF-Z6-1080, T-INT-MF-Z6-1190 |  |  |  | 11d | 0d |  | INT-Z6 |
| T-INT-MF-Z6-1160 |  | Install of Remaining Ceiling Tiles |  | 5d | 2026-06-12 | 2026-06-18 | T-INT-MF-Z6-1090, T-INT-MF-Z6-1150 |  |  |  | 12d | 0d |  | INT-Z6 |
| T-INT-MF-Z6-1200 |  | Glass Doors, Hardware and Operators (Main Entrance, Viewing Area, Zone 2, South Vestibule) |  | 6d | 2026-06-12 | 2026-06-19 | T-INT-MF-Z6-1150 |  |  |  | 11d | 0d |  | INT-Z6 |
| T-INT-MF-Z6-9000 |  | Zone 06 Completion | milestone | 0d | 2026-06-19 | 2026-06-19 | T-INT-MF-Z6-1220 FF, T-INT-MF-Z6-1000 FF, T-INT-MF-Z6-1020 FF, T-INT-MF-Z6-1030 FF, T-INT-MF-Z6-1010 FF, T-INT-MF-Z6-1050 FF, T-INT-MF-Z6-1060 FF, T-INT-MF-Z6-1070 FF, T-INT-MF-Z6-1080 FF, T-INT-MF-Z6-1090 FF, T-INT-MF-Z6-1110 FF, T-INT-MF-Z6-1040 FF, T-INT-MF-Z6-1120 FF, T-INT-MF-Z6-1210 FF, T-INT-MF-Z6-1140 FF, T-INT-MF-Z6-1130 FF, T-INT-MF-Z6-1190 FF, T-INT-MF-Z6-1150 FF, T-INT-MF-Z6-1160 FF, T-INT-MF-Z6-1200 FF, T-INT-MF-Z6-1100 FF |  |  |  | 37d |  |  |  |

| ID | WBS | Activity | Type | Duration | Start | Finish | Predecessors | Complete | Remaining | Planned start | Planned finish | Total float | Free float | Constraint | Expected finish | #User-Text_01 |
| --- | --- | --- | --- | --- | --- | --- | --- | --- | --- | --- | --- | --- | --- | --- | --- | --- |
|  | 3 | **SECOND FLOOR** |  |  | 2025-01-28 | 2026-03-19 |  |  |  |  |  |  |  |  |  |  |
| T-INT-SF-2000 |  | Slab on Deck Concrete and Rebar |  | 3d | 2025-01-28 A | 2025-01-30 A | C-SS-PH3-1110, C-SS-PH2-1100, C-SS-PH1-1070, C-FDN-PH3-1000 SS, C-FDN-PH3-1010 | 100% |  |  |  |  |  |  |  |  |
| T-INT-SF-2010 |  | Steel Stud Framing - Full Height |  | 10d | 2025-05-06 A | 2025-05-20 A | T-INT-SF-2000, C-ENV-SID-EW-S-1000 | 100% |  | 2025-06-05 | 2025-06-18 |  |  |  |  |  |
| T-INT-SF-2040 |  | Ceiling - Mechanical Rough In's |  | 10d | 2025-10-21 A | 2025-11-07 A | T-INT-SF-2010, P-TEA-21 SS | 100% |  | 2025-10-24 | 2025-11-06 |  |  |  |  | Check |
| T-INT-SF-2030 |  | Ceiling - Electrical Rough In's |  | 10d | 2025-10-27 A | 2025-12-17 A | T-INT-SF-2010, T-INT-SF-2020 | 100% |  | 2025-10-27 | 2025-11-07 |  |  |  |  |  |
| T-INT-SF-2020 |  | Door Frames |  | 1d | 2025-12-10 A | 2025-12-10 A | T-INT-SF-2010 | 100% |  |  |  |  |  |  |  |  |
| T-INT-SF-2060 |  | Wall - Mechanical Rough In's |  | 10d | 2025-12-16 A | 2026-01-09 A | T-INT-SF-2040 | 100% |  | 2026-01-19 | 2026-01-30 |  |  |  |  |  |
| T-INT-SF-2070 |  | Wall - Electrical Rough In's |  | 10d | 2025-12-18 A | 2026-01-13 A | T-INT-SF-2030 | 100% |  | 2026-01-19 | 2026-01-30 |  |  |  |  |  |
| T-INT-SF-2100 |  | Prime plus one Paint Walls |  | 5d | 2026-01-05 A | 2026-01-09 A | T-INT-SF-2070 | 100% |  | 2026-02-02 | 2026-02-06 |  |  |  |  |  |
| T-INT-SF-2050 |  | Ceiling Paint |  | 5d | 2026-01-12 A | 2026-01-16 A | T-INT-SF-2040, T-INT-SF-2030, T-INT-MF-Z1-1190 | 100% |  | 2026-01-19 | 2026-01-23 |  |  |  |  |  |
| T-INT-SF-2080 |  | Environmental Wall |  | 5d | 2026-01-26 | 2026-01-30 | MIL-C-440, T-INT-SF-2070, T-INT-SF-2060, IPP-QAQC-201 |  |  |  |  | 134d | 33d |  |  |  |
| T-INT-SF-9000 |  | Second Floor Interior Completion | milestone | 0d | 2026-03-19 | 2026-03-19 | T-INT-SF-2000 FF, T-INT-SF-2010 FF, T-INT-SF-2040 FF, T-INT-SF-2020 FF, T-INT-SF-2030 FF, T-INT-SF-2060 FF, T-INT-SF-2070 FF, T-INT-SF-2050 FF, T-INT-SF-2080 FF, T-INT-SF-2100 FF, T-INT-SF-ELEC-1000 FF, T-INT-SF-ELEC-1020 FF, T-INT-SF-ELEC-1010 FF, T-INT-SF-ELEC-1030 FF, T-INT-SF-ELEC-1040 FF, T-INT-SF-ELEC-1060 FF, T-INT-SF-MR-2050 FF, T-INT-SF-MR-2010 FF, T-INT-SF-MR-2130 FF, T-INT-SF-MR-2020 FF, T-INT-SF-MR-2040 FF, T-INT-SF-MR-2060 FF, T-INT-SF-MR-2070 FF, T-INT-SF-MR-2150 FF, T-INT-SF-MR-2100 FF, T-INT-SF-MR-2110 FF, T-INT-SF-MR-2090 FF, T-INT-SF-MR-2030 FF, T-INT-SF-MR-2120 FF, P-PRO-757 FF, T-INT-SF-MR-2070 SF |  |  |  |  | 101d |  |  |  |  |
|  | 4 | **Electrical Works L2** |  |  | 2025-10-24 | 2026-03-19 |  |  |  |  |  |  |  |  |  |  |
| T-INT-SF-ELEC-1000 |  | Shaft Wall Complete |  | 5d | 2025-10-24 A | 2025-10-30 A |  | 100% |  |  |  |  |  |  |  |  |
| T-INT-SF-ELEC-1020 |  | Housekeeping Pads |  | 5d | 2025-10-28 A | 2025-11-03 A | T-INT-SF-ELEC-1000 | 100% |  | 2025-11-07 | 2025-11-13 |  |  |  |  |  |
| T-INT-SF-ELEC-1010 |  | Fire Rated Plywood Install |  | 5d | 2025-12-01 A | 2025-12-05 A | T-INT-SF-ELEC-1000 | 100% |  | 2025-12-10 | 2025-12-16 |  |  |  |  |  |
| T-INT-SF-ELEC-1030 |  | Install CDP for Roof |  | 5d | 2026-01-22 | 2026-01-28 | T-INT-SF-ELEC-1020, T-INT-MF-Z1-ER-1160 |  |  |  |  | 99d | 0d |  |  |  |
| T-INT-SF-ELEC-1040 |  | House Panel Install |  | 5d | 2026-01-29 | 2026-02-04 | T-INT-SF-ELEC-1030 |  |  |  |  | 99d | 25d |  |  |  |
| T-INT-SF-ELEC-1060 |  | Ceiling Rough In |  | 5d | 2026-03-13 | 2026-03-19 | T-INT-SF-ELEC-1040, T-INT-SF-MR-2030 |  |  |  |  | 74d | 0d |  |  | Conduits in Walls? |
|  | 1 | **Mechanical Room L2 (AQ205)** |  |  | 2025-10-28 | 2026-03-16 |  |  |  |  |  |  |  |  |  |  |
| T-INT-SF-MR-2050 |  | Housekeeping Pads (For HRV only) |  | 5d | 2025-10-28 A | 2025-11-03 A |  | 100% |  | 2025-11-17 | 2025-11-21 |  |  |  |  |  |
| T-INT-SF-MR-2130 |  | Housekeeping Pads (For AHU only) |  | 5d | 2025-10-28 A | 2025-11-03 A | T-INT-MF-Z1-ER-1020 FS+1d | 100% |  |  |  |  |  |  |  |  |
| T-INT-SF-MR-2010 |  | Room is Ready to Receive Equipment | milestone | 0d | 2025-11-03 A | 2025-11-03 A | T-INT-SF-MR-2130 FF | 100% |  |  |  |  |  |  |  |  |
| T-INT-SF-MR-2020 |  | Place of HRV'S |  | 25d | 2025-11-06 A | 2025-11-06 A | T-INT-SF-MR-2010, P-PRO-517, T-INT-SF-MR-2040 SS+3d, T-INT-SF-MR-2050 | 100% |  | 2025-11-12 | 2025-12-16 |  |  |  |  |  |
| T-INT-SF-MR-2040 |  | Place of AHU |  | 2d | 2025-11-06 A | 2025-11-06 A | P-PRO-527, T-INT-SF-MR-2010, T-INT-SF-MR-2130 | 100% |  | 2025-11-07 | 2025-11-10 |  |  |  |  |  |
| T-INT-SF-MR-2030 |  | Mechanical Room Fitout Including Piping,Ducts Works (TBC) |  | 60d | 2025-11-07 A | 2026-03-12 | T-INT-SF-MR-2010 |  | 38d | 2025-11-04 | 2026-01-29 | 41d | 0d |  | 2026-03-12 |  |
| T-INT-SF-MR-2060 |  | Place of AC Indoor Unit |  | 5d | 2026-01-26 | 2026-01-30 | P-PRO-597, T-INT-SF-MR-2010, T-INT-SF-MR-2020 |  |  |  |  | 39d | 0d | start on or after 2026-01-26 |  | CHeck |
| T-INT-SF-MR-2070 |  | Place of Unit Heater |  | 5d | 2026-02-02 | 2026-02-06 | T-INT-SF-MR-2060, P-PRO-577, T-INT-SF-MR-2010 |  |  |  |  | 39d | 0d |  |  |  |
| T-INT-SF-MR-2100 |  | Mechanical Connections for Equipments |  | 20d | 2026-02-02 | 2026-03-02 | T-INT-SF-MR-2020, T-INT-SF-MR-2040, T-INT-SF-MR-2010, P-PRO-757, T-INT-SF-MR-2070 SS |  |  |  |  | 39d | 0d |  |  |  |
| T-INT-SF-MR-2150 |  | Install Outside Air Duct |  | 5d | 2026-02-02 | 2026-02-06 | T-INT-SF-MR-2030 SS, P-PRO-607 |  |  |  |  | 64d | 25d |  |  | Check |
| T-INT-SF-MR-2090 |  | Electrical Connections for Mechanical Equipments |  | 20d | 2026-02-17 | 2026-03-16 | T-INT-SF-MR-2020, T-INT-SF-MR-2040, T-INT-SF-MR-2100 FF+10d, T-INT-SF-MR-2010, P-PRO-757, T-INT-SF-MR-2070 SS |  |  |  |  | 39d | 0d |  |  |  |
| T-INT-SF-MR-2110 |  | Final Paint |  | 5d | 2026-03-03 | 2026-03-09 | T-INT-SF-MR-2100 |  |  |  |  | 44d | 5d |  |  |  |
| T-INT-SF-MR-2120 |  | Room is Ready | milestone | 0d | 2026-03-16 | 2026-03-16 | T-INT-SF-MR-2020 FF, T-INT-SF-MR-2030 FF, T-INT-SF-MR-2040 FF, T-INT-SF-MR-2060 FF, T-INT-SF-MR-2070 FF, T-INT-SF-MR-2100 FF, T-INT-SF-MR-2090 FF, T-INT-SF-MR-2110 FF, T-INT-SF-MR-2150 FF, C-ENV-SID-CL-S-1050 FF, T-INT-SF-MR-2010 FF, P-PRO-757 FF, T-INT-SF-MR-2070 SF |  |  |  |  | 39d | 3d |  |  | Dec 15 |

Notes:
- T-INT-SF-MR-2020: Comment: Opening in wall will need to be left to allow equipment to be brought into room
- T-INT-SF-MR-2030: Comment: Increase from 35 to 50 / Pull plan for Equipment to beinside and the path for that and the installations might be affected

| ID | WBS | Activity | Type | Duration | Start | Finish | Predecessors | Complete | Planned start | Planned finish | Total float | Free float | #User-Text_01 |
| --- | --- | --- | --- | --- | --- | --- | --- | --- | --- | --- | --- | --- | --- |
|  | 2 | **Elevator Machine Room** |  |  |  |  |  |  |  |  |  |  |  |
|  | 6 | **Room Startup** |  |  |  |  |  |  |  |  |  |  |  |
|  | 3 | **Deficiency** |  |  |  |  |  |  |  |  |  |  |  |
|  | 4 | **ELEVATOR** |  |  | 2024-12-21 | 2026-04-08 |  |  |  |  |  |  |  |
| T-MEIT-EL-1000 |  | Hoist Beam Install |  | 5d | 2024-12-21 A | 2024-12-21 A | C-SS-PH3-1110, C-SS-PH2-1100, C-SS-PH1-1070, C-FDN-PH1-1010 SS, C-FDN-PH3-1000 SS, C-FDN-PH3-1010 | 100% | 2025-08-21 | 2025-08-27 |  |  |  |
| T-MEIT-EL-1010 |  | Shaft Devices Install |  | 15d | 2026-01-19 | 2026-02-06 | T-MEIT-EL-1000, T-INT-SF-2070, T-INT-SF-2060 |  |  |  | 74d | 0d |  |
| T-MEIT-EL-1040 |  | Site Readiness | milestone | 0d | 2026-02-06 | 2026-02-06 | T-MEIT-EL-1010 |  |  |  | 74d | 0d |  |
| T-MEIT-EL-1020 |  | Elevator Fabrication and Delivery | milestone | 0d | 2026-02-20 | 2026-02-20 | P-PRO-159 |  |  |  | 66d | 0d |  |
| T-MEIT-EL-1050 |  | Elevator Installation |  | 20d | 2026-02-23 | 2026-03-20 | T-MEIT-EL-1040, T-MEIT-EL-1020, IPP-QAQC-199 |  |  |  | 66d | 0d |  |
| T-MEIT-EL-1060 |  | Shaft Cleandown |  | 5d | 2026-03-23 | 2026-03-27 | T-MEIT-EL-1050 |  |  |  | 66d | 0d |  |
| T-MEIT-EL-1070 |  | Elevator Pre-AEDARDSA Inspection Testing |  | 5d | 2026-03-30 | 2026-04-06 | T-MEIT-EL-1060 |  |  |  | 66d | 0d |  |
| T-MEIT-EL-1080 |  | Elevator Testing and Commissioning / AEDARDSA Inspection & Acceptance |  | 2d | 2026-04-07 | 2026-04-08 | T-MEIT-EL-1050, T-MEIT-EL-1070 |  |  |  | 66d | 0d |  |
|  | 4 | **SITE WORK** |  |  | 2025-10-08 | 2026-05-05 |  |  |  |  |  |  |  |
|  | 1 | **East Elevation** |  |  | 2025-10-08 | 2025-11-07 |  |  |  |  |  |  |  |
| C-SW-1060 |  | Prep (East) |  | 7d | 2025-10-08 A | 2025-10-24 A | P-PRO-273, C-ENV-SID-CL-E-1020 FF, C-ENV-SID-CL-S-1020 FF, MIL-C-720, C-FDN-ACB-1160 FF, C-FDN-A20-1200, C-ENV-SID-GL-S-1020 | 100% | 2025-10-10 | 2025-10-21 |  |  |  |
| C-SW-1120 |  | Sidewalk and Curbs (East) |  | 7d | 2025-10-27 A | 2025-10-31 A | C-FDN-ACB-1160, C-FDN-A20-1200, C-SW-1060 | 100% | 2025-11-17 | 2025-11-25 |  |  |  |
| C-SW-1130 |  | Asphalt paving (East) |  | 5d | 2025-10-30 A | 2025-11-03 A | P-PRO-273, C-FDN-ACB-1160, C-FDN-A20-1200, C-SW-1120 | 100% | 2025-11-26 | 2025-12-02 |  |  |  |
| C-SW-1070 |  | Landscaping (East) |  | 3d | 2025-11-03 A | 2025-11-07 A | C-SW-1060 SS, P-PRO-172, MIL-C-730, C-ENV-SID-CL-N-1020, C-ENV-SID-CL-E-1020, C-SW-1090 FF, C-SW-1120 SS+4d | 100% | 2025-11-21 | 2025-11-25 |  |  |  |
| C-SW-1180 |  | Boulevard Landscaping |  | 1d | 2025-11-03 A | 2025-11-07 A | C-SW-1060 SS, P-PRO-172, MIL-C-730, C-ENV-SID-CL-N-1020, C-ENV-SID-CL-E-1020, C-SW-1090 FF, C-SW-1120 SS+4d, C-SW-1070 | 100% | 2025-11-26 | 2025-11-26 |  |  |  |
|  | 2 | **South Elevation** |  |  | 2025-10-08 | 2026-05-05 |  |  |  |  |  |  |  |
| C-SW-1140 |  | Prep (South) |  | 7d | 2025-10-08 A | 2025-10-24 A | P-PRO-273, C-ENV-SID-CL-E-1020 FF-5d, C-ENV-SID-CL-S-1020 FF, MIL-C-720, C-FDN-ACB-1160, C-FDN-A20-1200, C-ENV-SID-GL-S-1020, C-SW-1060 | 100% | 2025-11-17 | 2025-11-25 |  |  |  |
| C-SW-1170 |  | Sidewalk and Curbs (South) |  | 5d | 2025-10-27 A | 2025-10-31 A | C-FDN-ACB-1160, C-FDN-A20-1200, C-SW-1060, C-SW-1140, C-SW-1120 | 100% | 2025-11-26 | 2025-12-02 |  |  |  |
| C-SW-1190 |  | Landscape (South) |  | 4d | 2025-11-10 A | 2025-11-14 A | P-PRO-273, C-FDN-ACB-1160, C-FDN-A20-1200, C-SW-1120, C-SW-1170 SS, C-SW-1070 | 100% | 2025-12-16 | 2025-12-19 |  |  |  |
| C-SW-1200 |  | Fencing |  | 2d | 2025-11-12 A | 2025-11-14 A | P-PRO-273, C-FDN-ACB-1160, C-FDN-A20-1200, C-SW-1120, C-SW-1170, C-SW-1130, C-SW-1190 SS, C-SW-1180, C-SW-1070, C-SW-1090 | 100% | 2025-12-16 | 2025-12-17 |  |  |  |
| C-SW-1160 |  | Asphalt paving (South) |  | 2d | 2026-05-04 | 2026-05-05 | P-PRO-273, C-FDN-ACB-1160, C-FDN-A20-1200, C-SW-1120, C-SW-1170, C-SW-1130, WX-2000 |  |  |  | 43d | 0d | *SPRING |

| ID | WBS | Activity | Type | Duration | Start | Finish | Predecessors | Planned start | Planned finish | Total float | Free float |
| --- | --- | --- | --- | --- | --- | --- | --- | --- | --- | --- | --- |
|  | 1 | **COMMISSIONING & STARTUP OF GLOBAL MEIT SYSTEMS** |  |  | 2026-03-11 | 2026-07-13 |  |  |  |  |  |
|  | 2 | **ELECTRICAL** |  |  | 2026-03-11 | 2026-06-23 |  |  |  |  |  |
| CX-2000 |  | CDP Energization |  | 1d | 2026-03-11 | 2026-03-11 | T-INT-MF-Z1-ER-1150 FF |  |  | 57d | 49d |
| CX-2001 |  | Lighting Functional Testing |  | 5d | 2026-05-22 | 2026-05-28 | CX-2000, T-INT-BA-2080, T-INT-MF-Z6-1140, T-INT-MF-Z5-1080, T-INT-MF-Z4-1180, T-INT-MF-Z3-1170, T-INT-MF-Z2-1130, T-INT-MF-Z1-1090, T-INT-BA-2080 FF, T-INT-MF-Z5-2280 |  |  | 8d | 0d |
| CX-2002 |  | Lighting Control Function Testing |  | 5d | 2026-05-29 | 2026-06-04 | CX-2001 |  |  | 8d | 0d |
| CX-2003 |  | Fire Alarm Pre-checks |  | 5d | 2026-06-05 | 2026-06-11 | CX-2002, CX-2018 |  |  | 8d | 0d |
| CX-2004 |  | Fire Alarm Verification FAVI |  | 2d | 2026-06-12 | 2026-06-15 | CX-2003 |  |  | 8d | 0d |
| CX-2005 |  | Fire Alarm Battery Test |  | 1d | 2026-06-16 | 2026-06-16 | CX-2004 |  |  | 8d | 0d |
| CX-2006 |  | Fire Alarm Interface with BMS/Security/Bold Centre |  | 5d | 2026-06-17 | 2026-06-23 | CX-2005 |  |  | 8d | 0d |
| CX-2007 |  | Access Control and Security Integration |  | 5d | 2026-06-17 | 2026-06-23 | CX-2006 SS |  |  | 8d | 0d |
|  | 1 | **MECHANICAL** |  |  | 2026-04-29 | 2026-06-25 |  |  |  |  |  |
| CX-2009 |  | Domestic Water System Start Up |  | 5d | 2026-04-29 | 2026-05-05 | T-INT-MF-Z1-MR-1180, T-INT-SF-MR-2120, MIL-C-810 |  |  | 9d | 0d |
| CX-2010 |  | Underground Drainage System Start Up (P13A/B, P12A/B, P14) |  | 1d | 2026-05-06 | 2026-05-06 | CX-2009 |  |  | 9d | 0d |
| CX-2018 |  | Sprinkler System Testing and Fill |  | 5d | 2026-05-06 | 2026-05-12 | CX-2009 |  |  | 24d | 0d |
| CX-2011 |  | Natural Gas System and Meter Installation |  | 1d | 2026-05-07 | 2026-05-07 | CX-2010, T-INT-MF-Z1-MR-1180, T-INT-SF-MR-2120 |  |  | 9d | 0d |
| CX-2012 |  | Hot Water Heating System Start Up |  | 2d | 2026-05-08 | 2026-05-11 | CX-2011, T-INT-MF-Z1-MR-1180, T-INT-SF-MR-2120 |  |  | 9d | 0d |
| CX-2013 |  | Pool Heat Exchanger Start Up |  | 3d | 2026-05-12 | 2026-05-14 | CX-2012, T-INT-MF-Z1-MR-1180 |  |  | 9d | 0d |
| CX-2019 |  | BMS System Integration |  | 5d | 2026-05-13 | 2026-05-20 | CX-2018, T-INT-MF-Z1-MR-1180, T-INT-SF-MR-2120 |  |  | 32d | 0d |
| CX-2014 |  | Glycol Heating System Start Up |  | 2d | 2026-05-15 | 2026-05-19 | CX-2013, T-INT-MF-Z1-MR-1180, T-INT-SF-MR-2120 |  |  | 11d | 0d |
| CX-2015 |  | Ventilation System Start Up (AHU, HRV, RTU, Exhaust Fans) |  | 5d | 2026-05-20 | 2026-05-26 | CX-2014, T-INT-MF-Z4-1090, T-INT-SF-MR-2120 |  |  | 11d | 0d |
| CX-2016 |  | Air Cooling System Start Up |  | 2d | 2026-05-27 | 2026-05-28 | CX-2015, T-INT-MF-Z1-MR-1180, T-INT-SF-MR-2120 |  |  | 11d | 5d |
| CX-2017 |  | Air and Water Balancing |  | 15d | 2026-06-05 | 2026-06-25 | CX-2016, T-INT-MF-Z1-1070, T-INT-MF-Z2-1120, T-INT-MF-Z3-1160, T-INT-MF-Z4-1120, T-INT-MF-Z6-1130, T-INT-BA-2070 |  |  | 6d | 0d |
|  | 3 | **POOLS** |  |  | 2026-05-21 | 2026-07-13 |  |  |  |  |  |
| CX-2025 |  | Waterslide Commissioning |  | 3d | 2026-05-21 | 2026-05-25 | T-INT-MF-Z5-1230, CX-2019, CX-2013, CX-2012, CX-2009, P-PRO-152, C-FDN-NN-S6/S2A-1080, T-INT-MF-Z5-2280 SS |  |  | 34d |  |
| CX-2067 |  | Pool Fill- Lap Pool/ Leisure Pool, Adult Hot Tub & Family Hot Tub |  | 10d | 2026-05-27 | 2026-06-05 | CX-2009, CX-2012, CX-2013, T-INT-MF-Z5-2390, C-FDN-SN-LPT-1040, C-FDN-SN-S1E/S1F/S7/S2B-1100, C-FDN-A8-1070, C-FDN-PH3-1010, MIL-C-650, T-INT-MF-Z5-2880, T-INT-MF-Z5-2860, T-INT-MF-Z5-2410 SS+15d, T-INT-MF-Z5-2400, T-INT-MF-Z5-1150, T-INT-MF-Z5-2940, T-INT-MF-Z5-2440 | 2026-05-27 | 2026-06-09 | 2d |  |
| CX-2024 |  | Pool Deck Flood Test |  | 2d | 2026-05-28 | 2026-05-29 | T-INT-MF-Z5-1210, T-INT-MF-Z5-2410, C-FDN-NN-S6/S2A-1080, T-INT-MF-Z5-2930, T-INT-MF-Z5-2920 |  |  | 30d |  |
| CX-2023 |  | Pool Piping and Equipment Start Up ( Pool Mechanical CX) |  | 25d | 2026-06-08 | 2026-07-13 | T-INT-BA-2090, CX-2067, CX-2012, CX-2013 |  |  | 0d |  |
| CX-2022 |  | Pool Fill- Outdoor Hot Tub |  | 3d | 2026-06-10 | 2026-06-12 | CX-2013, CX-2012, CX-2009, T-INT-MF-Z5-2430, C-FDN-A18-1340, MIL-C-470, T-INT-BA-2190 |  |  | 31d |  |
| CX-2026 |  | Steam/Sauna Commissioning |  | 5d | 2026-06-10 | 2026-06-16 | T-INT-MF-Z5-1200, T-INT-MF-Z5-2080, T-INT-MF-Z5-2160 |  |  | 18d |  |
| CX-2027 |  | Chemical Treatment/Balance Tank |  | 5d | 2026-07-07 | 2026-07-13 | CX-2023 FF |  |  | 0d |  |
| CX-2047 |  | Pool Commissioning Complete | milestone | 0d | 2026-07-13 | 2026-07-13 | CX-2022 FF, CX-2023 FF, CX-2024 FF, CX-2025 FF, CX-2026 FF, CX-2027 FF, CX-2067 FF, T-INT-MF-Z5-2430 FF, C-FDN-A18-1340 FF, T-INT-MF-Z5-1200 FF, MIL-C-470 FF |  |  | 0d |  |

Notes:
- CX-2009: General Notes: Pool Mechanical Links Removed

| ID | WBS | Activity | Duration | Start | Finish | Predecessors | Total float | Free float | #User-Text_01 | 1 - Milestones |
| --- | --- | --- | --- | --- | --- | --- | --- | --- | --- | --- |
|  | 4 | **INSPECTION & DEFICIENCY CLOSEOUT** |  | 2026-01-19 | 2026-07-03 |  |  |  |  |  |
| IX-ST-1010 |  | Structural | 5d | 2026-01-19 | 2026-01-23 | C-FDN-SN-S1E/S1F/S7/S2B-1100, IPP-QAQC-309 | 117d | 0d |  |  |
| IX-ENV-1020 |  | Building Envelope | 5d | 2026-02-23 | 2026-02-27 | MIL-C-740, MIL-C-440, MIL-C-490, MIL-C-710, MIL-C-720, MIL-C-730, MIL-C-740 FF, C-ENV-SID-GL-S-1020, C-ENV-SID-CL-AC-1110, C-ENV-SID-CL-E-1010, C-ENV-GL-1000, C-ENV-SID-CL-N-1040 | 94d |  |  |  |
| IX-L2-ARC-1060 |  | Level 2 Architectural | 5d | 2026-04-20 | 2026-04-24 | T-INT-SF-2100, T-INT-SF-MR-2110, P-PRO-223 | 55d |  |  |  |
| IX-Z1-ARC-1000 |  | Zone 1 Architectural | 5d | 2026-04-21 | 2026-04-27 | T-INT-MF-Z1-1190, T-INT-MF-Z1-1170, T-INT-MF-Z1-1180, P-PRO-223, T-INT-MF-Z1-1060, T-INT-MF-Z1-1070, T-INT-MF-Z1-1090, T-INT-MF-Z1-1080, T-INT-MF-Z1-1270, T-INT-BA-2080 | 54d |  |  |  |
| IX-Z2-ARC-1010 |  | Zone 2 Architectural | 5d | 2026-05-04 | 2026-05-08 | T-INT-MF-Z2-1150, T-INT-MF-Z2-1140, P-PRO-223, T-INT-MF-Z2-1080, T-INT-MF-Z2-1220 | 45d |  |  |  |
| IX-EXT-1030 |  | Exterior | 5d | 2026-05-06 | 2026-05-12 | C-SW-1070, C-SW-1060, C-SW-1120, C-SW-1130, C-SW-1140, C-SW-1160, C-SW-1170, C-SW-1180, C-SW-1190, C-SW-1200, C-ENV-SID-CL-N-1040 | 43d |  |  |  |
| IX-POOLMECH-1040 |  | Pool Mechanical | 5d | 2026-05-07 | 2026-05-13 | T-INT-MF-Z4-1170, T-INT-MF-Z4-1160, T-INT-MF-Z4-1150, T-INT-MF-Z4-1140, T-INT-BA-2090, T-INT-MF-Z4-1230, T-INT-MF-Z5-2210 | 41d |  |  |  |
| IX-Z4-ARC-1030 |  | Zone 4 Architectural | 5d | 2026-05-22 | 2026-05-28 | T-INT-MF-Z4-1210, P-PRO-223 | 17d | 0d |  |  |
| IX-Z3-ARC-1020 |  | Zone 3 Architectural | 5d | 2026-06-05 | 2026-06-11 | T-INT-MF-Z3-1220, T-INT-MF-Z3-1180, P-PRO-223 | 22d |  |  |  |
| IX-Z5-ARC-1040 |  | Zone 5 Architectural | 5d | 2026-06-10 | 2026-06-16 | T-INT-MF-Z5-1180, T-INT-MF-Z5-1230, T-INT-MF-Z5-2080, T-INT-MF-Z5-2160, P-PRO-171 FF, T-INT-MF-Z5-2380, T-INT-MF-Z5-2410, T-INT-MF-Z5-1210, T-INT-MF-Z5-1090, T-INT-MF-Z5-2210, T-INT-MF-Z5-1110, P-PRO-223, T-INT-MF-Z5-1180 SS, T-INT-MF-Z5-2380 SS, P-PRO-152, C-FDN-NN-S6/S2A-1080, T-INT-MF-Z5-2280 SS | 19d |  |  |  |
| IX-Z6-ARC-1050 |  | Zone 6 Architectural | 5d | 2026-06-22 | 2026-06-26 | T-INT-MF-Z6-1160, T-INT-MF-Z6-1150, P-PRO-223, T-INT-MF-Z6-1200 | 11d |  |  |  |
| IX-ELEC-1010 |  | Electrical | 5d | 2026-06-24 | 2026-06-30 | CX-2000, CX-2001, CX-2002, CX-2003, CX-2004, CX-2005, CX-2006, CX-2007, T-INT-SF-ELEC-1060 | 8d | 0d |  |  |
| IX-MECH-1000 |  | Mechanical | 5d | 2026-06-26 | 2026-07-03 | CX-2009, CX-2010, CX-2011, CX-2012, CX-2013, CX-2014, CX-2015, CX-2016, CX-2017, CX-2018, CX-2019 | 6d | 0d |  |  |
|  | 2 | **STRUCTURAL** |  |  |  |  |  |  |  |  |
|  | 9 | **PROJECT CLOSEOUT** |  | 2026-01-26 | 2026-08-13 |  |  |  |  |  |
| PCO-2000 |  | Structural C-Schedule | 1d | 2026-01-26 | 2026-01-26 | IX-ST-1010 | 117d |  |  |  |
| PCO-2030 |  | AEDARSA Final | 1d | 2026-04-09 | 2026-04-09 | T-MEIT-EL-1080 | 66d | 54d |  |  |
| PCO-2040 |  | Sprinkler C Schedule Issued | 1d | 2026-05-13 | 2026-05-13 | CX-2018 | 43d |  |  |  |
| PCO-2100 |  | Signage & Wayfinding (TBC) | 15d | 2026-05-29 | 2026-06-18 | IX-Z4-ARC-1030, P-PRO-223 | 17d | 0d | Link? |  |
| PCO-2010 |  | FAVI Certificate Issued | 1d | 2026-06-16 | 2026-06-16 | CX-2004 | 20d |  |  |  |
| PCO-2020 |  | Occupancy Pre-Reviews with AHS and Code Authority | 1d | 2026-06-19 | 2026-06-19 | T-INT-MF-Z5-1090, T-INT-MF-Z5-1150, T-INT-MF-Z5-1200, T-INT-MF-Z5-1210, T-INT-MF-Z5-2410, T-INT-MF-Z5-2330, T-INT-MF-Z5-2390, T-INT-MF-Z5-2310, T-INT-MF-Z5-2400, C-FDN-A18-1340, MIL-C-470, C-FDN-SN-LPT-1040, T-INT-MF-Z5-1080, T-INT-MF-Z5-1040, T-INT-MF-Z5-1270, C-FDN-SN-S1E/S1F/S7/S2B-1100, C-FDN-A8-1070, C-FDN-PH3-1010, MIL-C-650, T-INT-MF-Z3-1150, T-INT-MF-Z5-1310, IPP-QAQC-190, C-FDN-A7-SN-1390, T-INT-MF-Z5-2280 SS, T-INT-MF-Z5-2360, T-INT-MF-Z5-2310 SS, T-INT-MF-Z5-2740, C-FDN-NN-S6/S2A-1080, T-INT-MF-Z5-2370 SS, PCO-2100 | 17d |  |  |  |
| PCO-2050 |  | Final BIST | 1d | 2026-06-26 | 2026-06-26 | CX-2007, CX-2019, CX-2004, PCO-2030, CX-2002, CX-2009, CX-2010, CX-2011, CX-2012, CX-2013, CX-2014, CX-2015, CX-2016, CX-2017, CX-2018, CX-2000, CX-2001, CX-2003, CX-2005, CX-2006 | 12d |  |  |  |
| PCO-2070 |  | Electrical C-Schedule | 1d | 2026-07-02 | 2026-07-02 | CX-2000, CX-2001, CX-2002, CX-2003, CX-2004, CX-2005, CX-2006, CX-2007, IX-ELEC-1010 | 8d |  |  |  |
| PCO-2060 |  | Mechanical C-Schedule | 1d | 2026-07-06 | 2026-07-06 | CX-2009, CX-2010, CX-2011, CX-2012, CX-2013, CX-2014, CX-2015, CX-2016, CX-2017, CX-2018, CX-2019, IX-MECH-1000 | 6d |  |  |  |
| PCO-1020 |  | LLB staff training etc | 10d | 2026-07-14 | 2026-07-27 | PCO-1000 FF, CX-2023 | 12d |  |  |  |
| PCO-2090 |  | Pool Mechanical C-Schedule | 1d | 2026-07-14 | 2026-07-14 | CX-2022, CX-2023, CX-2024, CX-2025, CX-2026, CX-2027, CX-2047, IX-POOLMECH-1040 | 0d |  |  |  |
| PCO-2080 |  | Architectural C-Schedule | 1d | 2026-07-15 | 2026-07-15 | PCO-2000, PCO-2060, PCO-2070, PCO-2090, IX-ENV-1020, IX-L2-ARC-1060, IX-EXT-1030, IX-Z1-ARC-1000, IX-Z2-ARC-1010, IX-Z3-ARC-1020, IX-Z4-ARC-1030, IX-Z5-ARC-1040, IX-Z6-ARC-1050 | 0d |  |  |  |
| PCO-1000 |  | Substantial Completion | 1d | 2026-07-16 | 2026-07-16 | PCO-2090, PCO-2080, PCO-2070, PCO-2060, PCO-2050, PCO-2040, PCO-2030, PCO-2020, PCO-2010, PCO-2000 | 0d |  |  |  |
| PCO-1010 |  | Final Deficiencies Closeout | 20d | 2026-07-16 | 2026-08-13 | PCO-1000 SS, IX-Z5-ARC-1040, MIL-C-510 FF, PCO-2120 FF | 0d |  |  |  |
| PCO-2110 |  | Final Clean | 10d | 2026-07-16 | 2026-07-29 | PCO-1010 SS | 9d |  |  |  |
| PCO-2120 |  | County Interim Move-In | 5d | 2026-07-17 | 2026-07-23 | PCO-1000 | 14d |  |  |  |
| PCO-1040 |  | Occupancy | 1d | 2026-08-13 | 2026-08-13 | PCO-1010 FF, PCO-1020 FF, PCO-2110 | 0d |  |  | OCC |

## Activity codes

| Code | Value | Meaning |
| --- | --- | --- |
| 1 - Milestones | ELV-P | Passenger Elevator is Operational |
| 1 - Milestones | JSM | Job-Specific Milestones |
| 1 - Milestones | MOB | Mobilization |
| 1 - Milestones | OCC | Occupancy |
| 1 - Milestones | SP | Substantial Performance |
| 1 - Milestones | TC | Total Completion |
| 1 - Summary | CX | Commissioning and Startup |
| 1 - Summary | ENV | Envelope |
| 1 - Summary | FIT | Fitout - General |
| 1 - Summary | OV | Construction Overall Duration |
| 1 - Summary | ST | Structure |
| 1 - Summary | SUB | SubStructure |
| Area- ID | ENV-E | Envelope East Side |
| Area- ID | ENV-N | Envelope North Side |
| Area- ID | ENV-S | Envelope South Side |
| Area- ID | INT-Z1 | M&E Room exit corridor |
| Area- ID | INT-Z2 | Staff Room |
| Area- ID | INT-Z3 | Change Room |
| Area- ID | INT-Z4 | Pool mechanical Storage Room |
| Area- ID | INT-Z5 | Natatorium, Steam, Sauna, Veiwing |
| Area- ID | INT-Z6 | Looby and Vestibule |
| Area- ID | S-1BL | S1 Grey - 125 Thick Slab on Grade Blue |
| Area- ID | S-1GR | S1 Grey - 125 Thick Slab on Grade Green |
| Area- ID | S-1WRD | S1 White - 125 Thick Slab on Grade Phase-1 |
| Area- ID | S-BSM | Basement Strucutral Slab |
| Area- ID | SS-1 | Steel Strucutre Phase-1 |
| Area- ID | SS-2 | Steel Strucutre Phase-2 |
| Area- ID | SS-3 | Steel Strucutre Phase-3 |
